# CSM 3.2

How a schedule from MS Project changed from version to version. A marks actual dates.

## Version 1 (saved 2006-06-19)

Note of the change: *** empty log message ***

| ID | WBS | Task | Duration | Start | Finish | Predecessors | Complete | Total float | Constraint |
| --- | --- | --- | --- | --- | --- | --- | --- | --- | --- |
| 1 | 1 | **CSM 3.2** | 175d? | 2006-04-20 A | 2006-12-22 |  | 16% | 0d |  |
| 2 | 1.1 | **Elaboration** | 55.95d? | 2006-04-20 A | 2006-07-07 |  | 52% | 119.05d |  |
| 3 | 1.1.1 | **Iteration 1** | 34d? | 2006-04-20 A | 2006-06-07 |  | 75% | 141d |  |
| 4 |  | Kick off | 0d | 2006-04-20 A | 2006-04-20 A |  | 100% |  | start no earlier than 2006-04-20 |
| 5 | 1.1.1.2 | **21 CFR Part 11** | 34d | 2006-04-20 A | 2006-06-07 |  | 35% | 141d |  |
| 6 |  | Preperation | 7d | 2006-04-20 A | 2006-04-28 A |  | 100% |  |  |
| 7 |  | Kickoff Meeting With Biopharm | 0d | 2006-05-01 A | 2006-05-01 A |  | 100% |  | start no earlier than 2006-05-01 |
| 8 |  | Biopharm resources allocated | 0d | 2006-05-15 | 2006-05-15 |  |  | 119d | start no earlier than 2006-05-15 |
| 9 |  | Deliver Materials | 3d | 2006-05-17 | 2006-05-19 | 8FS+2d |  | 119d |  |
| 10 |  | Provide Validation Support | 10d | 2006-05-22 | 2006-06-07 | 9 |  | 117d |  |
| 11 | 1.1.1.3 | **Project Scope** | 20d? | 2006-05-01 A | 2006-05-26 |  | 88% | 148d |  |
| 12 |  | Create/Revise Candidate Requirements Document | 4d | 2006-05-01 A | 2006-05-04 A | 6 | 100% |  |  |
| 13 |  | Revised Scope w/Product Manager | 0d | 2006-05-04 A | 2006-05-04 A |  | 100% |  |  |
| 14 |  | Define Elaboration Task Plan | 1d? | 2006-05-05 A | 2006-05-05 A | 12 | 100% |  |  |
| 15 |  | Create/Update Scope Document | 15d | 2006-05-08 A | 2006-05-26 A | 14 | 100% |  |  |
| 16 |  | Obtain Changes/Fixes from BMS and map to current scope | 4d | 2006-05-15 A | 2006-05-18 A |  | 100% |  | start no earlier than 2006-05-15 |
| 17 | 1.1.1.3.6 | **LOE/Requirements Gathering** | 14d | 2006-05-08 A | 2006-05-25 | 14 | 77% | 149d |  |
| 18 |  | Obtain exact JDK version for next release | 0.25d | 2006-05-08 A | 2006-05-08 A |  | 100% |  |  |
| 19 |  | High Level Diagram of Grid-CSM Integration | 2d | 2006-05-08 A | 2006-05-10 A | 18 | 100% |  |  |
| 20 |  | High Level Diagram of CSM Web Service | 1d | 2006-05-10 A | 2006-05-11 A | 19 | 100% |  |  |
| 21 |  | Deliver Diagrams to Avinash | 0d | 2006-05-11 A | 2006-05-11 A | 20 | 100% |  |  |
| 22 |  | IMF Presentation | 2d | 2006-05-11 A | 2006-05-15 A | 21 | 100% |  |  |
| 23 |  | Estimate Tying User to Application | 1d | 2006-05-15 A | 2006-05-16 A | 22 | 100% |  |  |
| 24 |  | Estimate for Grid Integration/ Project Scope Doc | 6d | 2006-05-16 | 2006-05-24 | 23 |  | 27.8d |  |
| 25 |  | Meet with Apps for Performance Requirements | 0.25d | 2006-05-11 A | 2006-05-11 A |  | 100% |  | start no earlier than 2006-05-11 |
| 26 |  | Prototyp Generic LDAP | 2.5d | 2006-05-08 A | 2006-05-10 A |  | 100% |  |  |
| 27 |  | Estimate Auth Policy Caching | 3d | 2006-05-10 A | 2006-05-15 A | 26 | 100% |  |  |
| 28 |  | Estimate CLM Logging to text file and Log Viewer Mods | 2d | 2006-05-15 A | 2006-05-17 A | 27 | 100% |  |  |
| 29 |  | Estimate BMS Webservice Integration | 2.5d | 2006-05-17 A | 2006-05-19 A | 28 | 100% |  |  |
| 30 |  | Estimate BMS Integration Work | 4d | 2006-05-22 A | 2006-05-25 A | 29 | 100% |  |  |
| 31 |  | NCICB Management Review Complete | 0d | 2006-05-17 A | 2006-05-17 A |  | 100% |  | start no earlier than 2006-05-17 |
| 32 |  | Update Scope | 2.95d | 2006-05-26 A | 2006-05-31 A | 17 | 100% |  |  |
| 33 |  | User Feedback Sessions Complete | 0d | 2006-05-26 A | 2006-05-26 A |  | 100% |  | start no earlier than 2006-05-26 |
| 34 |  | Revise Task Plan | 2d | 2006-05-31 A | 2006-06-02 A | 32 | 100% |  |  |
| 35 | 1.1.2 | **Iteration 2** | 22.95d | 2006-05-19 A | 2006-06-21 |  | 80% | 131.05d |  |
| 36 | 1.1.2.1 | **Detail Requirements** | 18.95d | 2006-05-19 A | 2006-06-15 |  | 95% | 101.85d |  |
| 37 | 1.1.2.1.1 | **Define Use Cases** | 18.95d | 2006-05-19 A | 2006-06-15 |  | 95% | 101.85d |  |
| 38 | 1.1.2.1.1.1 | **UPT** | 10.5d | 2006-05-19 A | 2006-06-05 A |  | 100% |  |  |
| 39 |  | Write Initial Draft 30% | 1.5d | 2006-05-19 A | 2006-05-22 A | 16 | 100% |  |  |
| 40 |  | Write Internal Review 60 % | 1.5d | 2006-05-22 A | 2006-05-23 A | 39 | 100% |  |  |
| 41 |  | Write Final Complete 100% | 2d | 2006-05-24 A | 2006-05-25 A | 40 | 100% |  |  |
| 42 |  | Review | 1d | 2006-05-26 A | 2006-05-31 A | 41 | 100% |  |  |
| 43 |  | Update per Review | 3d | 2006-05-31 A | 2006-06-05 A | 42 | 100% |  |  |
| 44 | 1.1.2.1.1.2 | **Web Service** | 7d | 2006-05-31 A | 2006-06-09 A |  | 100% |  |  |
| 45 |  | Write Internal Review 60% | 5d | 2006-05-31 A | 2006-06-07 A | 32 | 100% |  |  |
| 46 |  | Write Final Complete 100% | 1d | 2006-06-07 A | 2006-06-08 A | 45 | 100% |  |  |
| 47 |  | Review | 0.25d | 2006-06-08 A | 2006-06-09 A | 46 | 100% |  |  |
| 48 |  | Update per Review | 0.75d | 2006-06-09 A | 2006-06-09 A | 47 | 100% |  |  |
| 49 | 1.1.2.1.1.3 | **CSM APIs** | 7.5d | 2006-05-31 A | 2006-06-12 |  | 92% | 105.35d |  |
| 50 |  | Write Initial Draft 30% | 2.5d | 2006-05-31 A | 2006-06-05 A | 32 | 100% |  |  |
| 51 |  | Write Internal Review 60 % | 2d | 2006-06-05 A | 2006-06-07 A | 50 | 100% |  |  |
| 52 |  | Write Final Complete 100% | 2d | 2006-06-07 A | 2006-06-09 | 51 | 80% | 105.35d |  |
| 53 |  | Review | 0.25d | 2006-06-09 A | 2006-06-09 | 52 | 80% | 105.95d |  |
| 54 |  | Update per Review | 0.75d | 2006-06-09 A | 2006-06-12 | 53 | 80% | 105.35d |  |
| 55 | 1.1.2.1.1.4 | **- Performance Enhancements** | 4d | 2006-06-09 A | 2006-06-15 |  | 81% | 5.05d |  |
| 56 |  | Write Internal Review 60% | 2d | 2006-06-09 A | 2006-06-13 A | 44 | 100% |  |  |
| 57 |  | Write Final Complete 100% | 1d | 2006-06-13 A | 2006-06-14 A | 56 | 100% |  |  |
| 58 |  | Review | 0.25d | 2006-06-14 A | 2006-06-15 A | 57 | 100% |  |  |
| 59 |  | Update per Review | 0.75d | 2006-06-15 | 2006-06-15 | 58 |  | 2.05d |  |
| 60 |  | Revise Scope Document | 1d | 2006-06-14 | 2006-06-15 | 36FS-1d |  | 131.05d |  |
| 61 |  | Revised Scope Document Complete | 0d | 2006-06-13 | 2006-06-13 |  |  | 138d | start no earlier than 2006-06-13 |
| 62 |  | Revise Task Plan | 4d | 2006-06-15 | 2006-06-21 | 60 |  | 131.05d |  |
| 63 |  | Revised PM Project Plan Submitted | 0d | 2006-06-19 | 2006-06-19 |  |  | 129d | start no earlier than 2006-06-19 |
| 64 | 1.1.3 | **Iteration 3** | 19.5d | 2006-06-12 | 2006-07-07 |  |  | 8.55d |  |
| 65 | 1.1.3.1 | **Test Plan** | 16d | 2006-06-15 | 2006-07-07 |  |  | 119.05d |  |
| 66 |  | Review Testability of Requirements | 4d | 2006-06-15 | 2006-06-21 | 59 |  | 116.55d |  |
| 67 |  | Test Plan Development Intial Template Draft | 2d | 2006-06-21 | 2006-06-23 | 66 |  | 116.55d |  |
| 68 |  | Test Plan Development 80% Completion | 6d | 2006-06-23 | 2006-07-03 | 67 |  | 119.05d |  |
| 69 |  | Test Plan Development Internal Review 100% Completion | 2d | 2006-07-03 | 2006-07-05 | 68 |  | 119.05d |  |
| 70 |  | Test Plan Development Rework | 2d | 2006-07-05 | 2006-07-07 | 69 |  | 119.05d |  |

| ID | WBS | Task | Duration | Start | Finish | Predecessors | Complete | Total float | Constraint |
| --- | --- | --- | --- | --- | --- | --- | --- | --- | --- |
| 71 | 1.1.3.2 | **Design** | 12.55d | 2006-06-12 | 2006-06-28 |  |  | 8.55d |  |
| 72 | 1.1.3.2.1 | **Create General Design Document** | 5d | 2006-06-12 | 2006-06-19 | 49 |  | 105.35d |  |
| 73 |  | Review Draft at 50% | 2.5d | 2006-06-12 | 2006-06-14 |  |  | 105.35d |  |
| 74 |  | Complete Draft/Final Review | 2.5d | 2006-06-14 | 2006-06-19 | 73 |  | 105.35d |  |
| 75 |  | General Design Doc Posted for Review | 0d | 2006-06-19 | 2006-06-19 |  |  | 4d | start no earlier than 2006-06-19 |
| 76 | 1.1.3.2.3 | **Performance** | 5d | 2006-06-19 | 2006-06-23 | 75 |  | 4d |  |
| 77 |  | Performance Design Peparation | 3.5d | 2006-06-19 | 2006-06-22 | 55 |  | 4d |  |
| 78 |  | Performance Design Internal Review | 0.5d | 2006-06-22 | 2006-06-22 | 77 |  | 4d |  |
| 79 |  | Performance Design Rework | 1d | 2006-06-23 | 2006-06-23 | 78 |  | 4d |  |
| 80 |  | CSM SAD | 3d | 2006-06-26 | 2006-06-28 | 79 |  | 4d |  |
| 81 | 1.1.3.3 | **UML Model** | 8.55d | 2006-06-19 | 2006-06-30 |  |  | 105.35d |  |
| 82 |  | Update CSM Model | 2d | 2006-06-19 | 2006-06-21 | 74 |  | 105.35d |  |
| 83 |  | Submit For Approval | 0.2d | 2006-06-21 | 2006-06-21 | 82 |  | 105.35d |  |
| 84 |  | UML Model Changes Approved | 0d | 2006-06-30 | 2006-06-30 |  |  | 125d | start no earlier than 2006-06-30 |
| 85 | 1.1.3.6 | **Prototype** | 10.35d | 2006-06-21 | 2006-07-05 |  |  | 9.35d |  |
| 86 |  | Auth Caching | 4d | 2006-06-29 | 2006-07-04 | 80 |  | 4d |  |
| 87 |  | Auth Caching - Review and Baselining | 1d | 2006-07-05 | 2006-07-05 | 86 |  | 4d |  |
| 88 |  | Open/Active Directory LDAP | 4d | 2006-06-21 | 2006-06-27 | 83 |  | 105.35d |  |
| 89 |  | Open/Active Directory LDAP - Code Review and Baselining | 1d | 2006-06-27 | 2006-06-28 | 88 |  | 105.35d |  |
| 90 |  | Schema Support for SQL Server | 4d | 2006-06-28 | 2006-07-04 | 89 |  | 105.35d |  |
| 91 |  | Schema Support for SQL Server - Code Review and Baselining | 1d | 2006-07-04 | 2006-07-05 | 90 |  | 105.35d |  |
| 92 |  | Finalize Scope/Project Plan | 5d | 2006-06-19 | 2006-06-23 | 63 |  | 129d |  |
| 93 |  | Final 3.2 Scope/Project Plan to Gforge | 0d | 2006-06-26 | 2006-06-26 |  |  | 129d | start no earlier than 2006-06-26 |
| 94 | 1.2 | **Construction** | 112.05d | 2006-06-23 A | 2006-11-28 |  | 2% | 17d |  |
| 95 |  | Production Support | 80d | 2006-07-12 | 2006-10-31 |  |  | 37d | start no earlier than 2006-07-12 |
| 96 | 1.2.2 | **Iteration 1** | 26.05d | 2006-06-23 A | 2006-07-31 |  | 11% | 103d |  |
| 97 | 1.2.2.1 | **Hibernate 3.1 Upgrade/JDK Backwards Compatibility/MySQL Upgrade Test** | 6d | 2006-07-05 | 2006-07-13 |  |  | 105.35d |  |
| 98 |  | Development | 5d | 2006-07-05 | 2006-07-12 | 91 |  | 105.35d |  |
| 99 |  | Regression Testing | 1d | 2006-07-12 | 2006-07-13 | 98 |  | 105.35d |  |
| 100 | 1.2.2.2 | **Open LDAP/Active Directory Authorization** | 4d | 2006-07-13 | 2006-07-19 |  |  | 105.35d |  |
| 101 |  | Design | 1d | 2006-07-13 | 2006-07-14 | 99 |  | 105.35d |  |
| 102 |  | Development/Unit Test | 3d | 2006-07-14 | 2006-07-19 | 101 |  | 105.35d |  |
| 103 | 1.2.2.3 | **Auth Policy Caching** | 14d | 2006-07-06 | 2006-07-25 |  |  | 4d |  |
| 104 |  | Design | 1d | 2006-07-06 | 2006-07-06 | 87 |  | 4d |  |
| 105 |  | Development/Unit Testing | 13d | 2006-07-07 | 2006-07-25 | 104 |  | 4d |  |
| 106 | 1.2.2.4 | **BMS Web Service Integration** | 6d | 2006-07-19 | 2006-07-27 |  |  | 105.35d |  |
| 107 |  | Design | 1d | 2006-07-19 | 2006-07-20 | 102 |  | 105.35d |  |
| 108 |  | Development/Unit Test | 5d | 2006-07-20 | 2006-07-27 | 107 |  | 105.35d |  |
| 109 |  | Components Deployed on Dev Server | 0d | 2006-07-27 | 2006-07-27 | 108 |  | 105.35d |  |
| 110 | 1.2.2.6 | **Regression Test Complete Code Coverage** | 6.5d | 2006-06-23 A | 2006-07-04 |  | 80% | 116.55d |  |
| 111 |  | Implementation | 6.5d | 2006-06-23 A | 2006-07-04 | 67 | 80% | 116.55d |  |
| 112 |  | QA Test | 6d | 2006-07-04 | 2006-07-20 | 111 |  | 110.55d |  |
| 113 |  | Testing Support | 4d | 2006-07-26 | 2006-07-31 | 105 |  | 4d |  |
| 114 | 1.2.3 | **Iteration 2** | 53d | 2006-08-01 | 2006-10-12 | 113 |  | 4d |  |
| 115 | 1.2.3.1 | **Application Specific UPT and APIs** | 7d | 2006-08-01 | 2006-08-09 |  |  | 6d |  |
| 116 |  | Design | 2d | 2006-08-01 | 2006-08-02 | 113 |  | 6d |  |
| 117 |  | Development/Unit Test | 5d | 2006-08-03 | 2006-08-09 | 116 |  | 6d |  |
| 118 | 1.2.3.2 | **Improve Exception Handling** | 5d | 2006-08-10 | 2006-08-16 |  |  | 6d |  |
| 119 |  | Development/Unit Test | 5d | 2006-08-10 | 2006-08-16 | 117 |  | 6d |  |
| 120 | 1.2.3.3 | **Performance Enhancements** | 9d | 2006-08-01 | 2006-08-11 |  |  | 4d |  |
| 121 | 1.2.3.3.1 | **Fix Update Methods** | 3d | 2006-08-01 | 2006-08-03 |  |  | 4d |  |
| 122 |  | Development/Unit Test | 3d | 2006-08-01 | 2006-08-03 | 113 |  | 4d |  |
| 123 | 1.2.3.3.2 | **SDK Instance Level Security** | 6d | 2006-08-04 | 2006-08-11 |  |  | 4d |  |
| 124 |  | Design | 6d | 2006-08-04 | 2006-08-11 | 122 |  | 4d |  |
| 125 | 1.2.3.4 | **Grid SAML Assertion Support** | 20d | 2006-08-14 | 2006-09-08 |  |  | 4d |  |
| 126 |  | Design | 5d | 2006-08-14 | 2006-08-18 | 123 |  | 4d |  |
| 127 |  | Development | 15d | 2006-08-21 | 2006-09-08 | 126 |  | 4d |  |
| 128 | 1.2.3.5 | **Secure SDK interfaces** | 10d | 2006-09-11 | 2006-09-22 |  |  | 4d |  |
| 129 |  | Design | 2d | 2006-09-11 | 2006-09-12 | 127 |  | 4d |  |
| 130 |  | Development | 8d | 2006-09-13 | 2006-09-22 | 129 |  | 4d |  |
| 131 | 1.2.3.6 | **BMS Code Integration** | 15d | 2006-08-17 | 2006-09-06 |  |  | 6d |  |
| 132 |  | Design | 2d | 2006-08-17 | 2006-08-18 | 119 |  | 6d |  |
| 133 |  | Development | 13d | 2006-08-21 | 2006-09-06 | 132 |  | 6d |  |
| 134 | 1.2.3.7 | **Defect Fixes** | 17d | 2006-09-07 | 2006-09-29 |  |  | 4d |  |
| 135 |  | Development/Unit Test | 15d | 2006-09-07 | 2006-09-27 | 133 |  | 6d |  |
| 136 |  | Development/Unit Test | 5d | 2006-09-25 | 2006-09-29 | 130 |  | 4d |  |
| 137 |  | Deploy Components to Dev Server | 0d | 2006-09-29 | 2006-09-29 | 135, 136 |  | 59d |  |
| 138 | 1.2.3.9 | **Testing** | 53d | 2006-08-01 | 2006-10-12 |  |  | 34d |  |
| 139 |  | Load & Component Test Development | 15d | 2006-08-01 | 2006-08-21 |  |  | 63d |  |
| 140 |  | QA Test Components | 9d | 2006-10-02 | 2006-10-12 | 139, 134 |  | 34d |  |

| ID | WBS | Task | Duration | Start | Finish | Predecessors | Total float | Constraint |
| --- | --- | --- | --- | --- | --- | --- | --- | --- |
| 141 |  | Test Support | 9d | 2006-10-02 | 2006-10-12 | 134 | 34d |  |
| 142 |  | Integration System Testing Comple (QA) | 0d | 2006-10-12 | 2006-10-12 |  | 35d | start no earlier than 2006-10-12 |
| 143 | 1.2.4 | **Iteration 3** | 33d | 2006-10-13 | 2006-11-28 |  | 17d |  |
| 144 | 1.2.4.1 | **Internal System** | 14d | 2006-10-13 | 2006-11-01 |  | 34d |  |
| 145 |  | Execution | 14d | 2006-10-13 | 2006-11-01 | 138 | 36d |  |
| 146 |  | Test Support | 14d | 2006-10-13 | 2006-11-01 | 138 | 34d |  |
| 147 |  | Internal System Testing Complete (QA Tier) | 0d | 2006-11-01 | 2006-11-01 |  | 37d | start no earlier than 2006-11-01 |
| 148 |  | Push Candidate to Staging | 2d | 2006-11-02 | 2006-11-03 | 146 | 34d |  |
| 149 |  | Release Candidate pushed to Stage Tier | 0d | 2006-11-03 | 2006-11-03 |  | 2d | start no earlier than 2006-11-03 |
| 150 | 1.2.4.4 | **Regression/UAT Testing** | 18d | 2006-11-03 | 2006-11-28 |  | 2d |  |
| 151 |  | Execution | 18d | 2006-11-03 | 2006-11-28 | 149 | 17d |  |
| 152 |  | Test Support | 18d | 2006-11-03 | 2006-11-28 | 149 | 2d |  |
| 153 |  | UAT Complete | 0d | 2006-11-28 | 2006-11-28 |  | 18d | start no earlier than 2006-11-28 |
| 154 | 1.3 | **Transition** | 59d? | 2006-10-02 | 2006-12-22 |  | 0d |  |
| 155 | 1.3.1 | **Documentation** | 55d? | 2006-10-02 | 2006-12-15 |  | 4d |  |
| 156 |  | Write Draft Documentation/ Update User Guide | 9d | 2006-10-02 | 2006-10-12 | 134 | 4d |  |
| 157 |  | Draft Documentation/User Documentation Completed | 0d | 2006-10-12 | 2006-10-12 |  | 51d | start no earlier than 2006-10-12 |
| 158 |  | Review Technical/User Docs | 21d | 2006-10-13 | 2006-11-10 | 156 | 4d |  |
| 159 |  | Review Technical/User Docs Complete | 0d | 2006-11-10 | 2006-11-10 |  | 30d | start no earlier than 2006-11-10 |
| 160 |  | Incorporate Comments to User Docs | 1d? | 2006-11-13 | 2006-11-13 | 158 | 4d |  |
| 161 |  | Incorporate Comments to User Docs Complete | 0d | 2006-11-28 | 2006-11-28 |  | 18d | start no earlier than 2006-11-28 |
| 162 |  | Finalize Documents | 24d | 2006-11-14 | 2006-12-15 | 160 | 4d |  |
| 163 |  | Final Version of User Documents Complete | 0d | 2006-12-15 | 2006-12-15 |  | 5d | start no earlier than 2006-12-15 |
| 164 |  | Staging | 15d | 2006-11-29 | 2006-12-19 | 152 | 2d |  |
| 165 |  | Internal Staging Complete | 0d | 2006-12-19 | 2006-12-19 |  | 3d | start no earlier than 2006-12-19 |
| 166 |  | Push to Production | 0d | 2006-12-21 | 2006-12-21 |  | 1d | start no earlier than 2006-12-21 |
| 167 |  | Go Live | 0d | 2006-12-22 | 2006-12-22 |  | 0d | start no earlier than 2006-12-22 |

## Version 2 (saved 2006-07-10)

Note of the change: *** empty log message ***

Last finish stays 2006-12-22. Complete tasks 38 → 63.

Added:

| ID | Task | Duration | Start | Finish | Predecessors | Resources |
| --- | --- | --- | --- | --- | --- | --- |
| 106 | **Expose Core Authorization Service as Web Service** | 10d | 2006-07-17 | 2006-07-28 |  |  |
| 107 | Design | 1d | 2006-07-17 | 2006-07-17 | 105 | Kunal |
| 108 | Development | 9d | 2006-07-18 | 2006-07-28 | 107 | Kunal |
| 134 | **Add a new "Type" attribute to Protection Element** | 4d | 2006-09-20 | 2006-09-26 |  |  |
| 135 | Design | 1d | 2006-09-20 | 2006-09-21 | 131 | Kunal |
| 136 | Development | 3d | 2006-09-21 | 2006-09-26 | 135 | Kunal |

Changed:

| ID | Task | Start | Finish | Duration | Complete | Total float | Predecessors | Other |
| --- | --- | --- | --- | --- | --- | --- | --- | --- |
| 1 | **CSM 3.2** |  |  |  | 16% → 26% |  |  |  |
| 2 | **Elaboration** |  |  |  | 52% → 84% |  |  |  |
| 35 | **Iteration 2** |  | 2006-06-21 A |  | 80% → 100% | 131.05d → none |  |  |
| 36 | **Detail Requirements** |  | 2006-06-15 A |  | 95% → 100% | 101.85d → none |  |  |
| 37 | **Define Use Cases** |  | 2006-06-15 A |  | 95% → 100% | 101.85d → none |  |  |
| 49 | **CSM APIs** |  | 2006-06-12 A |  | 92% → 100% | 105.35d → none |  |  |
| 52 | Write Final Complete 100% |  | 2006-06-09 A |  | 80% → 100% | 105.35d → none |  |  |
| 53 | Review |  | 2006-06-09 A |  | 80% → 100% | 105.95d → none |  |  |
| 54 | Update per Review |  | 2006-06-12 A |  | 80% → 100% | 105.35d → none |  |  |
| 55 | **- Performance Enhancements** |  | 2006-06-15 A |  | 81% → 100% | 5.05d → none |  |  |
| 59 | Update per Review | 2006-06-15 A | 2006-06-15 A |  | 0% → 100% | 2.05d → none |  |  |
| 60 | Revise Scope Document | 2006-06-14 A | 2006-06-15 A |  | 0% → 100% | 131.05d → none |  |  |
| 61 | Revised Scope Document Complete | 2006-06-13 A | 2006-06-13 A |  | 0% → 100% | 138d → none |  |  |
| 62 | Revise Task Plan | 2006-06-15 A | 2006-06-21 A |  | 0% → 100% | 131.05d → none |  |  |
| 63 | Revised PM Project Plan Submitted | 2006-06-19 A | 2006-06-19 A |  | 0% → 100% | 129d → none |  |  |
| 64 | **Iteration 3** | 2006-06-12 A |  |  | 0% → 88% | 8.55d → 119.05d |  |  |
| 65 | **Test Plan** | 2006-06-15 A |  |  | 0% → 75% |  |  |  |
| 66 | Review Testability of Requirements | 2006-06-15 A | 2006-06-21 A |  | 0% → 100% | 116.55d → none |  |  |
| 67 | Test Plan Development Intial Template Draft | 2006-06-21 A | 2006-06-23 A |  | 0% → 100% | 116.55d → none |  |  |
| 68 | Test Plan Development 80% Completion | 2006-06-23 A | 2006-07-03 A |  | 0% → 100% | 119.05d → none |  |  |
| 69 | Test Plan Development Internal Review 100% Completion |  |  |  |  |  |  | resources Steven → Charles [10%] |
| 71 | **Design** | 2006-06-12 A |  |  | 0% → 95% | 8.55d → 126d |  |  |
| 72 | **Create General Design Document** | 2006-06-12 A | 2006-06-19 A |  | 0% → 100% | 105.35d → none |  |  |
| 73 | Review Draft at 50% | 2006-06-12 A | 2006-06-14 A |  | 0% → 100% | 105.35d → none |  |  |
| 74 | Complete Draft/Final Review | 2006-06-14 A | 2006-06-19 A |  | 0% → 100% | 105.35d → none |  |  |
| 75 | General Design Doc Posted for Review | 2006-06-19 A | 2006-06-19 A |  | 0% → 100% | 4d → none |  |  |
| 76 | **Performance** | 2006-06-19 A | 2006-06-23 A |  | 0% → 100% | 4d → none |  |  |
| 77 | Performance Design Peparation | 2006-06-19 A | 2006-06-22 A |  | 0% → 100% | 4d → none |  |  |
| 78 | Performance Design Internal Review | 2006-06-22 A | 2006-06-22 A |  | 0% → 100% | 4d → none |  |  |
| 79 | Performance Design Rework | 2006-06-23 A | 2006-06-23 A |  | 0% → 100% | 4d → none |  |  |
| 80 | CSM SAD | 2006-06-26 A |  |  | 0% → 80% | 4d → 126d |  |  |
| 81 | **UML Model** | 2006-06-19 A |  |  | 0% → 91% | 105.35d → 125d |  |  |
| 82 | Update CSM Model | 2006-06-19 A | 2006-06-21 A |  | 0% → 100% | 105.35d → none |  |  |
| 85 | **Prototype** | 2006-06-21 A | 2006-07-05 → 2006-07-06 (+1d) | 10.35d → 11.35d | 0% → 91% | 9.35d → 2d |  |  |
| 86 | Auth Caching | 2006-06-29 A | 2006-07-04 → 2006-07-05 A (+1d) |  | 0% → 100% | 4d → none |  |  |
| 87 | Auth Caching - Review and Baselining | 2006-07-05 → 2006-07-06 A (+1d) | 2006-07-05 → 2006-07-06 A (+1d) |  | 0% → 100% | 4d → none |  |  |
| 88 | Open/Active Directory LDAP | 2006-06-21 → 2006-06-28 A (+7d) | 2006-06-27 → 2006-07-05 (+8d) |  | 0% → 90% | 105.35d → 2.35d | 83 → 91 |  |
| 89 | Open/Active Directory LDAP - Code Review and Baselining | 2006-06-27 → 2006-07-05 (+8d) | 2006-06-28 → 2006-07-06 (+8d) |  |  | 105.35d → 104.35d |  |  |
| 90 | Schema Support for SQL Server | 2006-06-28 → 2006-06-21 A (-7d) | 2006-07-04 → 2006-06-27 A (-7d) |  | 0% → 100% | 105.35d → none | 89 → 83 |  |
| 91 | Schema Support for SQL Server - Code Review and Baselining | 2006-07-04 → 2006-06-27 A (-7d) | 2006-07-05 → 2006-06-28 A (-7d) |  | 0% → 100% | 105.35d → none |  |  |
| 92 | Finalize Scope/Project Plan | 2006-06-19 A | 2006-06-23 A |  | 0% → 100% | 129d → none |  |  |
| 93 | Final 3.2 Scope/Project Plan to Gforge | 2006-06-26 A | 2006-06-26 A |  | 0% → 100% | 129d → none |  |  |
| 94 | **Construction** |  |  |  | 2% → 3% |  |  |  |
| 96 | **Iteration 1** |  | 2006-07-31 → 2006-08-07 (+7d) | 26.05d → 31d | 11% → 18% | 103d → 98.05d |  |  |
| 97 | **Hibernate 3.1 Upgrade/JDK Backwards Compatibility/MySQL Upgrade Test** | 2006-07-05 → 2006-07-06 (+1d) | 2006-07-13 → 2006-07-14 (+1d) |  |  | 105.35d → 2.35d |  |  |
| 98 | Development | 2006-07-05 → 2006-07-06 (+1d) | 2006-07-12 → 2006-07-13 (+1d) |  |  | 105.35d → 104.35d | 91 → 89 |  |
| 99 | Regression Testing | 2006-07-12 → 2006-07-13 (+1d) | 2006-07-13 → 2006-07-14 (+1d) |  |  | 105.35d → 104.35d |  |  |
| 100 | **Open LDAP/Active Directory Authorization** | 2006-07-13 → 2006-07-14 (+1d) | 2006-07-19 → 2006-07-20 (+1d) |  |  | 105.35d → 2.35d |  |  |
| 101 | Design | 2006-07-13 → 2006-07-14 (+1d) | 2006-07-14 → 2006-07-17 (+3d) |  |  | 105.35d → 104.35d |  |  |
| 102 | Development/Unit Test | 2006-07-14 → 2006-07-17 (+3d) | 2006-07-19 → 2006-07-20 (+1d) |  |  | 105.35d → 104.35d |  |  |
| 103 | **Auth Policy Caching** | 2006-07-06 → 2006-07-07 A (+1d) | 2006-07-25 → 2006-07-14 (-11d) | 14d → 6d | 0% → 92% | 4d → 104d |  |  |
| 104 | Design | 2006-07-06 → 2006-07-07 A (+1d) | 2006-07-06 → 2006-07-07 A (+1d) |  | 0% → 100% | 4d → none |  |  |
| 105 | Development/Unit Testing | 2006-07-07 → 2006-07-10 A (+3d) | 2006-07-25 → 2006-07-14 (-11d) | 13d → 5d | 0% → 90% | 4d → 104d |  |  |
| 109 | **BMS Web Service Integration** | 2006-07-19 → 2006-07-20 (+1d) | 2006-07-27 → 2006-07-28 (+1d) |  |  | 105.35d → 2.35d |  |  |
| 110 | Design | 2006-07-19 → 2006-07-20 (+1d) | 2006-07-20 → 2006-07-21 (+1d) |  |  | 105.35d → 3.35d |  |  |
| 111 | Development/Unit Test | 2006-07-20 → 2006-07-21 (+1d) | 2006-07-27 → 2006-07-28 (+1d) |  |  | 105.35d → 3.35d |  |  |
| 112 | Components Deployed on Dev Server | 2006-07-27 → 2006-07-28 (+1d) | 2006-07-27 → 2006-07-28 (+1d) |  |  | 105.35d → 3.35d |  |  |
| 113 | **Regression Test Complete Code Coverage** |  | 2006-07-04 → 2006-07-21 (+17d) | 6.5d → 20d | 80% → 40% | 116.55d → 58.05d |  |  |
| 114 | Implementation |  | 2006-07-04 → 2006-07-21 (+17d) | 6.5d → 13d | 80% → 40% | 116.55d → 98.05d |  |  |
| 115 | QA Test | 2006-07-04 → 2006-07-21 (+17d) | 2006-07-20 → 2006-08-07 (+18d) | 6d → 11d |  | 110.55d → 98.05d |  |  |
| 116 | Testing Support | 2006-07-26 → 2006-07-28 (+2d) | 2006-07-31 → 2006-08-03 (+3d) |  |  | 4d → 3.35d | 105 → 112 |  |
| 117 | **Iteration 2** | 2006-08-01 → 2006-08-03 (+2d) | 2006-10-12 → 2006-10-16 (+4d) | 53d → 52d |  | 4d → 2.35d |  |  |
| 118 | **Linking a User to Application Context** | 2006-08-01 → 2006-08-03 (+2d) | 2006-08-09 → 2006-08-14 (+5d) |  |  | 6d → 3.35d |  | was named Application Specific UPT and APIs |
| 119 | Design | 2006-08-01 → 2006-08-03 (+2d) | 2006-08-02 → 2006-08-07 (+5d) |  |  | 6d → 3.35d |  |  |
| 120 | Development/Unit Test | 2006-08-03 → 2006-08-07 (+4d) | 2006-08-09 → 2006-08-14 (+5d) |  |  | 6d → 3.35d |  |  |
| 121 | **Improve Exception Handling** | 2006-08-10 → 2006-08-14 (+4d) | 2006-08-16 → 2006-08-21 (+5d) |  |  | 6d → 3.35d |  |  |
| 122 | Development/Unit Test | 2006-08-10 → 2006-08-14 (+4d) | 2006-08-16 → 2006-08-21 (+5d) |  |  | 6d → 3.35d |  |  |
| 123 | **Performance Enhancements** | 2006-08-01 → 2006-08-03 (+2d) | 2006-08-11 → 2006-08-16 (+5d) |  |  | 4d → 2.35d |  |  |
| 124 | **Fix Update Methods** | 2006-08-01 → 2006-08-03 (+2d) | 2006-08-03 → 2006-08-08 (+5d) |  |  | 4d → 2.35d |  |  |
| 125 | Development/Unit Test | 2006-08-01 → 2006-08-03 (+2d) | 2006-08-03 → 2006-08-08 (+5d) |  |  | 4d → 6.35d |  |  |

| ID | Task | Start | Finish | Duration | Total float | Predecessors | Other |
| --- | --- | --- | --- | --- | --- | --- | --- |
| 126 | **SDK Instance Level Security Design** | 2006-08-04 → 2006-08-08 (+4d) | 2006-08-11 → 2006-08-16 (+5d) |  | 4d → 2.35d |  | was named SDK Instance Level Security |
| 127 | Design | 2006-08-04 → 2006-08-08 (+4d) | 2006-08-11 → 2006-08-16 (+5d) |  | 4d → 6.35d |  |  |
| 128 | **Grid SAML Assertion Support** | 2006-08-14 → 2006-08-16 (+2d) | 2006-09-08 → 2006-09-06 (-2d) | 20d → 15d | 4d → 2.35d |  |  |
| 129 | Design | 2006-08-14 → 2006-08-16 (+2d) |  | 5d → 2d | 4d → 6.35d |  |  |
| 130 | Development | 2006-08-21 → 2006-08-18 (-3d) | 2006-09-08 → 2006-09-06 (-2d) | 15d → 13d | 4d → 6.35d |  |  |
| 131 | **Secure SDK interfaces** | 2006-09-11 → 2006-09-06 (-5d) | 2006-09-22 → 2006-09-20 (-2d) |  | 4d → 2.35d |  |  |
| 132 | Design | 2006-09-11 → 2006-09-06 (-5d) | 2006-09-12 → 2006-09-08 (-4d) |  | 4d → 6.35d |  |  |
| 133 | Development | 2006-09-13 → 2006-09-08 (-5d) | 2006-09-22 → 2006-09-20 (-2d) |  | 4d → 6.35d |  |  |
| 137 | **BMS Code Integration** | 2006-08-17 → 2006-08-21 (+4d) | 2006-09-06 → 2006-09-11 (+5d) |  | 6d → 3.35d |  |  |
| 138 | Design | 2006-08-17 → 2006-08-21 (+4d) | 2006-08-18 → 2006-08-23 (+5d) |  | 6d → 3.35d |  |  |
| 139 | Development | 2006-08-21 → 2006-08-23 (+2d) | 2006-09-06 → 2006-09-11 (+5d) |  | 6d → 3.35d |  |  |
| 140 | **Defect Fixes** | 2006-09-07 → 2006-09-11 (+4d) | 2006-09-29 → 2006-10-03 (+4d) | 17d → 16d | 4d → 2.35d |  |  |
| 141 | Development/Unit Test | 2006-09-07 → 2006-09-11 (+4d) | 2006-09-27 → 2006-10-02 (+5d) |  | 6d → 3.35d |  |  |
| 142 | Improve the Deployment of CSM & Integration with Other Apps | 2006-09-25 → 2006-09-26 (+1d) | 2006-09-29 → 2006-10-03 (+4d) |  | 4d → 2.35d | 133 → 134 | was named Development/Unit Test |
| 143 | Deploy Components to Dev Server | 2006-09-29 → 2006-10-02 (+3d) | 2006-09-29 → 2006-10-02 (+3d) |  | 59d → 33.35d | 141, 142 → 141 |  |
| 144 | **Testing** | 2006-08-01 → 2006-08-07 (+6d) | 2006-10-12 → 2006-10-16 (+4d) | 53d → 49.7d | 34d → 32.35d |  |  |
| 145 | Load & Component Test Development | 2006-08-01 → 2006-08-07 (+6d) | 2006-08-21 → 2006-08-28 (+7d) |  | 63d → 58.05d | none → 115 |  |
| 146 | QA Test Components |  | 2006-10-12 → 2006-10-13 (+1d) |  | 34d → 33.35d | 145, 140 → 145, 143 |  |
| 147 | Test Support | 2006-10-02 → 2006-10-03 (+1d) | 2006-10-12 → 2006-10-16 (+4d) |  | 34d → 32.35d |  |  |
| 149 | **Iteration 3** | 2006-10-13 → 2006-10-16 (+3d) |  | 33d → 31.35d | 17d → 15.35d |  |  |
| 150 | **Internal System** | 2006-10-13 → 2006-10-16 (+3d) | 2006-11-01 → 2006-11-03 (+2d) |  | 34d → 32.35d |  |  |
| 151 | Execution | 2006-10-13 → 2006-10-16 (+3d) | 2006-11-01 → 2006-11-03 (+2d) |  | 36d → 34.35d |  |  |
| 152 | Test Support | 2006-10-13 → 2006-10-16 (+3d) | 2006-11-01 → 2006-11-03 (+2d) |  | 34d → 32.35d |  |  |
| 154 | Push Candidate to Staging | 2006-11-02 → 2006-11-03 (+1d) | 2006-11-03 → 2006-11-07 (+4d) |  | 34d → 32.35d |  |  |
| 160 | **Transition** | 2006-10-02 → 2006-10-03 (+1d) |  | 59d? → 57.35d? |  |  |  |
| 161 | **Documentation** | 2006-10-02 → 2006-10-03 (+1d) | 2006-12-15 → 2006-12-19 (+4d) |  | 4d → 2.35d |  |  |
| 162 | Write Draft Documentation/ Update User Guide | 2006-10-02 → 2006-10-03 (+1d) | 2006-10-12 → 2006-10-16 (+4d) |  | 4d → 2.35d |  |  |
| 164 | Review Technical/User Docs | 2006-10-13 → 2006-10-16 (+3d) | 2006-11-10 → 2006-11-14 (+4d) |  | 4d → 2.35d |  |  |
| 166 | Incorporate Comments to User Docs | 2006-11-13 → 2006-11-14 (+1d) | 2006-11-13 → 2006-11-15 (+2d) |  | 4d → 2.35d |  |  |
| 168 | Finalize Documents | 2006-11-14 → 2006-11-15 (+1d) | 2006-12-15 → 2006-12-19 (+4d) |  | 4d → 2.35d |  |  |

## Version 3 (saved 2006-07-19)

Note of the change: *** empty log message ***

Last finish stays 2006-12-22. Complete tasks 63 → 70.

Changed:

| ID | Task | Start | Finish | Complete | Total float |
| --- | --- | --- | --- | --- | --- |
| 1 | **CSM 3.2** |  |  | 26% → 28% |  |
| 2 | **Elaboration** |  |  | 84% → 87% |  |
| 64 | **Iteration 3** |  |  | 88% → 96% |  |
| 65 | **Test Plan** |  |  | 75% → 88% |  |
| 69 | Test Plan Development Internal Review 100% Completion | 2006-07-03 A | 2006-07-05 A | 0% → 100% | 119.05d → none |
| 71 | **Design** |  | 2006-06-28 A | 95% → 100% | 126d → none |
| 80 | CSM SAD |  | 2006-06-28 A | 80% → 100% | 126d → none |
| 81 | **UML Model** |  |  | 91% → 99% |  |
| 83 | Submit For Approval | 2006-06-21 A | 2006-06-21 A | 0% → 100% | 106.55d → none |
| 85 | **Prototype** |  | 2006-07-06 A | 91% → 100% | 2d → none |
| 88 | Open/Active Directory LDAP |  | 2006-07-05 A | 90% → 100% | 2.35d → none |
| 89 | Open/Active Directory LDAP - Code Review and Baselining | 2006-07-05 A | 2006-07-06 A | 0% → 100% | 104.35d → none |
| 94 | **Construction** |  |  | 3% → 6% |  |
| 96 | **Iteration 1** |  |  | 18% → 32% |  |
| 97 | **Hibernate 3.1 Upgrade/JDK Backwards Compatibility/MySQL Upgrade Test** | 2006-07-06 A |  | 0% → 83% | 2.35d → 114.35d |
| 98 | Development | 2006-07-06 A | 2006-07-13 A | 0% → 100% | 104.35d → none |
| 100 | **Open LDAP/Active Directory Authorization** | 2006-07-14 A |  | 0% → 93% | 2.35d → 3.35d |
| 101 | Design | 2006-07-14 A | 2006-07-17 A | 0% → 100% | 104.35d → none |
| 102 | Development/Unit Test | 2006-07-17 A |  | 0% → 90% | 104.35d → 3.35d |

## Version 4 (saved 2006-08-09)

Note of the change: *** empty log message ***

Last finish stays 2006-12-22. Complete tasks 70 → 81.

Added:

| ID | Task | Duration | Start | Finish | Predecessors | Constraint | Resources |
| --- | --- | --- | --- | --- | --- | --- | --- |
| 94 | **Iteration 4** | 6d | 2006-07-25 | 2006-08-01 |  |  |  |
| 95 | **CLM** | 6d | 2006-07-25 | 2006-08-01 |  |  |  |
| 96 | Develop Requirements and Use Cases | 3d | 2006-07-25 | 2006-07-27 |  | start no earlier than 2006-07-25 | Vijay |
| 97 | Develop General Design | 3d | 2006-07-28 | 2006-08-01 | 96 |  | Vijay |
| 100 | **Iteration 0.5** | 29.05d | 2006-06-23 A | 2006-08-03 |  |  |  |
| 122 | **NCICB Boot Camp Support** | 3d | 2006-08-04 | 2006-08-08 |  |  |  |
| 123 | Preparation/Presentation | 3d | 2006-08-04 | 2006-08-08 | 120 |  | Kunal |
| 124 | Presentation Support | 0.5d | 2006-08-04 | 2006-08-04 | 120 |  | Orlando |
| 125 | **Design** | 10.5d | 2006-08-04 | 2006-08-18 | 124 |  |  |
| 126 | Linking a User to Application Context | 2d | 2006-08-04 | 2006-08-08 | 124 |  | Orlando |
| 127 | Exception Handling | 2d | 2006-08-08 | 2006-08-10 | 126 |  | Orlando |
| 128 | BMS Code Integration | 2d | 2006-08-10 | 2006-08-14 | 127 |  | Orlando |
| 129 | Grid SAML Assertion Support | 2d | 2006-08-09 | 2006-08-10 | 123 |  | Kunal |
| 130 | Secure SDK Design | 6d | 2006-08-11 | 2006-08-18 | 129 |  | Kunal |
| 140 | **Design** | 1d | 2006-09-13 | 2006-09-13 |  |  |  |
| 141 | Add new "Type" attribute to Protection Element | 1d | 2006-09-13 | 2006-09-13 | 138 |  | Kunal |
| 144 | **CLM** | 39d | 2006-08-01 | 2006-09-25 |  |  |  |
| 145 | **Query Interface** | 14d | 2006-08-01 | 2006-08-18 |  |  |  |
| 146 | Design (All Query API changes) | 2d | 2006-08-01 | 2006-08-02 |  | finish no earlier than 2006-08-02 | Vijay |
| 147 | Create Object Model - Semantic Integration | 4d | 2006-08-03 | 2006-08-08 | 146 |  | Vijay |
| 148 | Development | 8d | 2006-08-09 | 2006-08-18 | 147 | start no earlier than 2006-08-03 | Vijay |
| 149 | **Limit view by Organization, Object ID, Object Name** | 4d | 2006-08-21 | 2006-08-24 |  |  |  |
| 151 | Development | 3d | 2006-08-22 | 2006-08-24 | 150 | start no earlier than 2006-08-16 | Vijay |
| 152 | **Retreive Log Messages based on Object's Primary Key (Unique Key)** | 4d | 2006-08-25 | 2006-08-30 |  |  |  |
| 153 | Development | 4d | 2006-08-25 | 2006-08-30 | 149 |  |  |
| 154 | **Refactor Log Viewer to use Query API's to retrieve the results** | 4d | 2006-08-31 | 2006-09-06 |  |  |  |
| 156 | Development | 3d | 2006-09-01 | 2006-09-06 | 155 | start no earlier than 2006-08-22 | Vijay |
| 157 | **Utilize CSM for authentication/authorization** | 4d | 2006-09-07 | 2006-09-12 |  |  |  |
| 158 | Development/Unit Test | 4d | 2006-09-07 | 2006-09-12 | 154 | finish no earlier than 2006-08-31 | Vijay |
| 159 | **Use NCI Template** | 5d | 2006-09-13 | 2006-09-19 |  |  |  |
| 161 | Development | 4d | 2006-09-14 | 2006-09-19 | 160 | start no earlier than 2006-09-04 | Vijay |
| 162 | **Testing Integration** | 4d | 2006-09-20 | 2006-09-25 |  |  |  |
| 164 | **QA Test Components** | 15.5d | 2006-09-13 | 2006-10-04 |  |  |  |
| 165 | CSM | 4d | 2006-09-13 | 2006-09-19 | 138, 142 |  | QA |
| 166 | CLM | 7d | 2006-09-26 | 2006-10-04 | 162 |  | QA |
| 167 | **Test Support** | 15d | 2006-09-14 | 2006-10-04 |  |  |  |
| 168 | CSM | 4d | 2006-09-14 | 2006-09-19 | 140, 142 |  | Kunal; Orlando |
| 169 | CLM | 7d | 2006-09-26 | 2006-10-04 | 163 |  | Vijay |
| 170 | Load Test Performance Enhancements/APIs | 10d | 2006-09-19 | 2006-10-03 | 165 |  | QA |
| 171 | **Documentation** | 4d | 2006-10-05 | 2006-10-10 |  |  |  |
| 172 | CLM User Guide Update | 4d | 2006-10-05 | 2006-10-10 | 169 |  | Vijay |
| 178 | **Defect Fixes** | 10d | 2006-09-20 | 2006-10-03 |  |  |  |
| 179 | Development/Unit Test | 10d | 2006-09-20 | 2006-10-03 | 168 |  | Orlando |
| 180 | QA Test Components | 3d | 2006-10-04 | 2006-10-06 | 178, 174 |  | QA |
| 188 | Begin Documentation Draft | 3d | 2006-10-16 | 2006-10-18 | 186 |  | Orlando |
| 192 | **Documentation** | 5d | 2006-10-23 | 2006-10-27 |  |  |  |
| 201 | **UAT Testing/Load Testing** | 10d | 2006-11-10 | 2006-11-24 |  |  |  |
| 202 | Test Execution/Suppport | 10d | 2006-11-10 | 2006-11-24 | 198 |  | Orlando [50%]; Kunal [50%] |

Removed: 135 Design; 138 Design; 143 Deploy Components to Dev Server; 145 Load & Component Test Development; 148 Integration System Testing Comple (QA); 150 Internal System

Changed:

| ID | Task | Start | Finish | Duration | Complete | Total float | Predecessors | Other |
| --- | --- | --- | --- | --- | --- | --- | --- | --- |
| 1 | **CSM 3.2** |  |  | 175d? → 173d? | 28% → 35% |  |  |  |
| 2 | **Elaboration** |  | 2006-07-07 → 2006-08-01 (+25d) | 55.95d? → 73d? | 87% → 85% | 119.05d → 100d |  |  |
| 64 | **Iteration 3** |  | 2006-07-07 A |  | 96% → 100% | 119.05d → none |  |  |
| 65 | **Test Plan** |  | 2006-07-07 A |  | 88% → 100% | 119.05d → none |  |  |
| 70 | Test Plan Development Rework | 2006-07-05 A | 2006-07-07 A |  | 0% → 100% | 119.05d → none |  |  |
| 81 | **UML Model** |  | 2006-06-30 A |  | 99% → 100% | 125d → none |  |  |
| 84 | UML Model Changes Approved | 2006-06-30 A | 2006-06-30 A |  | 0% → 100% | 125d → none |  |  |
| 98 | **Construction** |  |  | 112.05d → 109.05d | 6% → 16% | 17d → 18d |  |  |
| 99 | Production Support |  | 2006-10-31 → 2006-11-01 (+1d) |  |  | 37d → 35d |  |  |
| 101 | **Hibernate 3.1 Upgrade/JDK Backwards Compatibility/MySQL Upgrade Test** |  |  |  | 83% → 99% | 114.35d → 112.35d |  |  |
| 103 | Regression Testing | 2006-07-13 A |  |  | 0% → 95% | 104.35d → 112.35d |  |  |
| 104 | **Open LDAP/Active Directory Authorization** |  | 2006-07-20 A |  | 93% → 100% | 3.35d → none |  |  |
| 106 | Development/Unit Test |  | 2006-07-20 A |  | 90% → 100% | 3.35d → none |  |  |
| 107 | **Auth Policy Caching** |  | 2006-07-14 A |  | 92% → 100% | 104d → none |  |  |
| 109 | Development/Unit Testing |  | 2006-07-14 A |  | 90% → 100% | 104d → none |  |  |
| 110 | **Expose Core Authorization Service as Web Service** | 2006-07-17 A | 2006-07-28 A |  | 0% → 100% | 104d → none |  |  |
| 111 | Design | 2006-07-17 A | 2006-07-17 A |  | 0% → 100% | 104d → none |  |  |
| 112 | Development | 2006-07-18 A | 2006-07-28 A |  | 0% → 100% | 104d → none |  |  |
| 113 | **BMS Web Service Integration** | 2006-07-20 A | 2006-07-28 A |  | 0% → 100% | 2.35d → none |  |  |
| 114 | Design | 2006-07-20 A | 2006-07-21 A |  | 0% → 100% | 3.35d → none |  |  |
| 115 | Development/Unit Test | 2006-07-21 A | 2006-07-28 A |  | 0% → 100% | 3.35d → none |  |  |
| 117 | **Regression Test Complete Code Coverage** |  | 2006-07-21 A |  | 40% → 100% | 58.05d → none |  |  |
| 118 | Implementation |  | 2006-07-21 A |  | 40% → 100% | 98.05d → none |  |  |
| 119 | QA Test | 2006-07-21 A | 2006-08-07 → 2006-07-31 A (-7d) | 11d → 6d | 0% → 100% | 98.05d → none |  |  |
| 120 | Testing Support | 2006-07-28 A | 2006-08-03 A | 4d → 4.35d | 0% → 100% | 3.35d → none |  |  |
| 121 | **Iteration 1** | 2006-06-23 A → 2006-08-01 (+39d) | 2006-08-07 → 2006-10-10 (+64d) | 31d → 50d | 32% → 0% | 98.05d → 37d |  |  |
| 131 | **Linking a User to Application Context** | 2006-08-03 → 2006-08-14 (+11d) | 2006-08-14 → 2006-08-21 (+7d) | 7d → 5d |  | 3.35d → 34.5d |  |  |
| 132 | Development/Unit Test | 2006-08-07 → 2006-08-14 (+7d) | 2006-08-14 → 2006-08-21 (+7d) |  |  | 3.35d → 34.5d | 150 → 128 |  |
| 133 | **Improve Exception Handling** | 2006-08-14 → 2006-08-21 (+7d) | 2006-08-21 → 2006-08-24 (+3d) | 5d → 3d |  | 3.35d → 34.5d |  |  |
| 134 | Development/Unit Test | 2006-08-14 → 2006-08-21 (+7d) | 2006-08-21 → 2006-08-24 (+3d) | 5d → 3d |  | 3.35d → 34.5d |  |  |
| 135 | **Performance Enhancements** | 2006-08-03 → 2006-08-21 (+18d) | 2006-08-16 → 2006-08-23 (+7d) | 9d → 3d |  | 2.35d → 34d |  |  |
| 136 | **Fix Update Methods** | 2006-08-03 → 2006-08-21 (+18d) | 2006-08-08 → 2006-08-23 (+15d) |  |  | 2.35d → 34d |  |  |
| 137 | Development/Unit Test | 2006-08-03 → 2006-08-21 (+18d) | 2006-08-08 → 2006-08-23 (+15d) |  |  | 6.35d → 34d | 120 → 130 |  |
| 138 | **Grid SAML Assertion Support** | 2006-08-16 → 2006-08-24 (+8d) | 2006-09-06 → 2006-09-12 (+6d) | 15d → 13d |  | 2.35d → 34d |  |  |
| 139 | Development | 2006-08-18 → 2006-08-24 (+6d) | 2006-09-06 → 2006-09-12 (+6d) |  |  | 6.35d → 34d | 160 → 136 |  |
| 142 | **BMS Code Integration** | 2006-08-21 → 2006-08-24 (+3d) | 2006-09-11 → 2006-09-13 (+2d) | 15d → 13d |  | 3.35d → 34.5d |  |  |
| 143 | Development | 2006-08-23 → 2006-08-24 (+1d) | 2006-09-11 → 2006-09-13 (+2d) |  |  | 3.35d → 34.5d | Design → 133 |  |
| 150 | Design | 2006-08-03 → 2006-08-21 (+18d) | 2006-08-07 → 2006-08-21 (+14d) | 2d → 1d |  | 3.35d → 51d | 120 → 145 | constraint none → start no earlier than 2006-08-15; resources Orlando → Vijay |
| 155 | Design | 2006-08-08 → 2006-08-31 (+23d) | 2006-08-16 → 2006-08-31 (+15d) | 6d → 1d |  | 6.35d → 51d | 137 → 152 | constraint none → start no earlier than 2006-08-21; resources Kunal → Vijay |
| 160 | Design | 2006-08-16 → 2006-09-13 (+28d) | 2006-08-18 → 2006-09-13 (+26d) | 2d → 1d |  | 6.35d → 51d | 176 → 157 | constraint none → finish no earlier than 2006-09-01; resources Kunal → Vijay |
| 163 | Execution | 2006-10-16 → 2006-09-20 (-26d) | 2006-11-03 → 2006-09-25 (-39d) | 14d → 4d |  | 34.35d → 51d | 189 → 159 | constraint none → start no earlier than 2006-09-08; resources QA → Vijay |
| 173 | **Iteration 2** | 2006-08-03 → 2006-09-20 (+48d) | 2006-10-16 → 2006-10-09 (-7d) | 52d → 14d |  | 2.35d → 34d | 120 → none |  |
| 174 | **Secure SDK interfaces** | 2006-09-06 → 2006-09-20 (+14d) | 2006-09-20 → 2006-09-29 (+9d) | 10d → 8d |  | 2.35d → 36d |  |  |
| 175 | Development | 2006-09-08 → 2006-09-20 (+12d) | 2006-09-20 → 2006-09-29 (+9d) |  |  | 6.35d → 36d | 177 → 168 |  |
| 176 | **SDK Instance Level Security Design** | 2006-08-08 → 2006-10-02 (+55d) | 2006-08-16 → 2006-10-09 (+54d) |  |  | 2.35d → 52d |  |  |
| 177 | Design | 2006-09-06 → 2006-10-02 (+26d) | 2006-09-08 → 2006-10-09 (+31d) | 2d → 6d |  | 6.35d → 52d | 139 → 174 |  |
| 181 | Test Support | 2006-10-16 → 2006-10-04 (-12d) | 2006-11-03 → 2006-10-06 (-28d) | 14d → 3d |  | 32.35d → 34d | 189 → 178, 174 | resources Orlando [50%]; Kunal [50%] → Kunal; Orlando |
| 182 | **Iteration 3** | 2006-10-16 → 2006-10-09 (-7d) |  | 31.35d → 35d |  | 15.35d → 17d |  |  |
| 183 | **Add a new "Type" attribute to Protection Element** | 2006-09-20 → 2006-10-09 (+19d) | 2006-09-26 → 2006-10-11 (+15d) | 4d → 3d |  | 2.35d → 34d |  |  |
| 184 | Development | 2006-09-21 → 2006-10-09 (+18d) | 2006-09-26 → 2006-10-11 (+15d) |  |  | 2.35d → 34d | Design → 181 |  |
| 185 | **Defect Fixes** | 2006-09-11 → 2006-10-09 (+28d) | 2006-10-03 → 2006-10-17 (+14d) | 16d → 7d |  | 2.35d → 34d |  |  |
| 186 | Development/Unit Test | 2006-09-11 → 2006-10-09 (+28d) | 2006-10-02 → 2006-10-13 (+11d) | 15d → 5d |  | 3.35d → 36d | 143 → 181 |  |
| 187 | Improve the Deployment of CSM & Integration with Other Apps | 2006-09-26 → 2006-10-12 (+16d) | 2006-10-03 → 2006-10-17 (+14d) | 5d → 4d |  | 2.35d → 34d |  |  |
| 189 | **Testing** | 2006-08-07 → 2006-10-18 (+72d) | 2006-10-16 → 2006-10-23 (+7d) | 49.7d → 4d |  | 32.35d → 34d |  |  |
| 190 | QA Test Components | 2006-10-02 → 2006-10-19 (+17d) | 2006-10-13 → 2006-10-23 (+10d) | 9d → 3d |  | 33.35d → 42d | Load & Component Test Development, Deploy Components to Dev Server → 185, 188 |  |
| 191 | Test Support | 2006-10-03 → 2006-10-18 (+15d) | 2006-10-16 → 2006-10-20 (+4d) | 9d → 3d |  | 32.35d → 34d | 185 → 185, 187 | resources Orlando [50%]; Kunal [50%] → Orlando; Kunal |
| 193 | Write Draft Documentation/ Update User Guide | 2006-10-03 → 2006-10-23 (+20d) | 2006-10-16 → 2006-10-27 (+11d) | 9d → 5d |  | 2.35d → 34d | 185 → 191 | resources Orlando [50%]; Kunal [50%] → Orlando; Kunal |
| 194 | Draft Documentation/User Documentation Completed | 2006-10-12 → 2006-10-27 (+15d) | 2006-10-12 → 2006-10-27 (+15d) |  |  | 51d → 3d |  | constraint start no earlier than 2006-10-12 → start no earlier than 2006-10-27 |
| 196 | Push Candidate to Staging | 2006-11-03 → 2006-10-30 (-4d) | 2006-11-07 → 2006-11-02 (-5d) | 2d → 4d |  | 32.35d → 34d | 181 → 193 |  |
| 198 | **Regression Testing** |  | 2006-11-28 → 2006-11-09 (-19d) | 18d → 5d |  | 2d → 19d |  | was named Regression/UAT Testing |
| 199 | Execution |  | 2006-11-28 → 2006-11-09 (-19d) | 18d → 5d |  | 17d → 19d |  |  |
| 200 | Test Support |  | 2006-11-28 → 2006-11-09 (-19d) | 18d → 5d |  | 2d → 19d |  | resources Orlando [50%]; Kunal [50%] → Orlando; Kunal |
| 204 | **Transition** | 2006-10-03 → 2006-10-27 (+24d) |  | 57.35d? → 39d |  |  |  |  |
| 205 | **Documentation** | 2006-10-03 → 2006-10-27 (+24d) | 2006-12-19 → 2006-12-15 (-4d) | 55d? → 35d |  | 2.35d → 3d |  |  |
| 206 | Review Technical/User Docs | 2006-10-16 → 2006-10-27 (+11d) | 2006-11-14 → 2006-11-10 (-4d) | 21d → 11d |  | 2.35d → 3d | 193 → 194 |  |
| 208 | Incorporate Comments to User Docs | 2006-11-14 → 2006-11-13 (-1d) | 2006-11-15 → 2006-11-27 (+12d) | 1d? → 10d |  | 2.35d → 3d |  |  |
| 210 | Finalize Documents | 2006-11-15 → 2006-11-28 (+13d) | 2006-12-19 → 2006-12-15 (-4d) | 24d → 14d |  | 2.35d → 4d |  |  |
| 212 | Staging | 2006-11-29 → 2006-11-28 (-1d) | 2006-12-19 → 2006-12-18 (-1d) |  |  | 2d → 3d | 200 → 208 |  |

## Version 5 (saved 2006-08-14)

Note of the change: Updated per 8/14 status meeting

Last finish stays 2006-12-22. Complete tasks 81 → 86.

Changed:

| ID | Task | Start | Finish | Complete | Total float | Predecessors | Other |
| --- | --- | --- | --- | --- | --- | --- | --- |
| 1 | **CSM 3.2** |  |  | 35% → 41% |  |  |  |
| 2 | **Elaboration** |  |  | 85% → 92% |  |  |  |
| 3 | **Iteration 1** |  |  | 75% → 83% |  |  |  |
| 11 | **Project Scope** |  | 2006-05-26 A | 88% → 100% | 146d → none |  |  |
| 17 | **LOE/Requirements Gathering** |  | 2006-05-25 A | 77% → 100% | 147d → none |  |  |
| 24 | Estimate for Grid Integration/ Project Scope Doc | 2006-05-16 A | 2006-05-24 A | 0% → 100% | 157.4d → none |  |  |
| 94 | **Iteration 4** | 2006-07-25 A | 2006-08-01 A | 0% → 100% | 100d → none |  |  |
| 95 | **CLM** | 2006-07-25 A | 2006-08-01 A | 0% → 100% | 100d → none |  |  |
| 96 | Develop Requirements and Use Cases | 2006-07-25 A | 2006-07-27 A | 0% → 100% | 100d → none |  |  |
| 97 | Develop General Design | 2006-07-28 A | 2006-08-01 A | 0% → 100% | 100d → none |  |  |
| 98 | **Construction** |  |  | 16% → 22% |  |  |  |
| 121 | **Iteration 1** | 2006-08-01 A |  | 0% → 15% | 37d → 51d |  |  |
| 122 | **NCICB Boot Camp Support** | 2006-08-04 A | 2006-08-08 A | 0% → 100% | 34d → none |  |  |
| 123 | Preparation/Presentation | 2006-08-04 A | 2006-08-08 A | 0% → 100% | 34d → none |  |  |
| 124 | Presentation Support | 2006-08-04 A | 2006-08-04 A | 0% → 100% | 34.5d → none |  |  |
| 125 | **Design** | 2006-08-04 A |  | 0% → 26% |  |  |  |
| 127 | Exception Handling | 2006-08-08 A |  | 0% → 50% | 34.5d → 38.25d |  |  |
| 129 | Grid SAML Assertion Support | 2006-08-09 A |  | 0% → 60% | 34d → 35.5d |  |  |
| 130 | Secure SDK Design | 2006-08-11 A |  | 0% → 25% |  |  |  |
| 131 | **Linking a User to Application Context** | 2006-08-14 A |  | 0% → 75% |  |  |  |
| 132 | Development/Unit Test | 2006-08-14 A |  | 0% → 75% |  |  |  |
| 144 | **CLM** | 2006-08-01 A |  | 0% → 24% |  |  |  |
| 145 | **Query Interface** | 2006-08-01 A |  | 0% → 66% |  |  |  |
| 146 | Design (All Query API changes) | 2006-08-01 A |  | 0% → 80% | 51d → 58.6d |  |  |
| 148 | Development | 2006-08-09 A |  | 0% → 95% |  |  |  |
| 149 | **Use NCI Template** | 2006-09-13 → 2006-08-21 (-23d) | 2006-09-19 → 2006-08-25 (-25d) |  |  |  |  |
| 150 | Design | 2006-09-13 → 2006-08-21 (-23d) | 2006-09-13 → 2006-08-21 (-23d) |  |  | 160 → 145 | constraint finish no earlier than 2006-09-01 → start no earlier than 2006-08-21 |
| 151 | Development | 2006-09-14 → 2006-08-22 (-23d) | 2006-09-19 → 2006-08-25 (-25d) |  |  |  | constraint start no earlier than 2006-09-04 → start no earlier than 2006-08-22 |
| 152 | **Limit view by Organization, Object ID, Object Name** | 2006-08-21 → 2006-08-28 (+7d) | 2006-08-24 → 2006-08-31 (+7d) |  |  |  |  |
| 153 | Design | 2006-08-21 → 2006-08-28 (+7d) | 2006-08-21 → 2006-08-28 (+7d) |  |  | 145 → 149 |  |
| 154 | Development | 2006-08-22 → 2006-08-29 (+7d) | 2006-08-24 → 2006-08-31 (+7d) |  |  |  |  |
| 155 | **Retreive Log Messages based on Object's Primary Key (Unique Key)** | 2006-08-25 → 2006-09-01 (+7d) | 2006-08-30 → 2006-09-07 (+8d) |  |  |  |  |
| 156 | Development | 2006-08-25 → 2006-09-01 (+7d) | 2006-08-30 → 2006-09-07 (+8d) |  |  |  |  |
| 157 | **Refactor Log Viewer to use Query API's to retrieve the results** | 2006-08-31 → 2006-09-08 (+8d) | 2006-09-06 → 2006-09-13 (+7d) |  |  |  |  |
| 158 | Design | 2006-08-31 → 2006-09-08 (+8d) | 2006-08-31 → 2006-09-08 (+8d) |  |  |  |  |
| 159 | Development | 2006-09-01 → 2006-09-11 (+10d) | 2006-09-06 → 2006-09-13 (+7d) |  |  |  |  |
| 160 | **Utilize CSM for authentication/authorization** | 2006-09-07 → 2006-09-14 (+7d) | 2006-09-12 → 2006-09-19 (+7d) |  |  |  |  |
| 161 | Development/Unit Test | 2006-09-07 → 2006-09-14 (+7d) | 2006-09-12 → 2006-09-19 (+7d) |  |  |  |  |
| 163 | Execution |  |  |  |  | 149 → 160 |  |

## Version 6 (saved 2006-08-21)

Note of the change: updated per the 8/21 status report

Last finish stays 2006-12-22. Complete tasks 86 → 88.

Changed:

| ID | Task | Start | Finish | Complete | Total float |
| --- | --- | --- | --- | --- | --- |
| 1 | **CSM 3.2** |  |  | 41% → 44% |  |
| 98 | **Construction** |  |  | 22% → 28% |  |
| 121 | **Iteration 1** |  |  | 15% → 31% |  |
| 125 | **Design** |  |  | 26% → 57% | 34d → 40.5d |
| 126 | Linking a User to Application Context | 2006-08-04 A |  | 0% → 95% | 34.5d → 41.15d |
| 127 | Exception Handling |  |  | 50% → 95% | 38.25d → 39.25d |
| 130 | Secure SDK Design |  |  | 25% → 50% | 34d → 40.5d |
| 131 | **Linking a User to Application Context** |  |  | 75% → 95% |  |
| 132 | Development/Unit Test |  |  | 75% → 95% |  |
| 138 | **Grid SAML Assertion Support** | 2006-08-24 A |  | 0% → 50% |  |
| 139 | Development | 2006-08-24 A |  | 0% → 50% |  |
| 144 | **CLM** |  |  | 24% → 45% | 51d → 62d |
| 145 | **Query Interface** |  |  | 66% → 91% | 51d → 87d |
| 146 | Design (All Query API changes) |  | 2006-08-02 A | 80% → 100% | 58.6d → none |
| 147 | Create Object Model - Semantic Integration | 2006-08-03 A |  | 0% → 80% | 51d → 94.6d |
| 149 | **Use NCI Template** | 2006-08-21 A |  | 0% → 96% | 51d → 82d |
| 150 | Design | 2006-08-21 A | 2006-08-21 A | 0% → 100% | 51d → none |
| 151 | Development | 2006-08-22 A |  | 0% → 95% | 51d → 82d |

## Version 7 (saved 2006-08-29)

Note of the change: Updated per status meeting

Last finish stays 2006-12-22. Complete tasks 88 → 89.

Changed:

| ID | Task | Start | Finish | Duration | Complete | Total float | Other |
| --- | --- | --- | --- | --- | --- | --- | --- |
| 1 | **CSM 3.2** |  |  |  | 44% → 45% |  |  |
| 121 | **Iteration 1** |  |  |  | 31% → 33% |  |  |
| 125 | **Design** |  |  |  | 57% → 63% | 40.5d → 45.7d |  |
| 129 | Grid SAML Assertion Support |  | 2006-08-10 A |  | 60% → 100% | 35.5d → none |  |
| 131 | **Linking a User to Application Context** |  |  |  | 95% → 20% |  |  |
| 132 | Development/Unit Test |  |  |  | 95% → 20% |  |  |
| 138 | **Grid SAML Assertion Support** |  |  |  | 50% → 90% |  |  |
| 139 | Development |  |  |  | 50% → 90% |  |  |
| 142 | **BMS Code Integration** | 2006-08-24 → 2006-08-25 (+1d) |  |  |  | 34.5d → 34d |  |
| 143 | Development | 2006-08-24 → 2006-08-25 (+1d) |  |  |  | 34.5d → 34d | constraint none → finish no earlier than 2006-09-13 |
| 153 | Design |  |  |  |  |  | resources Vijay → Kunal |
| 154 | Development |  |  |  |  |  | resources Vijay → Kunal |
| 156 | Development |  |  |  |  |  | resources none → Vijay |
| 161 | Development/Unit Test |  |  |  |  |  | resources Vijay → Kunal |
| 164 | **QA Test Components** | 2006-09-13 → 2006-09-14 (+1d) |  | 15.5d → 15d |  |  |  |
| 165 | CSM | 2006-09-13 → 2006-09-14 (+1d) |  |  |  | 56.5d → 56d |  |
| 170 | Load Test Performance Enhancements/APIs | 2006-09-19 → 2006-09-20 (+1d) |  |  |  | 56.5d → 56d |  |

## Version 8 (saved 2006-09-11)

Note of the change: updated per 9/11 status meeting

Last finish stays 2006-12-22. Complete tasks 89 → 93.

Added:

| ID | Task | Duration | Start | Finish | Predecessors | Resources |
| --- | --- | --- | --- | --- | --- | --- |
| 137 | Development | 10d | 2006-08-30 | 2006-09-13 | 127 | Vijay |

Removed: 126 Linking a User to Application Context; 130 Secure SDK Design; 131 Linking a User to Application Context; 134 Development/Unit Test; 135 Performance Enhancements; 136 Fix Update Methods; 137 Development/Unit Test

Changed:

| ID | Task | Start | Finish | Duration | Complete | Total float | Predecessors | Other |
| --- | --- | --- | --- | --- | --- | --- | --- | --- |
| 1 | **CSM 3.2** |  |  |  | 45% → 46% |  |  |  |
| 98 | **Construction** |  |  |  | 28% → 30% |  |  |  |
| 121 | **Iteration 1** |  | 2006-10-10 → 2006-10-18 (+8d) | 50d → 56d | 33% → 38% | 51d → 45d |  |  |
| 125 | **Design** |  | 2006-08-18 → 2006-08-29 (+11d) | 10.5d → 17.5d | 63% → 98% | 45.7d → 70d |  |  |
| 126 | Exception Handling | 2006-08-08 A → 2006-08-04 A (-4d) | 2006-08-10 A |  | 95% → 100% | 39.25d → none | Linking a User to Application Context → none | resources Orlando → Kunal |
| 127 | BMS Code Integration | 2006-08-10 → 2006-08-28 A (+18d) | 2006-08-14 → 2006-08-29 (+15d) |  | 0% → 95% | 34.5d → 70d |  | resources Orlando → Vijay |
| 128 | Grid SAML Assertion Support | 2006-08-09 A → 2006-08-11 A (+2d) | 2006-08-10 A → 2006-08-14 A (+4d) |  |  |  | 123 → 126 |  |
| 129 | **Improve Exception Handling** | 2006-08-21 → 2006-09-01 (+11d) | 2006-08-24 → 2006-09-06 (+13d) |  |  | 34.5d → 75d |  |  |
| 130 | Development/Unit Test | 2006-08-14 A → 2006-09-01 (+18d) | 2006-08-21 → 2006-09-06 (+16d) | 5d → 3d | 20% → 0% | 34.5d → 75d | 127 → 131 | resources Orlando → Kunal |
| 131 | **Grid SAML Assertion Support** | 2006-08-24 A → 2006-08-15 A (-9d) | 2006-09-12 → 2006-08-31 A (-12d) |  | 90% → 100% | 34d → none |  |  |
| 132 | Development | 2006-08-24 A → 2006-08-15 A (-9d) | 2006-09-12 → 2006-08-31 A (-12d) |  | 90% → 100% | 34d → none | Fix Update Methods → 128 |  |
| 133 | **Add new Type attribute to Protection Element** | 2006-09-13 → 2006-09-07 A (-6d) |  | 1d → 5d | 0% → 64% |  |  | was named Design |
| 134 | Design | 2006-09-13 → 2006-09-07 A (-6d) | 2006-09-13 → 2006-09-08 A (-5d) | 1d → 2d | 0% → 100% | 34d → none | 131 → 129 | was named Add new "Type" attribute to Protection Element |
| 135 | Development | 2006-08-25 → 2006-09-11 A (+17d) |  | 13d → 3d | 0% → 40% |  | 129 → 134 | constraint finish no earlier than 2006-09-13 → none; resources Orlando → Kunal |
| 136 | **BMS Code Integration** | 2006-08-25 → 2006-08-30 (+5d) |  | 13d → 10d |  | 34d → 70d |  |  |
| 138 | **CLM** |  | 2006-09-25 → 2006-10-03 (+8d) | 39d → 45d | 45% → 44% | 62d → 56d |  |  |
| 146 | **Limit view by Organization, Object ID, Object Name** | 2006-08-28 → 2006-09-18 (+21d) | 2006-08-31 → 2006-09-29 (+29d) | 4d → 10d |  | 51d → 45d |  |  |
| 147 | Design | 2006-08-28 → 2006-09-18 (+21d) | 2006-08-28 → 2006-09-18 (+21d) |  |  | 51d → 45d | 143 → 154 |  |
| 148 | Development | 2006-08-29 → 2006-09-19 (+21d) | 2006-08-31 → 2006-09-29 (+29d) | 3d → 9d |  | 51d → 45d |  |  |
| 149 | **Retreive Log Messages based on Object's Primary Key (Unique Key)** | 2006-09-01 → 2006-09-14 (+13d) | 2006-09-07 → 2006-09-29 (+22d) | 4d → 12d |  | 51d → 45d |  |  |
| 150 | Development | 2006-09-01 → 2006-09-14 (+13d) | 2006-09-07 → 2006-09-29 (+22d) | 4d → 12d |  | 51d → 45d | 146 → 151 |  |
| 151 | **Refactor Log Viewer to use Query API's to retrieve the results** | 2006-09-08 A |  |  | 0% → 96% | 51d → 45d |  |  |
| 152 | Design | 2006-09-08 A | 2006-09-08 A |  | 0% → 100% | 51d → none | 149 → none |  |
| 153 | Development | 2006-09-11 A |  |  | 0% → 95% | 51d → 45d |  |  |
| 154 | **Utilize CSM for authentication/authorization** | 2006-09-14 → 2006-09-01 A (-13d) | 2006-09-19 → 2006-09-15 (-4d) | 4d → 10d | 0% → 38% | 51d → 45d |  |  |
| 155 | Development/Unit Test | 2006-09-14 → 2006-09-01 A (-13d) | 2006-09-19 → 2006-09-15 (-4d) | 4d → 10d | 0% → 38% | 51d → 45d | 151 → none |  |
| 156 | **Testing Integration** | 2006-09-20 → 2006-10-02 (+12d) | 2006-09-25 → 2006-10-03 (+8d) | 4d → 2d |  | 51d → 45d |  |  |
| 157 | Execution | 2006-09-20 → 2006-10-02 (+12d) | 2006-09-25 → 2006-10-03 (+8d) | 4d → 2d |  | 51d → 45d | 154 → 149, 146 | resources Vijay → Vijay; Kunal |
| 158 | **QA Test Components** | 2006-09-14 → 2006-09-01 (-13d) | 2006-10-04 → 2006-10-12 (+8d) | 15d → 29d |  | 55d → 49d |  |  |
| 159 | CSM | 2006-09-14 → 2006-09-01 (-13d) | 2006-09-19 → 2006-09-07 (-12d) |  |  | 56d → 64d | 131, 136 → 131 |  |
| 160 | CLM | 2006-09-26 → 2006-10-04 (+8d) | 2006-10-04 → 2006-10-12 (+8d) |  |  | 55d → 49d |  |  |
| 161 | **Test Support** |  | 2006-10-04 → 2006-10-12 (+8d) | 15d → 21d |  |  |  |  |
| 162 | CSM |  |  |  |  |  | 133, 136 → 133 |  |
| 163 | CLM | 2006-09-26 → 2006-10-04 (+8d) | 2006-10-04 → 2006-10-12 (+8d) |  |  | 51d → 45d |  |  |
| 164 | Load Test Performance Enhancements/APIs | 2006-09-20 → 2006-09-08 (-12d) | 2006-10-03 → 2006-09-21 (-12d) |  |  | 56d → 64d |  |  |
| 165 | **Documentation** | 2006-10-05 → 2006-10-13 (+8d) | 2006-10-10 → 2006-10-18 (+8d) |  |  | 51d → 45d |  |  |
| 166 | CLM User Guide Update | 2006-10-05 → 2006-10-13 (+8d) | 2006-10-10 → 2006-10-18 (+8d) |  |  | 51d → 45d |  |  |

## Version 9 (saved 2006-09-25)

Note of the change: Updated per9/25/2006 Status Meeting

Last finish stays 2006-12-22. Complete tasks 93 → 97.

Removed: 164 Load Test Performance Enhancements/APIs

Changed:

| ID | Task | Start | Finish | Duration | Complete | Total float | Predecessors | Other |
| --- | --- | --- | --- | --- | --- | --- | --- | --- |
| 1 | **CSM 3.2** |  |  |  | 46% → 55% |  |  |  |
| 98 | **Construction** |  |  |  | 30% → 45% |  |  |  |
| 121 | **Iteration 1** |  |  |  | 38% → 75% |  |  |  |
| 125 | **Design** |  | 2006-08-29 A |  | 98% → 100% | 70d → none |  |  |
| 127 | BMS Code Integration |  | 2006-08-29 A |  | 95% → 100% | 70d → none |  |  |
| 129 | **Improve Exception Handling** | 2006-09-01 A |  |  | 0% → 99% |  |  |  |
| 130 | Development/Unit Test | 2006-09-01 A |  |  | 0% → 99% |  |  |  |
| 131 | **Grid SAML Assertion Support** |  | 2006-08-31 A → 2006-08-31 |  | 100% → 99% | none → 77.97d |  |  |
| 132 | Development |  | 2006-08-31 A → 2006-08-31 |  | 100% → 99% | none → 64d |  |  |
| 133 | **Add new Type attribute to Protection Element** |  |  |  | 64% → 99% | 34d → 70d |  |  |
| 135 | Development |  |  |  | 40% → 99% | 34d → 36d |  |  |
| 136 | **BMS Code Integration** | 2006-08-30 A |  |  | 0% → 99% |  |  |  |
| 137 | Development | 2006-08-30 A |  |  | 0% → 99% |  |  |  |
| 138 | **CLM** |  |  |  | 44% → 77% |  |  |  |
| 146 | **Limit view by Organization, Object ID, Object Name** | 2006-09-18 A |  |  | 0% → 46% |  |  |  |
| 147 | Design | 2006-09-18 A | 2006-09-18 A |  | 0% → 100% | 45d → none |  |  |
| 148 | Development | 2006-09-19 A |  |  | 0% → 40% |  |  |  |
| 149 | **Retreive Log Messages based on Object's Primary Key (Unique Key)** | 2006-09-14 A |  |  | 0% → 70% |  |  |  |
| 150 | Development | 2006-09-14 A |  |  | 0% → 70% |  |  |  |
| 154 | **Utilize CSM for authentication/authorization** |  |  |  | 38% → 95% | 45d → 68d |  |  |
| 155 | Development/Unit Test |  |  |  | 38% → 95% | 45d → 68d |  |  |
| 158 | **QA Test Components** | 2006-09-01 A |  |  | 0% → 36% |  |  |  |
| 159 | CSM | 2006-09-01 A | 2006-09-07 A |  | 0% → 100% | 64d → none |  |  |
| 161 | **Test Support** | 2006-09-14 A |  |  | 0% → 36% | 34d → 45d |  |  |
| 162 | CSM | 2006-09-14 A | 2006-09-19 A |  | 0% → 100% | 34d → none |  | resources Kunal; Orlando → Kunal; Vijay |
| 172 | Development/Unit Test |  |  |  |  | 34d → 38.5d |  | resources Orlando → Vijay |
| 174 | Perform Build for QA |  | 2006-10-06 → 2006-10-04 (-2d) | 3d → 0.5d |  | 34d → 38.5d | 171, 167 → 171 | was named Test Support; resources Kunal; Orlando → Vijay |
| 175 | **Iteration 3** | 2006-10-09 → 2006-10-04 A (-5d) |  | 35d → 37.5d | 0% → 6% | 17d → 18d |  |  |
| 176 | **Add a new "Type" attribute to Protection Element** | 2006-10-09 A | 2006-10-11 A |  | 0% → 100% | 34d → none |  |  |
| 177 | Development | 2006-10-09 A | 2006-10-11 A |  | 0% → 100% | 34d → none | 174 → 169 |  |
| 178 | **Defect Fixes** | 2006-10-09 → 2006-10-04 (-5d) |  | 7d → 9.5d |  |  |  |  |
| 179 | Development/Unit Test | 2006-10-09 → 2006-10-04 (-5d) | 2006-10-13 → 2006-10-11 (-2d) |  |  | 36d → 38.5d |  | resources Orlando → Vijay |
| 181 | Begin Documentation Draft | 2006-10-16 → 2006-10-11 (-5d) | 2006-10-18 → 2006-10-16 (-2d) |  |  | 42d → 44.5d |  | resources Orlando → Vijay |
| 182 | **Testing** |  | 2006-10-23 → 2006-10-20 (-3d) | 4d → 3d |  |  |  |  |
| 183 | QA Test Components | 2006-10-19 → 2006-10-18 (-1d) | 2006-10-23 → 2006-10-20 (-3d) |  |  | 42d → 43d |  |  |
| 184 | Test Support |  |  |  |  |  |  | resources Orlando; Kunal → Vijay; Kunal |
| 186 | Write Draft Documentation/ Update User Guide |  |  |  |  |  |  | resources Orlando; Kunal → Vijay; Kunal |
| 189 | Push Candidate to Staging |  |  |  |  |  |  | resources Kunal; Orlando → Kunal; Vijay |
| 193 | Test Support |  |  |  |  |  |  | resources Orlando; Kunal → Vijay; Kunal |
| 195 | Test Execution/Suppport |  |  |  |  |  |  | resources Orlando [50%]; Kunal [50%] → Vijay [50%]; Kunal [50%] |
| 201 | Incorporate Comments to User Docs |  |  |  |  |  |  | resources Orlando [50%]; Kunal [50%] → Vijay [50%]; Kunal [50%] |
| 205 | Staging |  |  |  |  |  |  | resources Orlando; Kunal → Vijay; Kunal |

## Version 10 (saved 2006-10-02)

Note of the change: updated per status meeting on 10/2

Last finish stays 2006-12-22. Complete tasks 97 → 98.

Changed:

| ID | Task | Start | Finish | Complete | Total float |
| --- | --- | --- | --- | --- | --- |
| 1 | **CSM 3.2** |  |  | 55% → 59% |  |
| 98 | **Construction** |  |  | 45% → 52% |  |
| 121 | **Iteration 1** |  |  | 75% → 84% |  |
| 129 | **Improve Exception Handling** |  | 2006-09-06 A | 99% → 100% | 75d → none |
| 130 | Development/Unit Test |  | 2006-09-06 A | 99% → 100% | 75d → none |
| 131 | **Grid SAML Assertion Support** |  |  | 99% → 98% | 77.97d → 78d |
| 132 | Development |  |  | 99% → 98% | 64d → 78d |
| 133 | **Add new Type attribute to Protection Element** |  | 2006-09-13 A | 99% → 100% | 70d → none |
| 135 | Development |  | 2006-09-13 A | 99% → 100% | 36d → none |
| 138 | **CLM** |  |  | 77% → 98% |  |
| 139 | **Query Interface** |  |  | 91% → 98% |  |
| 141 | Create Object Model - Semantic Integration |  |  | 80% → 95% | 94.6d → 94.92d |
| 142 | Development |  |  | 95% → 99% |  |
| 143 | **Use NCI Template** |  |  | 96% → 99% |  |
| 145 | Development |  |  | 95% → 99% |  |
| 146 | **Limit view by Organization, Object ID, Object Name** |  |  | 46% → 99% | 45d → 46.8d |
| 148 | Development |  |  | 40% → 99% | 45d → 46.8d |
| 149 | **Retreive Log Messages based on Object's Primary Key (Unique Key)** |  |  | 70% → 99% | 45d → 46.8d |
| 150 | Development |  |  | 70% → 99% | 45d → 46.8d |
| 151 | **Refactor Log Viewer to use Query API's to retrieve the results** |  |  | 96% → 99% | 53.4d → 58.68d |
| 153 | Development |  |  | 95% → 99% | 53.4d → 58.68d |
| 154 | **Utilize CSM for authentication/authorization** |  |  | 95% → 99% |  |
| 155 | Development/Unit Test |  |  | 95% → 99% |  |
| 156 | **Testing Integration** | 2006-10-02 A |  | 0% → 90% |  |
| 157 | Execution | 2006-10-02 A |  | 0% → 90% |  |
| 162 | CSM |  | 2006-09-19 A → 2006-09-19 | 100% → 99% | none → 46.5d |
| 166 | **Iteration 2** | 2006-09-20 A |  | 0% → 47% | 38.5d → 52d |
| 167 | **Secure SDK interfaces** | 2006-09-20 A |  | 0% → 60% |  |
| 168 | Development | 2006-09-20 A |  | 0% → 60% |  |
| 171 | **Defect Fixes** | 2006-09-20 A |  | 0% → 80% |  |
| 172 | Development/Unit Test | 2006-09-20 A |  | 0% → 80% |  |

## Version 11 (saved 2006-10-12)

Note of the change: Updated per 10/12 status meeting

Last finish stays 2006-12-22. Complete tasks 98 → 106.

Changed:

| ID | Task | Start | Finish | Complete | Total float |
| --- | --- | --- | --- | --- | --- |
| 1 | **CSM 3.2** |  |  | 59% → 61% |  |
| 98 | **Construction** |  |  | 52% → 55% |  |
| 121 | **Iteration 1** |  |  | 84% → 85% |  |
| 136 | **BMS Code Integration** |  | 2006-09-13 A | 99% → 100% | 70d → none |
| 137 | Development |  | 2006-09-13 A | 99% → 100% | 70d → none |
| 138 | **CLM** |  |  | 98% → 99% |  |
| 139 | **Query Interface** |  |  | 98% → 99% |  |
| 141 | Create Object Model - Semantic Integration |  |  | 95% → 99% | 94.92d → 95d |
| 142 | Development |  | 2006-08-18 A | 99% → 100% | 87d → none |
| 143 | **Use NCI Template** |  | 2006-08-25 A | 99% → 100% | 82d → none |
| 145 | Development |  | 2006-08-25 A | 99% → 100% | 82d → none |
| 146 | **Limit view by Organization, Object ID, Object Name** |  | 2006-09-29 A | 99% → 100% | 46.8d → none |
| 148 | Development |  | 2006-09-29 A | 99% → 100% | 46.8d → none |
| 149 | **Retreive Log Messages based on Object's Primary Key (Unique Key)** |  | 2006-09-29 A | 99% → 100% | 46.8d → none |
| 150 | Development |  | 2006-09-29 A | 99% → 100% | 46.8d → none |
| 151 | **Refactor Log Viewer to use Query API's to retrieve the results** |  | 2006-09-13 A | 99% → 100% | 58.68d → none |
| 153 | Development |  | 2006-09-13 A | 99% → 100% | 58.68d → none |
| 154 | **Utilize CSM for authentication/authorization** |  | 2006-09-15 A | 99% → 100% | 68d → none |
| 155 | Development/Unit Test |  | 2006-09-15 A | 99% → 100% | 68d → none |
| 156 | **Testing Integration** |  | 2006-10-03 A | 90% → 100% | 45d → none |
| 157 | Execution |  | 2006-10-03 A | 90% → 100% | 45d → none |
| 166 | **Iteration 2** |  |  | 47% → 79% |  |
| 167 | **Secure SDK interfaces** |  |  | 60% → 95% | 52d → 55d |
| 168 | Development |  |  | 60% → 95% | 52d → 55d |
| 169 | **SDK Instance Level Security Design** | 2006-10-02 A |  | 0% → 75% |  |
| 170 | Design | 2006-10-02 A |  | 0% → 75% |  |
| 171 | **Defect Fixes** |  |  | 80% → 95% |  |
| 172 | Development/Unit Test |  |  | 80% → 95% |  |
| 175 | **Iteration 3** |  |  | 6% → 8% |  |
| 178 | **Defect Fixes** | 2006-10-04 A |  | 0% → 13% |  |
| 180 | Improve the Deployment of CSM & Integration with Other Apps | 2006-10-12 A |  | 0% → 30% |  |

## Version 12 (saved 2006-10-16)

Note of the change: *** empty log message ***

Last finish stays 2006-12-22. Complete tasks 106 → 108.

Changed:

| ID | Task | Start | Finish | Duration | Complete | Total float |
| --- | --- | --- | --- | --- | --- | --- |
| 1 | **CSM 3.2** |  |  |  | 61% → 64% |  |
| 98 | **Construction** |  |  |  | 55% → 60% |  |
| 121 | **Iteration 1** |  |  |  | 85% → 94% |  |
| 131 | **Grid SAML Assertion Support** |  | 2006-08-31 A |  | 98% → 100% | 78d → none |
| 132 | Development |  | 2006-08-31 A |  | 98% → 100% | 78d → none |
| 158 | **QA Test Components** |  |  |  | 36% → 87% |  |
| 160 | CLM | 2006-10-04 A |  |  | 0% → 80% |  |
| 161 | **Test Support** |  |  |  | 36% → 87% | 45d → 45.6d |
| 163 | CLM | 2006-10-04 A |  |  | 0% → 80% |  |
| 166 | **Iteration 2** |  |  |  | 79% → 80% |  |
| 171 | **Defect Fixes** |  | 2006-10-03 A |  | 95% → 100% | 38.5d → none |
| 172 | Development/Unit Test |  | 2006-10-03 A |  | 95% → 100% | 38.5d → none |
| 175 | **Iteration 3** |  |  |  | 8% → 16% |  |
| 178 | **Defect Fixes** |  |  |  | 13% → 41% |  |
| 179 | Development/Unit Test | 2006-10-04 A | 2006-10-11 → 2006-10-17 (+6d) | 5d → 9d | 0% → 28% | 38.5d → 34.5d |
| 180 | Improve the Deployment of CSM & Integration with Other Apps |  |  |  | 30% → 70% |  |
| 181 | Begin Documentation Draft | 2006-10-11 → 2006-10-17 (+6d) | 2006-10-16 → 2006-10-17 (+1d) | 3d → 0d |  | 44.5d → 43.5d |

## Version 13 (saved 2006-10-23)

Note of the change: *** empty log message ***

Last finish stays 2006-12-22. Complete tasks 108 → 113.

Removed: 173 QA Test Components; 174 Perform Build for QA

Changed:

| ID | Task | Start | Finish | Duration | Complete | Total float | Predecessors | Other |
| --- | --- | --- | --- | --- | --- | --- | --- | --- |
| 1 | **CSM 3.2** |  |  |  | 64% → 66% |  |  |  |
| 98 | **Construction** |  |  |  | 60% → 64% |  |  |  |
| 121 | **Iteration 1** |  |  |  | 94% → 96% |  |  |  |
| 138 | **CLM** |  | 2006-10-03 A |  | 99% → 100% | 56d → none |  |  |
| 139 | **Query Interface** |  | 2006-08-18 A |  | 99% → 100% | 87d → none |  |  |
| 141 | Create Object Model - Semantic Integration |  | 2006-08-08 A |  | 99% → 100% | 95d → none |  |  |
| 158 | **QA Test Components** |  |  |  | 87% → 97% |  |  |  |
| 160 | CLM |  |  |  | 80% → 95% |  |  |  |
| 161 | **Test Support** |  |  |  | 87% → 97% | 45.6d → 45d |  |  |
| 162 | CSM |  | 2006-09-19 A |  | 99% → 100% | 46.5d → none |  |  |
| 163 | CLM |  |  |  | 80% → 95% |  |  |  |
| 166 | **Iteration 2** |  |  |  | 80% → 94% |  |  |  |
| 167 | **Secure SDK interfaces** |  | 2006-09-29 A |  | 95% → 100% | 55d → none |  |  |
| 168 | Development |  | 2006-09-29 A |  | 95% → 100% | 55d → none |  |  |
| 173 | **Iteration 3** |  |  |  | 16% → 35% |  |  |  |
| 176 | **Defect Fixes** |  | 2006-10-17 A |  | 41% → 100% | 34d → none |  |  |
| 177 | Development/Unit Test |  | 2006-10-17 A |  | 28% → 100% | 34.5d → none | Perform Build for QA → 171 |  |
| 178 | Improve the Deployment of CSM & Integration with Other Apps |  | 2006-10-17 A |  | 70% → 100% | 34d → none |  |  |
| 180 | **Testing** | 2006-10-18 A | 2006-10-20 → 2006-11-01 (+12d) | 3d → 11d | 0% → 34% | 34d → 35d |  |  |
| 181 | QA Test Components | 2006-10-18 A | 2006-10-20 → 2006-11-01 (+12d) | 3d → 11d | 0% → 30% | 43d → 35d |  |  |
| 182 | Test Support | 2006-10-18 A |  |  | 0% → 50% |  |  |  |
| 191 | Test Support/Update Java Docs/Revisit CSM Model |  |  |  |  |  |  | was named Test Support |
| 199 | Incorporate Comments to User Docs/Deployment Notes |  |  |  |  |  |  | was named Incorporate Comments to User Docs |
