# CSM 4.0

How a schedule from MS Project changed from version to version. A marks actual dates.

## Version 1 (saved 2007-02-14)

Note of the change: initial draft

| ID | WBS | Task | Duration | Start | Finish | Predecessors | Complete | Total float | Constraint |
| --- | --- | --- | --- | --- | --- | --- | --- | --- | --- |
| 1 | 1 | **CSM v4.0** | 132d? | 2007-01-16 A | 2007-07-23 |  | 12% | 0d |  |
| 2 | 1.1 | **Inception** | 3d | 2007-01-19 A | 2007-01-23 A |  | 100% |  |  |
| 3 |  | 4.0 Kickoff meeting | 0d | 2007-01-19 A | 2007-01-19 A |  | 100% |  | start no earlier than 2007-01-19 |
| 4 |  | Create initial task plan | 1d | 2007-01-23 A | 2007-01-23 A |  | 100% |  |  |
| 5 | 1.2 | **Support** | 27d? | 2007-01-23 A | 2007-03-05 |  | 25% | 100d |  |
| 6 |  | Application Support | 27d? | 2007-01-23 | 2007-03-05 |  |  | 100d | start no earlier than 2007-01-23 |
| 7 |  | Support for caBIG Activities | 9d? | 2007-01-23 A | 2007-02-02 A |  | 100% |  | start no earlier than 2007-01-23 |
| 8 |  | Attend caBIG Conference | 0d? | 2007-02-05 A | 2007-02-07 A | 7 | 100% |  | start no earlier than 2007-02-05 |
| 9 | 1.3 | **Eloboration** | 132d? | 2007-01-16 A | 2007-07-23 |  | 10% | 0d |  |
| 10 | 1.3.1 | **Requiements Gathering** | 6.25d | 2007-01-19 A | 2007-01-29 |  | 91% | 122.75d |  |
| 11 |  | caCORE User's Meeting + Preperation | 1.25d | 2007-01-19 A | 2007-01-22 A |  | 100% |  | start no earlier than 2007-01-19 |
| 12 |  | Requirements Meeting (BRN/caArray) | 0.25d | 2007-01-24 | 2007-01-24 |  |  | 125.75d | start no earlier than 2007-01-24 |
| 13 |  | Requirements meeting (iSPY, Rembrandt, CGEMS) | 0.25d | 2007-01-25 A | 2007-01-25 A |  | 100% |  | start no earlier than 2007-01-25 |
| 14 |  | Requirements meeting (caCORE, SDK) | 0.25d | 2007-01-25 A | 2007-01-25 A |  | 100% |  | start no earlier than 2007-01-25 |
| 15 |  | Requirements meeting (SPORES, caMOD) | 0.25d | 2007-01-26 A | 2007-01-26 A |  | 100% |  | start no earlier than 2007-01-26 |
| 16 |  | Requirements meeting (BMS) | 0.25d | 2007-01-26 A | 2007-01-26 A |  | 100% |  | start no earlier than 2007-01-26 |
| 17 |  | Requirements meeting (caGRID) | 0.25d | 2007-01-29 A | 2007-01-29 A |  | 100% |  | start no earlier than 2007-01-29 |
| 18 | 1.3.2 | **Scope Document** | 8d | 2007-01-26 A | 2007-02-09 |  | 90% | 116d |  |
| 19 |  | Prepare list of scope items on gforge | 1d | 2007-01-26 A | 2007-01-26 |  | 50% | 123d | start no earlier than 2007-01-26 |
| 20 |  | Draft scope document | 3d | 2007-01-29 A | 2007-01-31 A | 19 | 100% |  |  |
| 21 |  | Estimate LOE for Itertion 1 & 2 scope items | 1d | 2007-02-01 A | 2007-02-01 A | 20 | 100% |  |  |
| 22 |  | Prepare risk list | 1d | 2007-02-02 A | 2007-02-02 | 21 | 50% | 118d |  |
| 23 |  | NCICB Review of scope document | 2d | 2007-02-01 A | 2007-02-05 A | 20 | 100% |  |  |
| 24 |  | Revise scope document | 2d | 2007-02-08 A | 2007-02-09 A | 23, 8 | 100% |  |  |
| 25 |  | Finalize Scope | 0d | 2007-02-09 | 2007-02-09 | 24 |  | 111d |  |
| 26 | 1.3.3 | **QA Actvities** | 5d | 2007-02-12 | 2007-02-16 |  |  | 111d |  |
| 27 |  | Requirement Analysis | 2d | 2007-02-12 | 2007-02-13 | 25 |  | 111d |  |
| 28 |  | Overall Test Plan Creation | 3d | 2007-02-14 | 2007-02-16 | 27 |  | 111d |  |
| 29 |  | Revise task plan | 1d? | 2007-01-23 | 2007-01-23 |  |  | 126d |  |
| 30 | 1.3.6 | **Construction** | 127d | 2007-01-16 A | 2007-07-16 |  | 6% | 5d |  |
| 31 | 1.3.6.1 | **Iteration 1** | 38d | 2007-01-16 A | 2007-03-13 |  | 27% | 94d |  |
| 32 |  | CSM Application Developers Guide Update | 5d | 2007-01-16 A | 2007-01-22 |  | 85% | 127d | start no earlier than 2007-01-16 |
| 33 |  | Regression Junit Development | 8d | 2007-01-23 A | 2007-02-01 A | 32 | 100% |  |  |
| 34 |  | CSM Bug Fixes (GF#3794) | 6d | 2007-02-02 | 2007-02-14 | 33 |  | 5d |  |
| 35 | 1.3.5.1.4 | **CSM caGRID Integration** | 13d | 2007-02-14 | 2007-03-02 |  |  | 76d |  |
| 36 | 1.3.5.1.4.1 | **Client Session is singleton which is enforcing the CSM caGrid Integration project to use snychornization** | 13d | 2007-02-14 | 2007-03-02 |  |  | 101d |  |
| 37 |  | Design | 4d | 2007-02-14 | 2007-02-19 |  |  | 110d | start no earlier than 2007-02-14 |
| 38 |  | Development | 3d | 2007-02-28 | 2007-03-02 | 43 |  | 101d |  |
| 39 | 1.3.5.1.4.2 | **Upgrade the CSM/caGRID integration to use new functionality of CSM 3.2** | 10d | 2007-02-14 | 2007-02-27 |  |  | 76d |  |
| 40 |  | Design | 4d | 2007-02-14 | 2007-02-19 |  |  | 76d | start no earlier than 2007-02-14 |
| 41 |  | Design Review | 0.5d | 2007-02-20 | 2007-02-20 | 40 |  | 76d |  |
| 42 |  | Design update | 0.5d | 2007-02-20 | 2007-02-20 | 41 |  | 76d |  |
| 43 |  | Development | 5d | 2007-02-21 | 2007-02-27 | 42 |  | 76d |  |
| 44 | 1.3.5.1.5 | **QA** | 5d | 2007-03-06 | 2007-03-12 |  |  | 94d |  |
| 45 |  | Test Execution (In Sync With SDK Testing) | 5d | 2007-03-06 | 2007-03-12 |  |  | 94d | start no earlier than 2007-03-06 |
| 46 |  | Test Support | 3d | 2007-03-06 | 2007-03-08 |  |  | 96d | start no earlier than 2007-03-06 |
| 47 | 1.3.5.1.6 | **Iteration Plan** | 1d | 2007-03-13 | 2007-03-13 |  |  | 94d |  |
| 48 |  | Review Client Feature Request/Revise Task Plan | 1d | 2007-03-13 | 2007-03-13 | 44 |  | 94d |  |
| 49 | 1.3.5.2 | **Iteration 2** | 40d | 2007-02-15 | 2007-04-11 |  |  | 5d |  |
| 50 | 1.3.5.2.1 | **Release 4.0 Beta 1** | 40d | 2007-02-15 | 2007-04-11 |  |  | 5d |  |
| 51 | 1.3.5.2.1.1 | **Instance Level Security** | 25d | 2007-02-28 | 2007-04-03 |  |  | 76d |  |
| 52 |  | Design | 7d | 2007-02-28 | 2007-03-08 | 43 |  | 76d |  |
| 53 |  | Development | 18d | 2007-03-09 | 2007-04-03 | 52 |  | 76d |  |
| 54 |  | Assist BMS to Upgrade to CSM 3.2 to come on the same version to intiate co development | 3d | 2007-04-04 | 2007-04-06 | 51 |  | 76d |  |
| 55 |  | Query optimization and corrections to queries | 6d | 2007-02-15 | 2007-02-22 | 34 |  | 5d |  |
| 56 |  | Support Digital Certificates as credentials | 6d | 2007-02-23 | 2007-03-02 | 55 |  | 5d |  |
| 57 |  | AuthenticationManager to correctly use the user provided lockout parameters | 1d | 2007-03-05 | 2007-03-05 | 56 |  | 5d |  |
| 58 |  | UPT Fixes | 3d | 2007-03-06 | 2007-03-08 | 57 |  | 5d |  |
| 59 |  | Merge User Provisioning Manager & Authorization Manager Interfaces | 3d | 2007-03-09 | 2007-03-13 | 58 |  | 5d |  |
| 60 |  | Improve Installation for CSM and UPT especially | 3d | 2007-03-14 | 2007-03-16 | 59 |  | 5d |  |
| 61 |  | Support Postgres Database | 4d | 2007-03-19 | 2007-03-22 | 60 |  | 5d |  |
| 62 |  | Have a capability of Associating only the Roles to a User or Group | 4d | 2007-03-23 | 2007-03-28 | 61 |  | 5d |  |
| 63 | 1.3.5.2.1.11 | **QA** | 24d | 2007-03-09 | 2007-04-11 |  |  | 19d |  |
| 64 |  | Test Development | 10d | 2007-03-09 | 2007-03-22 | 52 |  | 87d |  |
| 65 |  | Test Execution | 10d | 2007-03-29 | 2007-04-11 | 62 |  | 73d |  |
| 66 |  | Test Support | 5d | 2007-03-29 | 2007-04-04 | 62 |  | 5d |  |
| 67 |  | Release Packaging | 2d | 2007-04-05 | 2007-04-06 | 66 |  | 5d |  |
| 68 |  | Release 4.0 Beta 1 | 0d | 2007-04-06 | 2007-04-06 | 67 |  | 5d |  |
| 69 | 1.3.5.2.1.14 | **Iteration Plan** | 1d | 2007-04-09 | 2007-04-09 |  |  | 75d |  |
| 70 |  | Review Client Feature Request/Revise Task Plan | 1d | 2007-04-09 | 2007-04-09 | 68 |  | 75d |  |

| ID | WBS | Task | Duration | Start | Finish | Predecessors | Total float | Constraint |
| --- | --- | --- | --- | --- | --- | --- | --- | --- |
| 71 | 1.3.5.3 | **Iteration 3** | 26d | 2007-04-09 | 2007-05-14 |  | 5d |  |
| 72 |  | Release 4.0 Beta 2 | 25d | 2007-04-09 | 2007-05-11 | 68 | 5d |  |
| 73 | 1.3.5.3.2 | **Iteration Plan** | 1d | 2007-05-14 | 2007-05-14 |  | 5d |  |
| 74 |  | Review Client Feature Request/Revise Task Plan | 1d | 2007-05-14 | 2007-05-14 | 72 | 5d |  |
| 75 | 1.3.5.4 | **Iteration 4** | 25d | 2007-05-15 | 2007-06-18 |  | 5d |  |
| 76 |  | Release 4.0 Beta 2 | 25d | 2007-05-15 | 2007-06-18 | 73 | 5d |  |
| 77 |  | Integration Test | 10d | 2007-06-19 | 2007-07-02 | 75 | 5d |  |
| 78 |  | UAT Test | 10d | 2007-07-03 | 2007-07-16 | 77 | 5d |  |
| 79 | 1.3.7 | **Transition** | 25d | 2007-06-19 | 2007-07-23 |  | 0d |  |
| 80 | 1.3.6.1 | **Documentation** | 25d | 2007-06-19 | 2007-07-23 |  | 0d |  |
| 81 |  | New technical guide | 10d | 2007-06-19 | 2007-07-02 |  | 0d | start no earlier than 2007-06-19 |
| 82 |  | New users guide | 10d | 2007-07-03 | 2007-07-16 | 81 | 0d |  |
| 83 |  | How to example | 5d | 2007-07-17 | 2007-07-23 | 82 | 0d |  |
| 84 |  | 4.0 Release Complete | 0d | 2007-07-23 | 2007-07-23 | 80 | 0d |  |

## Version 2 (saved 2007-03-07)

Note of the change: updated per change in priority

Last finish 2007-07-23 → 2007-08-08 (+16d). Complete tasks 15 → 25.

Added:

| ID | Task | Duration | Start | Finish | Predecessors | Constraint | Resources |
| --- | --- | --- | --- | --- | --- | --- | --- |
| 41 | **Seemless Security Integration** | 10d | 2007-02-28 A | 2007-03-13 |  |  |  |
| 42 | Design | 2d | 2007-02-28 A | 2007-03-01 A | 40 |  | Kunal |
| 43 | **Development** | 6d | 2007-03-02 A | 2007-03-09 |  |  |  |
| 44 | **Integration of new Installation Process into SDK** | 3d | 2007-03-02 A | 2007-03-06 |  |  |  |
| 45 | Code | 3d | 2007-03-02 A | 2007-03-06 |  | start no earlier than 2007-03-02 | Kunal |
| 46 | **Upgrade to CSM to Support Grid ability to leverage new CSM installation steps** | 3d | 2007-03-07 | 2007-03-09 |  |  |  |
| 47 | Code | 3d | 2007-03-07 | 2007-03-09 | 38 | start no earlier than 2007-03-07 | Kunal |
| 48 | **Documentation** | 2d | 2007-03-12 | 2007-03-13 |  |  |  |
| 49 | SDK Programmer's/Technical Guide | 2d | 2007-03-12 | 2007-03-13 | 46 |  | Kunal/Satish |
| 57 | Update Requirements Document | 5d | 2007-03-22 | 2007-03-28 | 54 |  | Charles [10%] |
| 64 | 21CFR Part 11 Support | 5d | 2007-03-07 | 2007-03-13 | 63 |  | Vijay |
| 72 | Requirements Analysis | 5d | 2007-03-29 | 2007-04-04 | 57 |  | QA |

Removed: 26 QA Actvities; 27 Requirement Analysis; 28 Overall Test Plan Creation

Changed:

| ID | Task | Start | Finish | Duration | Complete | Total float | Predecessors | Other |
| --- | --- | --- | --- | --- | --- | --- | --- | --- |
| 1 | **CSM v4.0** |  | 2007-07-23 → 2007-08-08 (+16d) | 132d? → 144d? | 12% → 26% |  |  |  |
| 9 | **Eloboration** |  | 2007-07-23 → 2007-08-08 (+16d) | 132d? → 144d? | 10% → 25% |  |  |  |
| 27 | **Construction** |  | 2007-07-16 → 2007-08-08 (+23d) | 127d → 144d | 6% → 25% | 5d → 0d |  |  |
| 28 | **Iteration 1** |  | 2007-03-13 → 2007-03-21 (+8d) | 38d → 44d | 27% → 70% | 94d → 100d |  |  |
| 29 | CSM Application Developers Guide Update |  | 2007-01-22 A |  | 85% → 100% | 127d → none |  |  |
| 31 | CSM Bug Fixes (GF#3794) | 2007-02-02 A | 2007-02-14 A |  | 0% → 100% | 5d → none |  |  |
| 32 | **CSM caGRID Integration** | 2007-02-14 A | 2007-03-02 → 2007-03-13 (+11d) | 13d → 20d | 0% → 71% | 76d → 106d |  |  |
| 33 | **Client Session is singleton which is enforcing the CSM caGrid Integration project to use snychornization** | 2007-02-14 A | 2007-03-02 A |  | 0% → 100% | 101d → none |  |  |
| 34 | Design | 2007-02-14 A | 2007-02-19 A |  | 0% → 100% | 110d → none |  |  |
| 35 | Development | 2007-02-28 A | 2007-03-02 A |  | 0% → 100% | 101d → none |  |  |
| 36 | **Upgrade the CSM/caGRID integration to use new functionality of CSM 3.2** | 2007-02-14 A | 2007-02-27 A |  | 0% → 100% | 76d → none |  |  |
| 37 | Design | 2007-02-14 A | 2007-02-19 A |  | 0% → 100% | 76d → none |  |  |
| 38 | Design Review | 2007-02-20 A | 2007-02-20 A |  | 0% → 100% | 76d → none |  |  |
| 39 | Design update | 2007-02-20 A | 2007-02-20 A |  | 0% → 100% | 76d → none |  |  |
| 40 | Development | 2007-02-21 A | 2007-02-27 A |  | 0% → 100% | 76d → none |  |  |
| 50 | **QA** | 2007-03-06 → 2007-03-14 (+8d) | 2007-03-12 → 2007-03-20 (+8d) |  |  | 94d → 1.48d |  | resources none → Kunal |
| 51 | Test Execution (In Sync With SDK Testing) | 2007-03-06 → 2007-03-14 (+8d) | 2007-03-12 → 2007-03-20 (+8d) |  |  | 94d → 85d |  | constraint start no earlier than 2007-03-06 → start no earlier than 2007-03-14 |
| 52 | Test Support | 2007-03-06 → 2007-03-14 (+8d) | 2007-03-08 → 2007-03-16 (+8d) |  |  | 96d → 1.48d |  | constraint start no earlier than 2007-03-06 → start no earlier than 2007-03-14; resources Kunal → Kunal [20%] |
| 53 | **Iteration Plan** | 2007-03-13 → 2007-03-21 (+8d) | 2007-03-13 → 2007-03-21 (+8d) |  |  | 94d → 85d |  |  |
| 54 | Review Client Feature Request/Revise Task Plan | 2007-03-13 → 2007-03-21 (+8d) | 2007-03-13 → 2007-03-21 (+8d) |  |  | 94d → 85d |  |  |
| 55 | **Iteration 2** | 2007-02-15 A | 2007-04-11 → 2007-05-04 (+23d) | 40d → 57d | 0% → 17% | 5d → 68d |  |  |
| 56 | **Release 4.0 Beta 1** | 2007-02-15 A | 2007-04-11 → 2007-05-04 (+23d) | 40d → 57d | 0% → 17% | 5d → 68d |  |  |
| 58 | **Instance Level Security** | 2007-02-28 → 2007-03-19 (+19d) | 2007-04-03 → 2007-04-20 (+17d) |  |  | 76d → 1.48d |  |  |
| 59 | Design | 2007-02-28 → 2007-03-19 (+19d) | 2007-03-08 → 2007-03-27 (+19d) |  |  | 76d → 1.48d | 40 → 52 |  |
| 60 | Development | 2007-03-09 → 2007-03-28 (+19d) | 2007-04-03 → 2007-04-20 (+17d) |  |  | 76d → 1.48d |  |  |
| 61 | Assist BMS to Upgrade to CSM 3.2 to come on the same version to intiate co development | 2007-04-04 → 2007-04-23 (+19d) | 2007-04-06 → 2007-04-25 (+19d) |  |  | 76d → 75d |  |  |
| 62 | Query optimization and corrections to queries | 2007-02-15 A | 2007-02-22 A |  | 0% → 100% | 5d → none |  |  |
| 63 | Support Digital Certificates as credentials | 2007-02-23 A | 2007-03-02 → 2007-03-06 (+4d) | 6d → 8d | 0% → 95% | 5d → 88d |  |  |
| 65 | AuthenticationManager to correctly use the user provided lockout parameters | 2007-03-05 → 2007-03-14 (+9d) | 2007-03-05 → 2007-03-14 (+9d) |  |  | 5d → 88d | 63 → 64 |  |
| 66 | UPT Fixes | 2007-03-06 → 2007-03-15 A (+9d) | 2007-03-08 → 2007-03-19 (+11d) |  | 0% → 95% | 5d → 88d |  |  |
| 67 | Merge User Provisioning Manager & Authorization Manager Interfaces | 2007-03-09 → 2007-03-20 (+11d) | 2007-03-13 → 2007-03-22 (+9d) |  |  | 5d → 88d |  |  |
| 68 | Improve Installation for CSM and UPT especially | 2007-03-14 → 2007-03-23 (+9d) | 2007-03-16 → 2007-03-27 (+11d) |  |  | 5d → 88d |  |  |
| 69 | Support Postgres Database | 2007-03-19 → 2007-03-28 (+9d) | 2007-03-22 → 2007-04-02 (+11d) |  |  | 5d → 88d |  |  |
| 70 | Have a capability of Associating only the Roles to a User or Group | 2007-03-23 → 2007-04-03 (+11d) | 2007-03-28 → 2007-04-06 (+9d) |  |  | 5d → 88d |  |  |
| 71 | **QA** | 2007-03-09 → 2007-03-29 (+20d) | 2007-04-11 → 2007-05-04 (+23d) | 24d → 27d |  | 19d → 18.48d |  |  |
| 73 | Test Plan Development | 2007-03-09 → 2007-04-05 (+27d) | 2007-03-22 → 2007-04-18 (+27d) |  |  | 87d → 70d | 59 → 72 | was named Test Development |
| 74 | Test Execution | 2007-03-29 → 2007-04-23 (+25d) | 2007-04-11 → 2007-05-04 (+23d) |  |  | 73d → 68d | 70 → 58, 73 |  |
| 75 | Test Support | 2007-03-29 → 2007-04-23 (+25d) | 2007-04-04 → 2007-04-27 (+23d) |  |  | 5d → 1.48d | 70 → 58 | resources Vijay → Vijay; Kunal |
| 76 | Release Packaging | 2007-04-05 → 2007-04-30 A (+25d) | 2007-04-06 → 2007-05-01 (+25d) |  | 0% → 74% | 5d → 0d |  |  |
| 77 | Release 4.0 Beta 1 | 2007-04-06 → 2007-05-01 (+25d) | 2007-04-06 → 2007-05-01 (+25d) |  |  | 5d → 0d |  |  |
| 78 | **Iteration Plan** | 2007-04-09 → 2007-05-02 (+23d) | 2007-04-09 → 2007-05-02 (+23d) |  |  | 75d → 70d |  |  |
| 79 | Review Client Feature Request/Revise Task Plan | 2007-04-09 → 2007-05-02 (+23d) | 2007-04-09 → 2007-05-02 (+23d) |  |  | 75d → 70d |  |  |
| 80 | **Iteration 3** | 2007-04-09 → 2007-05-02 (+23d) | 2007-05-14 → 2007-06-06 (+23d) |  |  | 5d → 0d |  |  |
| 81 | Release 4.0 Beta 2 | 2007-04-09 → 2007-05-02 (+23d) | 2007-05-11 → 2007-06-05 (+25d) |  |  | 5d → 0d |  |  |
| 82 | **Iteration Plan** | 2007-05-14 → 2007-06-06 (+23d) | 2007-05-14 → 2007-06-06 (+23d) |  |  | 5d → 0d |  |  |
| 83 | Review Client Feature Request/Revise Task Plan | 2007-05-14 → 2007-06-06 (+23d) | 2007-05-14 → 2007-06-06 (+23d) |  |  | 5d → 0d |  |  |
| 84 | **Iteration 4** | 2007-05-15 → 2007-06-07 (+23d) | 2007-06-18 → 2007-07-11 (+23d) |  |  | 5d → 0d |  |  |
| 85 | Release 4.0 Beta 2 | 2007-05-15 → 2007-06-07 (+23d) | 2007-06-18 → 2007-07-11 (+23d) |  |  | 5d → 0d |  |  |
| 86 | Integration Test | 2007-06-19 → 2007-07-12 (+23d) | 2007-07-02 → 2007-07-25 (+23d) |  |  | 5d → 0d |  |  |
| 87 | UAT Test | 2007-07-03 → 2007-07-26 (+23d) | 2007-07-16 → 2007-08-08 (+23d) |  |  | 5d → 0d |  |  |

## Version 3 (saved 2007-03-13)

Note of the change: changed the dates on the update requirements task for iteration 2

Last finish stays 2007-08-08. Complete tasks 25 → 26.

Removed: 70 Have a capability of Associating only the Roles to a User or Group

Changed:

| ID | Task | Start | Finish | Duration | Complete | Total float |
| --- | --- | --- | --- | --- | --- | --- |
| 1 | **CSM v4.0** |  |  |  | 26% → 29% |  |
| 9 | **Eloboration** |  |  |  | 25% → 29% |  |
| 27 | **Construction** |  |  |  | 25% → 29% |  |
| 55 | **Iteration 2** |  |  |  | 17% → 27% |  |
| 56 | **Release 4.0 Beta 1** |  |  |  | 17% → 27% |  |
| 57 | Update Requirements Document | 2007-03-22 → 2007-03-07 A (-15d) | 2007-03-28 → 2007-03-13 A (-15d) |  | 0% → 100% | 85d → none |
| 58 | **Instance Level Security** | 2007-03-19 A |  |  | 0% → 14% |  |
| 59 | Design | 2007-03-19 A |  |  | 0% → 50% |  |
| 70 | **QA** | 2007-03-29 → 2007-03-14 (-15d) |  | 27d → 38d |  | 18.48d → 29.48d |
| 71 | Requirements Analysis | 2007-03-29 → 2007-03-14 (-15d) | 2007-04-04 → 2007-03-20 (-15d) |  |  | 70d → 81d |
| 72 | Test Plan Development | 2007-04-05 → 2007-03-21 (-15d) | 2007-04-18 → 2007-04-03 (-15d) |  |  | 70d → 81d |

## Version 4 (saved 2007-03-19)

Note of the change: updated per weekly status meeting

Last finish 2007-08-08 → 2007-08-10 (+2d). Complete tasks 26 → 30.

Added:

| ID | Task | Duration | Start | Finish | Predecessors |
| --- | --- | --- | --- | --- | --- |
| 68 | Design Update | 0.5d | 2007-03-20 | 2007-03-20 |  |
| 69 | Code | 2.5d | 2007-03-20 | 2007-03-22 | 68 |

Changed:

| ID | Task | Start | Finish | Duration | Complete | Total float | Predecessors | Other |
| --- | --- | --- | --- | --- | --- | --- | --- | --- |
| 1 | **CSM v4.0** |  | 2007-08-08 → 2007-08-10 (+2d) | 144d? → 145.52d? | 29% → 32% |  |  |  |
| 9 | **Eloboration** |  | 2007-08-08 → 2007-08-10 (+2d) | 144d? → 145.52d? | 29% → 32% |  |  |  |
| 18 | **Scope Document** |  | 2007-02-09 A |  | 90% → 100% | 128d → none |  |  |
| 19 | Prepare list of scope items on gforge |  | 2007-01-26 A |  | 50% → 100% | 123d → none |  |  |
| 22 | Prepare risk list |  | 2007-02-02 A |  | 50% → 100% | 118d → none |  |  |
| 25 | Finalize Scope | 2007-02-09 A | 2007-02-09 A |  | 0% → 100% | 111d → none |  |  |
| 26 | Revise task plan | 2007-01-23 A | 2007-01-23 A |  | 0% → 100% | 138d → none |  |  |
| 27 | **Construction** |  | 2007-08-08 → 2007-08-10 (+2d) | 144d → 145.52d | 29% → 32% |  |  |  |
| 28 | **Iteration 1** |  |  |  | 70% → 75% | 100d → 101.52d |  |  |
| 32 | **CSM caGRID Integration** |  |  |  | 71% → 81% | 106d → 107.52d |  |  |
| 41 | **Seemless Security Integration** |  |  |  | 23% → 50% | 106d → 107.52d |  |  |
| 43 | **Development** |  |  |  | 5% → 50% | 108d → 109.52d |  |  |
| 46 | **Upgrade to CSM to Support Grid ability to leverage new CSM installation steps** | 2007-03-07 A |  |  | 0% → 90% | 106d → 107.52d |  |  |
| 47 | Code | 2007-03-07 A |  |  | 0% → 90% | 106d → 107.52d |  |  |
| 55 | **Iteration 2** |  | 2007-05-04 → 2007-05-09 (+5d) | 57d → 60d | 27% → 31% | 68d → 66.52d |  |  |
| 56 | **Release 4.0 Beta 1** |  | 2007-05-04 → 2007-05-09 (+5d) | 57d → 60d | 27% → 31% | 68d → 66.52d |  |  |
| 58 | **Instance Level Security** |  | 2007-04-20 → 2007-04-25 (+5d) | 25d → 28d | 14% → 15% | 1.48d → 0d |  |  |
| 59 | Design |  | 2007-03-27 → 2007-03-30 (+3d) | 7d → 10d | 50% → 42% | 1.48d → 0d |  | constraint none → finish no earlier than 2007-03-30 |
| 60 | Development | 2007-03-28 → 2007-04-02 (+5d) | 2007-04-20 → 2007-04-25 (+5d) |  |  | 1.48d → 0d |  |  |
| 61 | Assist BMS to Upgrade to CSM 3.2 to come on the same version to intiate co development | 2007-04-23 → 2007-04-26 (+3d) | 2007-04-25 → 2007-04-30 (+5d) |  |  | 75d → 73.52d |  |  |
| 64 | 21CFR Part 11 Support | 2007-03-07 A |  |  | 0% → 75% | 88d → 97.32d |  |  |
| 65 | AuthenticationManager to correctly use the user provided lockout parameters | 2007-03-14 A |  |  | 0% → 95% | 88d → 96.37d |  |  |
| 70 | ANT Driven Installation for CSM and UPT |  |  |  |  | 88d → 93.52d | 67 → 69 | was named Improve Installation for CSM and UPT especially |
| 72 | **QA** |  | 2007-05-04 → 2007-05-09 (+5d) | 38d → 41d |  | 29.48d → 31d |  |  |
| 75 | Test Execution | 2007-04-23 → 2007-04-26 (+3d) | 2007-05-04 → 2007-05-09 (+5d) |  |  | 68d → 66.52d |  |  |
| 76 | Test Support | 2007-04-23 → 2007-04-26 (+3d) | 2007-04-27 → 2007-05-02 (+5d) |  |  | 1.48d → 0d |  |  |
| 77 | Release Packaging |  | 2007-05-01 → 2007-05-03 (+2d) |  |  |  |  |  |
| 78 | Release 4.0 Beta 1 | 2007-05-01 → 2007-05-03 (+2d) | 2007-05-01 → 2007-05-03 (+2d) |  |  |  |  |  |
| 79 | **Iteration Plan** | 2007-05-02 → 2007-05-03 (+1d) | 2007-05-02 → 2007-05-04 (+2d) |  |  |  |  |  |
| 80 | Review Client Feature Request/Revise Task Plan | 2007-05-02 → 2007-05-03 (+1d) | 2007-05-02 → 2007-05-04 (+2d) |  |  |  |  |  |
| 81 | **Iteration 3** | 2007-05-02 → 2007-05-03 (+1d) | 2007-06-06 → 2007-06-08 (+2d) |  |  |  |  |  |
| 82 | Release 4.0 Beta 2 | 2007-05-02 → 2007-05-03 (+1d) | 2007-06-05 → 2007-06-07 (+2d) |  |  |  |  |  |
| 83 | **Iteration Plan** | 2007-06-06 → 2007-06-07 (+1d) | 2007-06-06 → 2007-06-08 (+2d) |  |  |  |  |  |
| 84 | Review Client Feature Request/Revise Task Plan | 2007-06-06 → 2007-06-07 (+1d) | 2007-06-06 → 2007-06-08 (+2d) |  |  |  |  |  |
| 85 | **Iteration 4** | 2007-06-07 → 2007-06-08 (+1d) | 2007-07-11 → 2007-07-13 (+2d) |  |  |  |  |  |
| 86 | Release 4.0 Beta 2 | 2007-06-07 → 2007-06-08 (+1d) | 2007-07-11 → 2007-07-13 (+2d) |  |  |  |  |  |
| 87 | Integration Test | 2007-07-12 → 2007-07-13 (+1d) | 2007-07-25 → 2007-07-27 (+2d) |  |  |  |  |  |
| 88 | UAT Test | 2007-07-26 → 2007-07-27 (+1d) | 2007-08-08 → 2007-08-10 (+2d) |  |  |  |  |  |

## Version 5 (saved 2007-04-02)

Note of the change: updated per weekly status meeting

Last finish 2007-08-10 → 2007-08-16 (+6d). Complete tasks 30 → 39.

Added:

| ID | Task | Duration | Start | Finish | Predecessors | Constraint | Resources |
| --- | --- | --- | --- | --- | --- | --- | --- |
| 53 | Test Support | 2d | 2007-03-23 A | 2007-03-26 A |  | start no earlier than 2007-03-23 | Vijay |
| 73 | Merge 3.2.1 Code into 4.0 Head | 2d | 2007-04-05 | 2007-04-06 | 72 |  | Vijay |

Changed:

| ID | Task | Start | Finish | Duration | Complete | Total float | Predecessors | Other |
| --- | --- | --- | --- | --- | --- | --- | --- | --- |
| 1 | **CSM v4.0** |  | 2007-08-10 → 2007-08-16 (+6d) | 145.52d? → 150d? | 32% → 38% |  |  |  |
| 9 | **Eloboration** |  | 2007-08-10 → 2007-08-16 (+6d) | 145.52d? → 150d? | 32% → 39% |  |  |  |
| 27 | **Construction** |  | 2007-08-10 → 2007-08-16 (+6d) | 145.52d → 150d | 32% → 40% |  |  |  |
| 28 | **Iteration 1** |  | 2007-03-21 → 2007-03-27 (+6d) | 44d → 48d | 75% → 98% | 101.52d → 102d |  |  |
| 32 | **CSM caGRID Integration** |  | 2007-03-13 A |  | 81% → 100% | 107.52d → none |  |  |
| 41 | **Seemless Security Integration** |  | 2007-03-13 A |  | 50% → 100% | 107.52d → none |  |  |
| 43 | **Development** |  | 2007-03-09 A |  | 50% → 100% | 109.52d → none |  |  |
| 44 | **Integration of new Installation Process into SDK** |  | 2007-03-06 A |  | 10% → 100% | 112.52d → none |  |  |
| 45 | Code |  | 2007-03-06 A |  | 10% → 100% | 112.52d → none |  |  |
| 46 | **Upgrade to CSM to Support Grid ability to leverage new CSM installation steps** |  | 2007-03-09 A |  | 90% → 100% | 107.52d → none |  |  |
| 47 | Code |  | 2007-03-09 A |  | 90% → 100% | 107.52d → none |  |  |
| 48 | **Documentation** | 2007-03-12 A | 2007-03-13 A |  | 0% → 100% | 107.52d → none |  |  |
| 49 | SDK Programmer's/Technical Guide | 2007-03-12 A | 2007-03-13 A |  | 0% → 100% | 106d → none |  |  |
| 50 | **QA** | 2007-03-14 A | 2007-03-20 → 2007-03-26 A (+6d) | 5d → 9d | 0% → 100% | 1.48d → none |  |  |
| 51 | Test Execution (In Sync With SDK Testing) | 2007-03-14 A | 2007-03-20 A |  | 0% → 100% | 85d → none |  |  |
| 52 | Test Support | 2007-03-14 A | 2007-03-16 A |  | 0% → 100% | 1.48d → none |  |  |
| 54 | **Iteration Plan** | 2007-03-21 → 2007-03-27 (+6d) | 2007-03-21 → 2007-03-27 (+6d) |  |  | 70d → 102d |  |  |
| 55 | Review Client Feature Request/Revise Task Plan | 2007-03-21 → 2007-03-27 (+6d) | 2007-03-21 → 2007-03-27 (+6d) |  |  | 85d → 102d |  |  |
| 56 | **Iteration 2** |  | 2007-05-09 → 2007-05-10 (+1d) | 60d → 61d | 31% → 35% | 66.52d → 70d |  |  |
| 57 | **Release 4.0 Beta 1** |  | 2007-05-09 → 2007-05-10 (+1d) | 60d → 61d | 31% → 35% | 66.52d → 70d |  |  |
| 65 | 21CFR Part 11 Support |  | 2007-03-13 A |  | 75% → 100% | 97.32d → none |  |  |
| 68 | **Merge User Provisioning Manager & Authorization Manager Interfaces** | 2007-03-20 A | 2007-03-22 A |  | 0% → 100% | 93.52d → none |  | resources Vijay → none |
| 69 | Design Update | 2007-03-20 A | 2007-03-20 A |  | 0% → 100% | 93.52d → none |  | resources none → Vijay |
| 70 | Code | 2007-03-20 A | 2007-03-22 A |  | 0% → 100% | 93.52d → none |  | resources none → Vijay |
| 71 | ANT Driven Installation for CSM and UPT | 2007-03-23 → 2007-03-27 (+4d) | 2007-03-27 → 2007-03-29 (+2d) |  |  | 93.52d → 13d | 70 → 53 |  |
| 72 | Support Postgres Database | 2007-03-28 → 2007-03-30 (+2d) | 2007-04-02 → 2007-04-04 (+2d) |  |  | 93.52d → 13d |  |  |
| 76 | Test Plan Development | 2007-03-21 → 2007-04-02 (+12d) | 2007-04-03 → 2007-04-13 (+10d) |  |  | 82.52d → 18d | 75 → 75, 60 |  |
| 77 | Test Execution |  |  |  |  | 66.52d → 0d | 59, 76 → 73, 59 |  |
| 78 | Test Support | 2007-04-26 → 2007-04-09 (-17d) | 2007-05-02 → 2007-04-13 (-19d) |  |  | 0d → 17.48d | 59 → 73 |  |
| 79 | Release Packaging | 2007-04-30 A → 2007-04-16 A (-14d) | 2007-05-03 → 2007-04-17 (-16d) |  |  | 0d → 16d |  |  |
| 80 | Release 4.0 Beta 1 | 2007-05-03 → 2007-05-09 (+6d) | 2007-05-03 → 2007-05-09 (+6d) |  |  |  | 79 → 79, 74 |  |
| 81 | **Iteration Plan** | 2007-05-03 → 2007-05-10 (+7d) | 2007-05-04 → 2007-05-10 (+6d) |  |  |  |  |  |
| 82 | Review Client Feature Request/Revise Task Plan | 2007-05-03 → 2007-05-10 (+7d) | 2007-05-04 → 2007-05-10 (+6d) |  |  |  |  |  |
| 83 | **Iteration 3** | 2007-05-03 → 2007-05-10 (+7d) | 2007-06-08 → 2007-06-14 (+6d) |  |  |  |  |  |
| 84 | Release 4.0 Beta 2 | 2007-05-03 → 2007-05-10 (+7d) | 2007-06-07 → 2007-06-13 (+6d) |  |  |  |  |  |
| 85 | **Iteration Plan** | 2007-06-07 → 2007-06-14 (+7d) | 2007-06-08 → 2007-06-14 (+6d) |  |  |  |  |  |
| 86 | Review Client Feature Request/Revise Task Plan | 2007-06-07 → 2007-06-14 (+7d) | 2007-06-08 → 2007-06-14 (+6d) |  |  |  |  |  |
| 87 | **Iteration 4** | 2007-06-08 → 2007-06-15 (+7d) | 2007-07-13 → 2007-07-19 (+6d) |  |  |  |  |  |
| 88 | Release 4.0 Beta 2 | 2007-06-08 → 2007-06-15 (+7d) | 2007-07-13 → 2007-07-19 (+6d) |  |  |  |  |  |
| 89 | Integration Test | 2007-07-13 → 2007-07-20 (+7d) | 2007-07-27 → 2007-08-02 (+6d) |  |  |  |  |  |
| 90 | UAT Test | 2007-07-27 → 2007-08-03 (+7d) | 2007-08-10 → 2007-08-16 (+6d) |  |  |  |  |  |

## Version 6 (saved 2007-04-09)

Note of the change: Updated per weekly status meeting

Last finish 2007-08-16 → 2007-08-13 (-3d). Complete tasks 39 → 41.

Added:

| ID | Task | Duration | Start | Finish | Predecessors |
| --- | --- | --- | --- | --- | --- |
| 78 | Test Execution (Instance Level Security) | 7d | 2007-04-26 | 2007-05-04 | 59 |

Changed:

| ID | Task | Start | Finish | Duration | Complete | Total float | Predecessors | Other |
| --- | --- | --- | --- | --- | --- | --- | --- | --- |
| 1 | **CSM v4.0** |  | 2007-08-16 → 2007-08-13 (-3d) | 150d? → 147d? | 38% → 37% |  |  |  |
| 9 | **Eloboration** |  | 2007-08-16 → 2007-08-13 (-3d) | 150d? → 147d? |  |  |  |  |
| 27 | **Construction** |  | 2007-08-16 → 2007-08-13 (-3d) | 150d → 147d | 40% → 39% |  |  |  |
| 56 | **Iteration 2** |  | 2007-05-10 → 2007-05-07 (-3d) | 61d → 58d | 35% → 34% |  |  |  |
| 57 | **Release 4.0 Beta 1** |  | 2007-05-10 → 2007-05-07 (-3d) | 61d → 58d | 35% → 34% |  |  |  |
| 66 | AuthenticationManager to correctly use the user provided lockout parameters |  | 2007-03-14 A |  | 95% → 100% | 110.85d → none |  |  |
| 67 | UPT Fixes |  | 2007-03-19 A |  | 95% → 100% | 108d → none |  |  |
| 71 | Uprade Tech Stack |  |  |  |  | 13d → 14.48d |  | was named ANT Driven Installation for CSM and UPT |
| 74 | **QA** |  | 2007-05-09 → 2007-05-04 (-5d) | 41d → 38d |  |  |  |  |
| 77 | Test Execution | 2007-04-26 → 2007-04-09 (-17d) | 2007-05-09 → 2007-04-13 (-26d) | 10d → 5d |  | 0d → 15d | 73, 59 → 73 |  |
| 81 | Release 4.0 Beta 1 | 2007-05-09 → 2007-05-04 (-5d) | 2007-05-09 → 2007-05-04 (-5d) |  |  |  |  |  |
| 82 | **Iteration Plan** | 2007-05-10 → 2007-05-07 (-3d) | 2007-05-10 → 2007-05-07 (-3d) |  |  |  |  |  |
| 83 | Review Client Feature Request/Revise Task Plan | 2007-05-10 → 2007-05-07 (-3d) | 2007-05-10 → 2007-05-07 (-3d) |  |  |  |  |  |
| 84 | **Iteration 3** | 2007-05-10 → 2007-05-07 (-3d) | 2007-06-14 → 2007-06-11 (-3d) |  |  |  |  |  |
| 85 | Release 4.0 Beta 2 | 2007-05-10 → 2007-05-07 (-3d) | 2007-06-13 → 2007-06-08 (-5d) |  |  |  |  |  |
| 86 | **Iteration Plan** | 2007-06-14 → 2007-06-11 (-3d) | 2007-06-14 → 2007-06-11 (-3d) |  |  |  |  |  |
| 87 | Review Client Feature Request/Revise Task Plan | 2007-06-14 → 2007-06-11 (-3d) | 2007-06-14 → 2007-06-11 (-3d) |  |  |  |  |  |
| 88 | **Iteration 4** | 2007-06-15 → 2007-06-12 (-3d) | 2007-07-19 → 2007-07-16 (-3d) |  |  |  |  |  |
| 89 | Release 4.0 Beta 2 | 2007-06-15 → 2007-06-12 (-3d) | 2007-07-19 → 2007-07-16 (-3d) |  |  |  |  |  |
| 90 | Integration Test | 2007-07-20 → 2007-07-17 (-3d) | 2007-08-02 → 2007-07-30 (-3d) |  |  |  |  |  |
| 91 | UAT Test | 2007-08-03 → 2007-07-31 (-3d) | 2007-08-16 → 2007-08-13 (-3d) |  |  |  |  |  |

## Version 7 (saved 2007-04-16)

Note of the change: updated per status meeting

Last finish 2007-08-13 → 2007-08-15 (+2d). Complete tasks 41 → 46.

Added:

| ID | Task | Duration | Start | Finish | Predecessors | Resources |
| --- | --- | --- | --- | --- | --- | --- |
| 78 | Test Plan Development | 5d | 2007-04-23 | 2007-04-27 | 77 | QA |

Changed:

| ID | Task | Start | Finish | Duration | Complete | Total float | Predecessors | Other |
| --- | --- | --- | --- | --- | --- | --- | --- | --- |
| 1 | **CSM v4.0** |  | 2007-08-13 → 2007-08-15 (+2d) | 147d? → 149d? | 37% → 44% | 0d → 1d |  |  |
| 9 | **Eloboration** |  | 2007-08-13 → 2007-08-15 (+2d) | 147d? → 149d? | 39% → 47% | 0d → 1d |  |  |
| 27 | **Construction** |  | 2007-08-13 → 2007-08-15 (+2d) | 147d → 149d | 39% → 49% | 0d → 1d |  |  |
| 56 | **Iteration 2** |  | 2007-05-07 → 2007-05-09 (+2d) | 58d → 60d | 34% → 54% | 70d → 71d |  |  |
| 57 | **Release 4.0 Beta 1** |  | 2007-05-07 → 2007-05-09 (+2d) | 58d → 60d | 34% → 54% | 70d → 71d |  |  |
| 71 | Uprade Tech Stack | 2007-03-27 A | 2007-03-29 A |  | 0% → 100% | 14.48d → none |  |  |
| 72 | Support Postgres Database | 2007-03-30 A | 2007-04-04 A |  | 0% → 100% | 13d → none |  |  |
| 73 | Merge 3.2.1 Code into 4.0 Head | 2007-04-05 A | 2007-04-06 A |  | 0% → 100% | 13d → none |  |  |
| 74 | **QA** | 2007-03-14 A | 2007-05-04 → 2007-05-08 (+4d) | 38d → 40d | 0% → 41% |  |  |  |
| 75 | Requirements Analysis | 2007-03-14 A | 2007-03-20 A |  | 0% → 100% | 26d → none |  |  |
| 76 | Test Plan Development | 2007-04-02 A | 2007-04-13 A |  | 0% → 100% | 18d → none |  |  |
| 77 | Test Execution | 2007-04-09 → 2007-04-16 (+7d) | 2007-04-13 → 2007-04-20 (+7d) |  |  | 15d → 0d | 73 → 76 |  |
| 79 | Test Execution (Instance Level Security) | 2007-04-26 → 2007-04-30 (+4d) | 2007-05-04 → 2007-05-08 (+4d) |  |  |  | 59 → 78 | resources none → QA |
| 82 | Release 4.0 Beta 1 | 2007-05-04 → 2007-05-08 (+4d) | 2007-05-04 → 2007-05-08 (+4d) |  |  |  |  |  |
| 83 | **Iteration Plan** | 2007-05-07 → 2007-05-09 (+2d) | 2007-05-07 → 2007-05-09 (+2d) |  |  |  |  |  |
| 84 | Review Client Feature Request/Revise Task Plan | 2007-05-07 → 2007-05-09 (+2d) | 2007-05-07 → 2007-05-09 (+2d) |  |  |  |  |  |
| 85 | **Iteration 3** | 2007-05-07 → 2007-05-09 (+2d) | 2007-06-11 → 2007-06-13 (+2d) |  |  |  |  |  |
| 86 | Release 4.0 Beta 2 | 2007-05-07 → 2007-05-09 (+2d) | 2007-06-08 → 2007-06-12 (+4d) |  |  |  |  |  |
| 87 | **Iteration Plan** | 2007-06-11 → 2007-06-13 (+2d) | 2007-06-11 → 2007-06-13 (+2d) |  |  |  |  |  |
| 88 | Review Client Feature Request/Revise Task Plan | 2007-06-11 → 2007-06-13 (+2d) | 2007-06-11 → 2007-06-13 (+2d) |  |  |  |  |  |
| 89 | **Iteration 4** | 2007-06-12 → 2007-06-14 (+2d) | 2007-07-16 → 2007-07-18 (+2d) |  |  |  |  |  |
| 90 | Release 4.0 Beta 2 | 2007-06-12 → 2007-06-14 (+2d) | 2007-07-16 → 2007-07-18 (+2d) |  |  |  |  |  |
| 91 | Integration Test | 2007-07-17 → 2007-07-19 (+2d) | 2007-07-30 → 2007-08-01 (+2d) |  |  |  |  |  |
| 92 | UAT Test | 2007-07-31 → 2007-08-02 (+2d) | 2007-08-13 → 2007-08-15 (+2d) |  |  |  |  |  |

## Version 8 (saved 2007-05-15)

Note of the change: Baseline

Last finish 2007-08-15 → 2007-07-23 (-23d). Complete tasks 46 → 60.

Added:

| ID | Task | Duration | Start | Finish | Predecessors | Constraint | Resources |
| --- | --- | --- | --- | --- | --- | --- | --- |
| 81 | **BioPharm 21 CFR Part 11 Validation** | 15.5d | 2007-05-04 A | 2007-05-25 |  |  |  |
| 82 | Receipt of Updated Documents by NCI/Ekagra | 0d | 2007-05-04 A | 2007-05-04 A |  | start no earlier than 2007-05-04 |  |
| 83 | Address document comments | 5d | 2007-05-04 A | 2007-05-11 A | 82, 91 |  | Kunal |
| 84 | Address issues documented in the Summary of Findings | 5d | 2007-05-11 | 2007-05-18 | 83 |  | Kunal |
| 85 | Address observations documented in the Gap Analysis | 5d | 2007-05-18 | 2007-05-25 | 84 |  | Kunal |
| 86 | **Instance Level Security Prototype** | 28d | 2007-03-19 A | 2007-04-25 A |  |  |  |
| 89 | Protoyp/Design Approved | 0.5d | 2007-04-26 A | 2007-04-26 A | 86 |  | Kunal; Avinash; Charles |
| 91 | Load Testing | 6d | 2007-04-26 A | 2007-05-04 A | 89 |  | Kunal |
| 92 | **CSM/ UPT Changes** | 4d | 2007-05-25 | 2007-05-31 | 81 |  |  |
| 93 | Modification to API for new value field to Protection Element | 3d | 2007-05-25 | 2007-05-30 |  |  | Kunal |
| 94 | Changes to UPT Screen to Accept new value field | 1d | 2007-05-30 | 2007-05-31 | 93 |  | Kunal |
| 95 | **Provisioning Changes** | 10d | 2007-05-31 | 2007-06-14 | 92 |  |  |
| 96 | Details Database Design for Storing Security Info | 2d | 2007-05-31 | 2007-06-04 |  |  | Kunal |
| 97 | Adding a Interactive Screen to Map Security from Hibernate Information | 8d | 2007-06-04 | 2007-06-14 | 96 |  | Kunal |
| 98 | **SDK Changes** | 13d | 2007-06-14 | 2007-07-03 | 95 |  |  |
| 99 | Changes to add Filter info during HBM Generation | 5d | 2007-06-14 | 2007-06-21 |  |  | Kunal |
| 100 | Changes for Enabling Filter on Session | 5d | 2007-06-21 | 2007-06-28 | 99 |  | Kunal |
| 101 | Testing overall Changes | 3d | 2007-06-28 | 2007-07-03 | 100 |  | Kunal |
| 104 | Test Support | 10d | 2007-07-03 | 2007-07-17 | 90 |  | Kunal [50%] |
| 105 | Documentation | 10d | 2007-07-03 | 2007-07-17 | 90 |  | Kunal [50%] |
| 107 | **ACEGI Integration** | 43d | 2007-04-30 A | 2007-06-27 |  |  |  |
| 109 | Development | 8d | 2007-06-18 | 2007-06-27 |  | start no earlier than 2007-06-18 | Vijay |

Removed: 81 Release Packaging; 82 Release 4.0 Beta 1; 86 Release 4.0 Beta 2; 91 Integration Test; 92 UAT Test

Changed:

| ID | Task | Start | Finish | Duration | Complete | Total float | Predecessors | Other |
| --- | --- | --- | --- | --- | --- | --- | --- | --- |
| 1 | **CSM v4.0** |  | 2007-08-15 → 2007-07-23 (-23d) | 149d? → 132d? | 44% → 61% | 1d → 0d |  | baseline start none → 2007-01-16; baseline finish none → 2007-07-23 |
| 2 | **Inception** |  |  |  |  |  |  | baseline start none → 2007-01-19; baseline finish none → 2007-01-23 |
| 3 | 4.0 Kickoff meeting |  |  |  |  |  |  | baseline start none → 2007-01-19; baseline finish none → 2007-01-19 |
| 4 | Create initial task plan |  |  |  |  |  |  | baseline start none → 2007-01-23; baseline finish none → 2007-01-23 |
| 5 | **Support** |  |  |  |  | 117d → 100d |  | baseline start none → 2007-01-23; baseline finish none → 2007-03-05 |
| 6 | Application Support |  |  |  |  |  |  | baseline start none → 2007-01-23; baseline finish none → 2007-03-05 |
| 7 | Support for caBIG Activities |  |  |  |  |  |  | baseline start none → 2007-01-23; baseline finish none → 2007-02-02 |
| 8 | Attend caBIG Conference |  |  |  |  |  |  | baseline start none → 2007-02-05; baseline finish none → 2007-02-07 |
| 9 | **Eloboration** |  | 2007-08-15 → 2007-07-23 (-23d) | 149d? → 132d? | 47% → 65% | 1d → 0d |  | baseline start none → 2007-01-16; baseline finish none → 2007-07-23 |
| 10 | **Requiements Gathering** |  |  |  |  | 139.75d → 122.75d |  | baseline start none → 2007-01-19; baseline finish none → 2007-01-29 |
| 11 | caCORE User's Meeting + Preperation |  |  |  |  |  |  | baseline start none → 2007-01-19; baseline finish none → 2007-01-22 |
| 12 | Requirements Meeting (BRN/caArray) |  |  |  |  |  |  | baseline start none → 2007-01-24; baseline finish none → 2007-01-24 |
| 13 | Requirements meeting (iSPY, Rembrandt, CGEMS) |  |  |  |  |  |  | baseline start none → 2007-01-25; baseline finish none → 2007-01-25 |
| 14 | Requirements meeting (caCORE, SDK) |  |  |  |  |  |  | baseline start none → 2007-01-25; baseline finish none → 2007-01-25 |
| 15 | Requirements meeting (SPORES, caMOD) |  |  |  |  |  |  | baseline start none → 2007-01-26; baseline finish none → 2007-01-26 |
| 16 | Requirements meeting (BMS) |  |  |  |  |  |  | baseline start none → 2007-01-26; baseline finish none → 2007-01-26 |
| 17 | Requirements meeting (caGRID) |  |  |  |  |  |  | baseline start none → 2007-01-29; baseline finish none → 2007-01-29 |
| 18 | **Scope Document** |  |  |  |  |  |  | baseline start none → 2007-01-26; baseline finish none → 2007-02-09 |
| 19 | Prepare list of scope items on gforge |  |  |  |  |  |  | baseline start none → 2007-01-26; baseline finish none → 2007-01-26 |
| 20 | Draft scope document |  |  |  |  |  |  | baseline start none → 2007-01-29; baseline finish none → 2007-01-31 |
| 21 | Estimate LOE for Itertion 1 & 2 scope items |  |  |  |  |  |  | baseline start none → 2007-02-01; baseline finish none → 2007-02-01 |
| 22 | Prepare risk list |  |  |  |  |  |  | baseline start none → 2007-02-02; baseline finish none → 2007-02-02 |
| 23 | NCICB Review of scope document |  |  |  |  |  |  | baseline start none → 2007-02-01; baseline finish none → 2007-02-05 |
| 24 | Revise scope document |  |  |  |  |  |  | baseline start none → 2007-02-08; baseline finish none → 2007-02-09 |
| 25 | Finalize Scope |  |  |  |  |  |  | baseline start none → 2007-02-09; baseline finish none → 2007-02-09 |
| 26 | Revise task plan |  |  |  |  |  |  | baseline start none → 2007-01-23; baseline finish none → 2007-01-23 |
| 27 | **Construction** |  | 2007-08-15 → 2007-07-17 (-29d) | 149d → 127.5d | 49% → 70% | 1d → 4.5d |  | baseline start none → 2007-01-16; baseline finish none → 2007-07-17 |
| 28 | **Iteration 1** |  | 2007-03-27 A |  | 98% → 100% | 101d → none |  | baseline start none → 2007-01-16; baseline finish none → 2007-03-27 |
| 29 | CSM Application Developers Guide Update |  |  |  |  |  |  | baseline start none → 2007-01-16; baseline finish none → 2007-01-22 |
| 30 | Regression Junit Development |  |  |  |  |  |  | baseline start none → 2007-01-23; baseline finish none → 2007-02-01 |
| 31 | CSM Bug Fixes (GF#3794) |  |  |  |  |  |  | baseline start none → 2007-02-02; baseline finish none → 2007-02-14 |
| 32 | **CSM caGRID Integration** |  |  |  |  |  |  | baseline start none → 2007-02-14; baseline finish none → 2007-03-13 |
| 33 | **Client Session is singleton which is enforcing the CSM caGrid Integration project to use snychornization** |  |  |  |  |  |  | baseline start none → 2007-02-14; baseline finish none → 2007-03-02 |
| 34 | Design |  |  |  |  |  |  | baseline start none → 2007-02-14; baseline finish none → 2007-02-19 |
| 35 | Development |  |  |  |  |  |  | baseline start none → 2007-02-28; baseline finish none → 2007-03-02 |
| 36 | **Upgrade the CSM/caGRID integration to use new functionality of CSM 3.2** |  |  |  |  |  |  | baseline start none → 2007-02-14; baseline finish none → 2007-02-27 |
| 37 | Design |  |  |  |  |  |  | baseline start none → 2007-02-14; baseline finish none → 2007-02-19 |
| 38 | Design Review |  |  |  |  |  |  | baseline start none → 2007-02-20; baseline finish none → 2007-02-20 |
| 39 | Design update |  |  |  |  |  |  | baseline start none → 2007-02-20; baseline finish none → 2007-02-20 |
| 40 | Development |  |  |  |  |  |  | baseline start none → 2007-02-21; baseline finish none → 2007-02-27 |
| 41 | **Seemless Security Integration** |  |  |  |  |  |  | baseline start none → 2007-02-28; baseline finish none → 2007-03-13 |
| 42 | Design |  |  |  |  |  |  | baseline start none → 2007-02-28; baseline finish none → 2007-03-01 |
| 43 | **Development** |  |  |  |  |  |  | baseline start none → 2007-03-02; baseline finish none → 2007-03-09 |
| 44 | **Integration of new Installation Process into SDK** |  |  |  |  |  |  | baseline start none → 2007-03-02; baseline finish none → 2007-03-06 |
| 45 | Code |  |  |  |  |  |  | baseline start none → 2007-03-02; baseline finish none → 2007-03-06 |
| 46 | **Upgrade to CSM to Support Grid ability to leverage new CSM installation steps** |  |  |  |  |  |  | baseline start none → 2007-03-07; baseline finish none → 2007-03-09 |
| 47 | Code |  |  |  |  |  |  | baseline start none → 2007-03-07; baseline finish none → 2007-03-09 |
| 48 | **Documentation** |  |  |  |  |  |  | baseline start none → 2007-03-12; baseline finish none → 2007-03-13 |
| 49 | SDK Programmer's/Technical Guide |  |  |  |  |  |  | baseline start none → 2007-03-12; baseline finish none → 2007-03-13 |
| 50 | **QA** |  |  |  |  |  |  | baseline start none → 2007-03-14; baseline finish none → 2007-03-26 |
| 51 | Test Execution (In Sync With SDK Testing) |  |  |  |  |  |  | baseline start none → 2007-03-14; baseline finish none → 2007-03-20 |
| 52 | Test Support |  |  |  |  |  |  | baseline start none → 2007-03-14; baseline finish none → 2007-03-16 |
| 53 | Test Support |  |  |  |  |  |  | baseline start none → 2007-03-23; baseline finish none → 2007-03-26 |
| 54 | **Iteration Plan** | 2007-03-27 A | 2007-03-27 A |  | 0% → 100% | 101d → none |  | baseline start none → 2007-03-27; baseline finish none → 2007-03-27 |
| 55 | Review Client Feature Request/Revise Task Plan | 2007-03-27 A | 2007-03-27 A |  | 0% → 100% | 102d → none |  | baseline start none → 2007-03-27; baseline finish none → 2007-03-27 |
| 56 | **Iteration 2** | 2007-02-15 A → 2007-01-23 A (-23d) |  | 60d → 74d | 54% → 96% | 71d → 53d |  | baseline start none → 2007-01-23; baseline finish none → 2007-05-09 |
| 57 | **Release 4.0** | 2007-02-15 A → 2007-01-23 A (-23d) |  | 60d → 74d | 54% → 96% | 71d → 53d |  | was named Release 4.0 Beta 1; baseline start none → 2007-01-23; baseline finish none → 2007-05-09 |
| 58 | Update Requirements Document |  |  |  |  |  |  | baseline start none → 2007-03-07; baseline finish none → 2007-03-13 |
| 59 | Assist BMS to Upgrade to CSM 3.2 to come on the same version to intiate co development | 2007-04-26 → 2007-01-23 (-93d) | 2007-04-30 → 2007-01-25 (-95d) |  |  | 78d → 124d | 90 → none | baseline start none → 2007-01-23; baseline finish none → 2007-01-25 |
| 60 | Query optimization and corrections to queries |  |  |  |  |  |  | baseline start none → 2007-02-15; baseline finish none → 2007-02-22 |
| 61 | Support Digital Certificates as credentials |  | 2007-03-06 A |  | 95% → 100% | 117d → none |  | baseline start none → 2007-02-23; baseline finish none → 2007-03-06 |
| 62 | 21CFR Part 11 Support |  |  |  |  |  |  | baseline start none → 2007-03-07; baseline finish none → 2007-03-13 |
| 63 | AuthenticationManager to correctly use the user provided lockout parameters |  |  |  |  |  |  | baseline start none → 2007-03-14; baseline finish none → 2007-03-14 |
| 64 | UPT Fixes |  |  |  |  |  |  | baseline start none → 2007-03-15; baseline finish none → 2007-03-19 |
| 65 | **Merge User Provisioning Manager & Authorization Manager Interfaces** |  |  |  |  |  |  | baseline start none → 2007-03-20; baseline finish none → 2007-03-22 |
| 66 | Design Update |  |  |  |  |  |  | baseline start none → 2007-03-20; baseline finish none → 2007-03-20 |
| 67 | Code |  |  |  |  |  |  | baseline start none → 2007-03-20; baseline finish none → 2007-03-22 |
| 68 | Uprade Tech Stack |  |  |  |  |  |  | baseline start none → 2007-03-27; baseline finish none → 2007-03-29 |
| 69 | Support Postgres Database |  |  |  |  |  |  | baseline start none → 2007-03-30; baseline finish none → 2007-04-04 |
| 70 | Merge 3.2.1 Code into 4.0 Head |  |  |  |  |  |  | baseline start none → 2007-04-05; baseline finish none → 2007-04-06 |

| ID | Task | Start | Finish | Duration | Complete | Total float | Predecessors | Other |
| --- | --- | --- | --- | --- | --- | --- | --- | --- |
| 71 | **QA** |  | 2007-05-08 A |  | 41% → 100% | 0d → none |  | baseline start none → 2007-03-14; baseline finish none → 2007-05-08 |
| 72 | Requirements Analysis |  |  |  |  |  |  | baseline start none → 2007-03-14; baseline finish none → 2007-03-20 |
| 73 | Test Plan Development |  |  |  |  |  |  | baseline start none → 2007-04-02; baseline finish none → 2007-04-13 |
| 74 | Test Execution | 2007-04-16 A | 2007-04-20 A |  | 0% → 100% | 0d → none |  | baseline start none → 2007-04-16; baseline finish none → 2007-04-20 |
| 75 | Test Plan Development | 2007-04-23 A | 2007-04-27 A |  | 0% → 100% | 0d → none |  | baseline start none → 2007-04-23; baseline finish none → 2007-04-27 |
| 76 | Test Execution (Instance Level Security) | 2007-04-30 A | 2007-05-08 A |  | 0% → 100% | 0d → none |  | baseline start none → 2007-04-30; baseline finish none → 2007-05-08 |
| 77 | Test Support | 2007-04-09 A | 2007-04-13 A |  | 0% → 100% | 16.48d → none |  | baseline start none → 2007-04-09; baseline finish none → 2007-04-13 |
| 78 | **Iteration Plan** | 2007-05-09 A | 2007-05-09 A |  | 0% → 100% | 70d → none | none → 71 | baseline start none → 2007-05-09; baseline finish none → 2007-05-09 |
| 79 | Review Client Feature Request/Revise Task Plan | 2007-05-09 A | 2007-05-09 A |  | 0% → 100% | 70d → none | Release 4.0 Beta 1 → none | baseline start none → 2007-05-09; baseline finish none → 2007-05-09 |
| 80 | **Iteration 3** | 2007-05-09 → 2007-03-19 A (-51d) | 2007-06-13 → 2007-07-17 (+34d) | 26d → 86.5d | 0% → 37% | 0d → 4.5d |  | baseline start none → 2007-03-19; baseline finish none → 2007-07-17 |
| 87 | Design |  | 2007-03-30 A |  | 42% → 100% | 77d → none |  | baseline start none → 2007-03-19; baseline finish none → 2007-03-30 |
| 88 | Development | 2007-04-02 A | 2007-04-25 A |  | 0% → 100% | 77d → none |  | baseline start none → 2007-04-02; baseline finish none → 2007-04-25 |
| 90 | **Instance Level Security** | 2007-03-19 A → 2007-04-26 A (+38d) | 2007-04-25 → 2007-07-03 (+69d) | 28d → 48d | 15% → 18% | 77d → 4.5d |  | baseline start none → 2007-04-26; baseline finish none → 2007-07-03 |
| 102 | **QA** | 2007-06-13 → 2007-07-03 (+20d) | 2007-06-13 → 2007-07-17 (+34d) | 1d → 10d |  | 0d → 4.5d |  | was named Iteration Plan; baseline start none → 2007-07-03; baseline finish none → 2007-07-17 |
| 103 | Test Execution | 2007-06-13 → 2007-07-03 (+20d) | 2007-06-13 → 2007-07-17 (+34d) | 1d → 10d |  | 0d → 4.5d | Release 4.0 Beta 2 → 90 | was named Review Client Feature Request/Revise Task Plan; resources Charles; Avinash; Satish → QA; baseline start none → 2007-07-03; baseline finish none → 2007-07-17 |
| 106 | **Iteration 4** | 2007-06-14 → 2007-04-30 A (-45d) | 2007-07-18 → 2007-06-27 (-21d) | 25d → 43d | 0% → 38% | 0d → 18d |  | baseline start none → 2007-04-30; baseline finish none → 2007-06-27 |
| 108 | Design/Prototype | 2007-06-14 → 2007-04-30 A (-45d) | 2007-07-18 → 2007-05-04 A (-75d) | 25d → 5d | 0% → 100% | 0d → none | 102 → none | was named Release 4.0 Beta 2; constraint none → finish no earlier than 2007-05-04; resources none → Vijay; baseline start none → 2007-04-30; baseline finish none → 2007-05-04 |
| 110 | **Transition** |  |  |  |  | 17d → 0d |  | baseline start none → 2007-06-19; baseline finish none → 2007-07-23 |
| 111 | **Documentation** |  |  |  |  | 17d → 0d |  | baseline start none → 2007-06-19; baseline finish none → 2007-07-23 |
| 112 | New technical guide |  |  |  |  | 17d → 0d |  | baseline start none → 2007-06-19; baseline finish none → 2007-07-02 |
| 113 | New users guide |  |  |  |  | 17d → 0d |  | baseline start none → 2007-07-03; baseline finish none → 2007-07-16 |
| 114 | How to example |  |  |  |  | 17d → 0d |  | baseline start none → 2007-07-17; baseline finish none → 2007-07-23 |
| 115 | 4.0 Release Complete |  |  |  |  | 17d → 0d |  | baseline start none → 2007-07-23; baseline finish none → 2007-07-23 |

## Version 9 (saved 2007-06-18)

Note of the change: updated per weekly status meeting

Last finish 2007-07-23 → 2007-10-05 (+74d). Complete tasks 60 → 64.

Added:

| ID | Task | Duration | Start | Finish | Predecessors | Constraint | Resources |
| --- | --- | --- | --- | --- | --- | --- | --- |
| 101 | **Attribute Level Security** | 26d | 2007-06-15 A | 2007-07-23 |  |  |  |
| 102 | Design | 4d | 2007-06-15 A | 2007-06-21 | 97 |  | Kunal |
| 103 | Design Document | 2d | 2007-06-21 | 2007-06-25 | 102 |  | Kunal |
| 104 | Design Document Complete | 0d | 2007-06-25 | 2007-06-25 | 103 |  | Kunal |
| 105 | Implementation | 10d | 2007-07-09 | 2007-07-23 | 98 |  | Kunal |
| 106 | **Integration Testing** | 5d | 2007-07-23 | 2007-07-30 |  |  |  |
| 109 | SDK Iteration 2 Testing Complete | 0d | 2007-06-25 | 2007-06-25 |  | start no earlier than 2007-06-25 |  |
| 110 | Test Development | 7d | 2007-06-25 | 2007-07-03 | 109 |  |  |
| 123 | **Production Packaging** | 9d | 2007-09-24 | 2007-10-05 |  |  |  |
| 124 | Update Download Site | 2d | 2007-09-24 | 2007-09-26 | 119 |  | Kunal |
| 125 | Develop Production promotion Documentation | 2d | 2007-09-26 | 2007-09-28 | 124 |  | Kunal |
| 126 | Push to Produciton | 5d | 2007-09-28 | 2007-10-05 | 124, 125 | start no earlier than 2007-08-30 | Terpsys |

Changed:

| ID | Task | Start | Finish | Duration | Complete | Total float | Predecessors | Other |
| --- | --- | --- | --- | --- | --- | --- | --- | --- |
| 1 | **CSM v4.0** |  | 2007-07-23 → 2007-10-05 (+74d) | 132d? → 185.5d? | 61% → 59% |  |  |  |
| 9 | **Eloboration** |  | 2007-07-23 → 2007-10-05 (+74d) | 132d? → 185.5d? | 65% → 63% |  |  |  |
| 27 | **Construction** |  | 2007-07-17 → 2007-08-13 (+27d) | 127.5d → 146.5d | 70% → 69% | 4.5d → 39d |  |  |
| 80 | **Iteration 3** |  | 2007-07-17 → 2007-08-13 (+27d) | 86.5d → 105.5d | 37% → 44% | 4.5d → 0d |  |  |
| 81 | **BioPharm 21 CFR Part 11 Validation** |  | 2007-05-25 → 2007-06-01 (+7d) | 15.5d → 20.5d | 33% → 56% | 4.5d → 51d |  |  |
| 84 | Address issues documented in the Summary of Findings | 2007-05-11 A | 2007-05-18 A |  | 0% → 100% | 4.5d → none |  |  |
| 85 | Address observations documented in the Gap Analysis | 2007-05-18 A | 2007-05-25 → 2007-06-01 (+7d) | 5d → 10d | 0% → 13% | 4.5d → 51d |  |  |
| 90 | **Instance Level Security** |  | 2007-07-03 → 2007-07-09 (+6d) | 48d → 52d | 18% → 63% | 4.5d → 0d |  |  |
| 92 | **CSM/ UPT Changes** | 2007-05-25 A | 2007-05-31 A |  | 0% → 100% | 4.5d → none |  |  |
| 93 | Modification to API for new value field to Protection Element | 2007-05-25 A | 2007-05-30 A |  | 0% → 100% | 4.5d → none |  |  |
| 94 | Changes to UPT Screen to Accept new value field | 2007-05-30 A | 2007-05-31 A |  | 0% → 100% | 4.5d → none |  |  |
| 95 | **Provisioning Changes** | 2007-05-31 → 2007-06-01 A (+1d) | 2007-06-14 → 2007-06-15 (+1d) |  | 0% → 68% | 4.5d → 3.2d | 92 → none |  |
| 96 | Details Database Design for Storing Security Info | 2007-05-31 → 2007-06-01 A (+1d) | 2007-06-04 → 2007-06-05 A (+1d) |  | 0% → 100% | 4.5d → none | none → 85 | resources Kunal → none; baseline start 2007-05-31 → none; baseline finish 2007-06-04 → none |
| 97 | Adding a Interactive Screen to Map Security from Hibernate Information | 2007-06-04 → 2007-06-05 A (+1d) | 2007-06-14 → 2007-06-15 (+1d) |  | 0% → 60% | 4.5d → 3.2d |  | resources Kunal → none; baseline start 2007-06-04 → none; baseline finish 2007-06-14 → none |
| 98 | **SDK Changes** | 2007-06-14 → 2007-06-25 A (+11d) | 2007-07-03 → 2007-07-09 (+6d) | 13d → 10d | 0% → 20% | 4.5d → 0d | 95 → none |  |
| 99 | Changes to add Filter info during HBM Generation | 2007-06-14 → 2007-06-25 A (+11d) | 2007-06-21 → 2007-07-02 (+11d) |  | 0% → 20% | 4.5d → 1d | none → 104 |  |
| 100 | Changes for Enabling Filter on Session | 2007-06-21 → 2007-07-02 A (+11d) | 2007-06-28 → 2007-07-09 (+11d) |  | 0% → 20% | 4.5d → 0d |  |  |
| 107 | Testing overall Changes | 2007-06-28 → 2007-07-23 (+25d) | 2007-07-03 → 2007-07-30 (+27d) | 3d → 5d |  | 4.5d → 0d | 100 → 101 |  |
| 108 | **QA** | 2007-07-03 → 2007-06-25 (-8d) | 2007-07-17 → 2007-08-13 (+27d) | 10d → 35.5d |  | 4.5d → 0d |  |  |
| 111 | Test Execution | 2007-07-03 → 2007-07-30 (+27d) | 2007-07-17 → 2007-08-13 (+27d) |  |  | 4.5d → 0d | 90 → 106 |  |
| 112 | Test Support | 2007-07-03 → 2007-07-30 (+27d) | 2007-07-17 → 2007-08-13 (+27d) |  |  | 4.5d → 0d | 90 → 106 |  |
| 113 | Documentation | 2007-07-03 → 2007-07-30 (+27d) | 2007-07-17 → 2007-08-13 (+27d) |  |  | 4.5d → 0d | 90 → 106 |  |
| 118 | **Transition** | 2007-06-19 → 2007-08-13 (+55d) | 2007-07-23 → 2007-10-05 (+74d) | 25d → 39d |  |  |  |  |
| 119 | **Documentation** | 2007-06-19 → 2007-08-13 (+55d) | 2007-07-23 → 2007-09-24 (+63d) | 25d → 30d |  |  | none → 80 |  |
| 120 | New technical guide | 2007-06-19 → 2007-08-13 (+55d) | 2007-07-02 → 2007-08-27 (+56d) |  |  |  |  | resources Vijay; Kunal → Kunal |
| 121 | New users guide | 2007-07-03 → 2007-08-27 (+55d) | 2007-07-16 → 2007-09-10 (+56d) |  |  |  |  | resources Vijay; Kunal → Kunal |
| 122 | How to example | 2007-07-17 → 2007-09-10 (+55d) | 2007-07-23 → 2007-09-24 (+63d) | 5d → 10d |  |  |  | resources Vijay; Kunal → Kunal |
| 127 | 4.0 Release Complete | 2007-07-23 → 2007-09-24 (+63d) | 2007-07-23 → 2007-09-24 (+63d) |  |  | 0d → 9d |  |  |

## Version 10 (saved 2007-06-26)

Note of the change: updated per status plan

Last finish stays 2007-10-05. Complete tasks 64 → 65.

Changed:

| ID | Task | Start | Finish | Complete | Total float |
| --- | --- | --- | --- | --- | --- |
| 1 | **CSM v4.0** |  |  | 59% → 62% |  |
| 9 | **Eloboration** |  |  | 63% → 65% |  |
| 27 | **Construction** |  |  | 69% → 73% |  |
| 80 | **Iteration 3** |  |  | 44% → 47% |  |
| 101 | **Attribute Level Security** |  |  | 8% → 35% |  |
| 102 | Design |  | 2007-06-21 A | 30% → 100% | 2d → none |
| 103 | Design Document | 2007-06-21 A |  | 0% → 80% |  |
| 114 | **Iteration 4** |  |  | 38% → 75% |  |
| 115 | **ACEGI Integration** |  |  | 38% → 75% |  |
| 117 | Development | 2007-06-18 A |  | 0% → 60% |  |

## Version 11 (saved 2007-07-02)

Note of the change: updated per weekly status meeting

Last finish 2007-10-05 → 2007-10-16 (+11d). Complete tasks 65 → 66.

Added:

| ID | Task | Duration | Start | Finish | Constraint | Resources |
| --- | --- | --- | --- | --- | --- | --- |
| 86 | Final BioPharm Certification | 0d | 2007-07-09 | 2007-07-09 | start no earlier than 2007-07-09 | BioPharm |

Changed:

| ID | Task | Start | Finish | Duration | Complete | Total float | Predecessors | Other |
| --- | --- | --- | --- | --- | --- | --- | --- | --- |
| 1 | **CSM v4.0** |  | 2007-10-05 → 2007-10-16 (+11d) | 185.5d? → 193d? | 62% → 66% |  |  |  |
| 9 | **Eloboration** |  | 2007-10-05 → 2007-10-16 (+11d) | 185.5d? → 193d? | 65% → 70% |  |  |  |
| 27 | **Construction** |  | 2007-08-13 → 2007-08-22 (+9d) | 146.5d → 154d | 73% → 79% |  |  |  |
| 80 | **Iteration 3** |  | 2007-08-13 → 2007-08-22 (+9d) | 105.5d → 113d | 47% → 58% |  |  |  |
| 81 | **BioPharm 21 CFR Part 11 Validation** |  | 2007-06-01 → 2007-07-09 (+38d) | 20.5d → 46d | 56% → 99% | 51d → 25.5d |  |  |
| 85 | Address observations documented in the Gap Analysis |  | 2007-06-01 A |  | 13% → 100% | 51d → none |  |  |
| 91 | **Instance Level Security** |  |  |  | 63% → 83% |  |  |  |
| 99 | **SDK Changes** |  |  |  | 20% → 80% | 0d → 4d |  |  |
| 100 | Changes to add Filter info during HBM Generation |  |  |  | 20% → 80% | 1d → 8d |  |  |
| 101 | Changes for Enabling Filter on Session |  |  |  | 20% → 80% | 0d → 4d |  |  |
| 102 | **Attribute Level Security** |  |  |  | 35% → 60% | 0d → 7.5d |  |  |
| 106 | Implementation | 2007-07-09 A |  |  | 0% → 40% | 0d → 7.5d |  |  |
| 109 | **QA** |  | 2007-08-13 → 2007-08-22 (+9d) | 35.5d → 43d |  |  |  |  |
| 111 | Test Development | 2007-06-25 → 2007-07-09 (+14d) | 2007-07-03 → 2007-07-24 (+21d) | 7d → 12d |  | 28.5d → 13.5d | 110 → none | constraint none → finish no earlier than 2007-07-24; resources none → QA [50%] |
| 112 | Test Execution | 2007-07-30 → 2007-08-08 (+9d) | 2007-08-13 → 2007-08-22 (+9d) | 10d → 11d |  |  | 107 → none | constraint none → finish no earlier than 2007-08-22 |
| 115 | **Iteration 4** |  |  |  | 75% → 97% |  |  |  |
| 116 | **ACEGI Integration** |  |  |  | 75% → 97% |  |  |  |
| 118 | Development |  |  |  | 60% → 95% |  |  |  |
| 119 | **Transition** | 2007-08-13 → 2007-08-23 (+10d) | 2007-10-05 → 2007-10-16 (+11d) |  |  |  |  |  |
| 120 | **Documentation** | 2007-08-13 → 2007-08-23 (+10d) | 2007-09-24 → 2007-10-03 (+9d) |  |  |  |  |  |
| 121 | New technical guide | 2007-08-13 → 2007-08-23 (+10d) | 2007-08-27 → 2007-09-05 (+9d) |  |  |  |  |  |
| 122 | New users guide | 2007-08-27 → 2007-09-06 (+10d) | 2007-09-10 → 2007-09-19 (+9d) |  |  |  |  |  |
| 123 | How to example | 2007-09-10 → 2007-09-20 (+10d) | 2007-09-24 → 2007-10-03 (+9d) |  |  |  |  |  |
| 124 | **Production Packaging** | 2007-09-24 → 2007-10-04 (+10d) | 2007-10-05 → 2007-10-16 (+11d) |  |  |  |  |  |
| 125 | Update Download Site | 2007-09-24 → 2007-10-04 (+10d) | 2007-09-26 → 2007-10-05 (+9d) |  |  |  |  |  |
| 126 | Develop Production promotion Documentation | 2007-09-26 → 2007-10-08 (+12d) | 2007-09-28 → 2007-10-09 (+11d) |  |  |  |  |  |
| 127 | Push to Produciton | 2007-09-28 → 2007-10-10 (+12d) | 2007-10-05 → 2007-10-16 (+11d) |  |  |  |  |  |
| 128 | 4.0 Release Complete | 2007-09-24 → 2007-10-03 (+9d) | 2007-09-24 → 2007-10-03 (+9d) |  |  |  |  |  |

## Version 12 (saved 2007-07-10)

Note of the change: updated per weekly status meeting

Last finish stays 2007-10-16.

Changed:

| ID | Task | Complete | Total float |
| --- | --- | --- | --- |
| 1 | **CSM v4.0** | 66% → 68% |  |
| 9 | **Eloboration** | 70% → 72% |  |
| 27 | **Construction** | 79% → 80% | 39d → 31.5d |
| 80 | **Iteration 3** | 58% → 62% |  |
| 102 | **Attribute Level Security** | 60% → 93% |  |
| 104 | Design Document | 80% → 95% | 12d → 24.5d |
| 106 | Implementation | 40% → 90% |  |

## Version 13 (saved 2007-09-11)

Note of the change: Updated per weekly status report, End QA delayed till 10/17

Last finish 2007-10-16 → 2007-10-29 (+13d). Complete tasks 66 → 75.

Added:

| ID | Task | Duration | Start | Finish | Predecessors | Constraint | Resources |
| --- | --- | --- | --- | --- | --- | --- | --- |
| 123 | Draft for Review By Tech Writing | 0d | 2007-10-15 | 2007-10-15 | 122 | start no earlier than 2007-09-14 |  |
| 124 | Tech Writing Review | 6d | 2007-10-16 | 2007-10-23 | 123 | start no earlier than 2007-09-14 | Wendy |
| 125 | Final Review | 2d | 2007-10-24 | 2007-10-25 | 124 |  | Avinash; Kunal |

Removed: 123 How to example

Changed:

| ID | Task | Start | Finish | Duration | Complete | Total float | Predecessors | Other |
| --- | --- | --- | --- | --- | --- | --- | --- | --- |
| 1 | **CSM v4.0** |  | 2007-10-16 → 2007-10-29 (+13d) | 193d? → 202d? | 68% → 79% |  |  |  |
| 9 | **Eloboration** |  | 2007-10-16 → 2007-10-29 (+13d) | 193d? → 202d? | 72% → 85% |  |  |  |
| 27 | **Construction** |  | 2007-08-22 → 2007-10-01 (+40d) | 154d → 182d | 80% → 92% | 31.5d → 15d |  |  |
| 80 | **Iteration 3** |  | 2007-08-22 → 2007-10-01 (+40d) | 113d → 141d | 62% → 87% | 0d → 15d |  |  |
| 91 | **Instance Level Security** |  | 2007-07-09 A |  | 83% → 100% | 32.5d → none |  |  |
| 96 | **Provisioning Changes** |  | 2007-06-15 A |  | 68% → 100% | 41d → none |  |  |
| 97 | Details Database Design for Storing Security Info |  |  |  |  |  |  | resources none → Kunal |
| 98 | Adding a Interactive Screen to Map Security from Hibernate Information |  | 2007-06-15 A |  | 60% → 100% | 41d → none |  | resources none → Kunal |
| 99 | **SDK Changes** |  | 2007-07-09 A |  | 80% → 100% | 16.5d → none |  |  |
| 100 | Changes to add Filter info during HBM Generation |  | 2007-07-02 A |  | 80% → 100% | 8d → none |  |  |
| 101 | Changes for Enabling Filter on Session |  | 2007-07-09 A |  | 80% → 100% | 4d → none |  |  |
| 102 | **Attribute Level Security** |  | 2007-07-23 A |  | 93% → 100% | 7.5d → none |  |  |
| 104 | Design Document |  | 2007-06-25 A |  | 95% → 100% | 24.5d → none |  |  |
| 105 | Design Document Complete | 2007-06-25 A | 2007-06-25 A |  | 0% → 100% | 12d → none |  |  |
| 106 | Implementation |  | 2007-07-23 A |  | 90% → 100% | 7.5d → none |  |  |
| 107 | **Integration Testing** | 2007-07-23 A | 2007-07-30 → 2007-08-06 A (+7d) | 5d → 10d | 0% → 100% | 7.5d → none |  |  |
| 108 | Testing overall Changes | 2007-07-23 A | 2007-07-30 → 2007-08-06 A (+7d) | 5d → 10d | 0% → 100% | 7.5d → none |  |  |
| 109 | **QA** | 2007-06-25 A | 2007-08-22 → 2007-09-17 (+26d) | 43d → 61d | 0% → 77% | 0d → 25d |  |  |
| 110 | SDK Iteration Testing Complete | 2007-06-25 A |  |  | 0% → 95% | 35.5d → 0d |  | was named SDK Iteration 2 Testing Complete |
| 111 | Test Development | 2007-07-09 A | 2007-07-24 A |  | 0% → 100% | 13.5d → none |  |  |
| 112 | Test Execution | 2007-08-08 → 2007-08-20 A (+12d) | 2007-08-22 → 2007-09-17 (+26d) | 11d → 21d | 0% → 70% | 0d → 25d |  | constraint finish no earlier than 2007-08-22 → start no earlier than 2007-08-20 |
| 113 | Test Support | 2007-07-30 → 2007-08-20 A (+21d) | 2007-08-13 → 2007-09-17 (+35d) | 10d → 21d | 0% → 70% | 7.5d → 0d | 107 → none | constraint none → start no earlier than 2007-08-20; resources Kunal [50%] → Kunal [50%]; Vijay |
| 114 | Documentation | 2007-07-30 → 2007-09-18 (+50d) | 2007-08-13 → 2007-10-01 (+49d) |  |  | 7.5d → 0d | 107 → 113 | resources Kunal [50%] → Kunal [50%]; Vijay |
| 115 | **Iteration 4** |  | 2007-06-27 A |  | 97% → 100% | 71.5d → none |  |  |
| 116 | **ACEGI Integration** |  | 2007-06-27 A |  | 97% → 100% | 71.5d → none |  |  |
| 118 | Development |  | 2007-06-27 A |  | 95% → 100% | 71.5d → none |  |  |
| 119 | **Transition** | 2007-08-23 → 2007-01-23 (-212d) | 2007-10-16 → 2007-10-29 (+13d) | 39d → 197d? |  |  |  |  |
| 120 | **Documentation** | 2007-08-23 → 2007-10-02 (+40d) | 2007-10-03 → 2007-10-25 (+22d) | 30d → 18d |  |  | 80 → 114 |  |
| 121 | New technical guide | 2007-08-23 → 2007-10-02 (+40d) | 2007-09-05 → 2007-10-08 (+33d) | 10d → 5d |  |  |  | resources Kunal → Kunal [20%]; Vijay |
| 122 | New users guide | 2007-09-06 → 2007-10-09 (+33d) | 2007-09-19 → 2007-10-15 (+26d) | 10d → 5d |  |  |  | resources Kunal → Vijay |
| 126 | **Production Packaging** | 2007-10-04 → 2007-10-16 (+12d) | 2007-10-16 → 2007-10-29 (+13d) | 9d → 10d |  |  |  |  |
| 127 | Update Download Site | 2007-10-04 → 2007-10-16 (+12d) | 2007-10-05 → 2007-10-17 (+12d) |  |  |  | 120 → 123 | resources Kunal → Vijay |
| 128 | Develop Production promotion Documentation | 2007-10-08 → 2007-10-18 (+10d) | 2007-10-09 → 2007-10-19 (+10d) |  |  |  |  | resources Kunal → Vijay |
| 129 | Push to Production (Zope Site, Gforge) | 2007-10-10 → 2007-10-22 (+12d) | 2007-10-16 → 2007-10-29 (+13d) | 5d → 6d |  |  |  | was named Push to Produciton |
| 130 | 4.0 Release Complete | 2007-10-03 → 2007-10-29 (+26d) | 2007-10-03 → 2007-10-29 (+26d) |  |  | 9d → 0d | 120 → 126 |  |
