# NCICBSecurityService

How a schedule from MS Project changed from version to version. A marks actual dates.

## Version 1 (saved 2004-12-17, file NCICBSecurityService.mpp)

Note of the change: updated with latest percent complete

| ID | WBS | Task | Duration | Start | Finish | Predecessors | Complete | Total float | Constraint |
| --- | --- | --- | --- | --- | --- | --- | --- | --- | --- |
| 1 | 1 | **Security Module (Release One)** | 156d? | 2004-08-02 A | 2005-03-07 |  | 44% | 0d |  |
| 2 | 1.1 | **Inception** | 38d | 2004-08-02 A | 2004-09-22 A |  | 100% |  |  |
| 3 |  | Phase I Evaluation | 7d | 2004-08-02 A | 2004-08-10 A |  | 100% |  | start no earlier than 2004-08-02 |
| 4 |  | Interview NCICB Team Leads | 12d | 2004-08-09 A | 2004-08-24 A |  | 100% |  | start no earlier than 2004-08-09 |
| 5 |  | Scope and Vision Document | 10d | 2004-08-30 A | 2004-09-10 A |  | 100% |  | start no earlier than 2004-08-30 |
| 6 |  | Supplentary Specifications | 3d | 2004-09-01 A | 2004-09-03 A | 4 | 100% |  | start no earlier than 2004-09-01 |
| 7 |  | Fuctional Specifications | 5d | 2004-09-06 A | 2004-09-10 A | 6 | 100% |  |  |
| 8 |  | Use Case Model | 5d | 2004-09-13 A | 2004-09-17 A | 7 | 100% |  |  |
| 9 |  | Identify Risk List | 3d | 2004-09-20 A | 2004-09-22 A | 8 | 100% |  |  |
| 10 | 1.2 | **Elaboration** | 23d? | 2004-09-27 A | 2004-10-27 |  | 81% | 93d |  |
| 11 | 1.2.1 | **Iteration I** | 13d | 2004-09-27 A | 2004-10-13 |  | 92% | 103d |  |
| 12 |  | Level 1 - 2 Use Cases | 5d | 2004-09-27 A | 2004-10-01 A |  | 100% |  |  |
| 13 |  | Risk List Priority | 3d | 2004-09-27 A | 2004-09-29 A |  | 100% |  |  |
| 14 |  | Detailed Iteration Release Plan | 5d | 2004-09-27 A | 2004-10-01 |  | 95% | 111d |  |
| 15 | 1.2.1.4 | **Finalize Requirements** | 9d | 2004-10-01 A | 2004-10-13 |  | 50% | 103d |  |
| 16 |  | Stakeholder Sign Off | 1d | 2004-10-01 | 2004-10-01 |  |  | 111d | start no earlier than 2004-10-01 |
| 17 |  | User Working Group Review | 1d | 2004-10-13 A | 2004-10-13 A | 16 | 100% |  | start no earlier than 2004-10-13 |
| 18 | 1.2.2 | **Iteration II** | 17d? | 2004-10-05 A | 2004-10-27 |  | 73% | 93d |  |
| 19 |  | Develop Architecture Prototype | 3d | 2004-10-25 A | 2004-10-27 A |  | 100% |  | start no earlier than 2004-10-25 |
| 20 |  | Software Architecture Document | 15d | 2004-10-05 A | 2004-10-25 |  | 70% | 94d | finish no earlier than 2004-10-25 |
| 21 |  | Architecture Review | 1d? | 2004-10-26 A | 2004-10-26 A | 20 | 100% |  |  |
| 22 |  | Prioritize Risk List | 1d | 2004-10-26 | 2004-10-26 |  |  | 94d | start no earlier than 2004-10-26 |
| 23 |  | Phase Review | 1d? | 2004-09-27 | 2004-09-27 |  |  | 115d |  |
| 24 | 1.4 | **Construction** | 88d | 2004-10-18 A | 2005-02-16 |  | 38% | 13d |  |
| 25 | 1.4.1 | **Iteration I** | 19d | 2004-10-26 A | 2004-11-19 |  | 84% | 76d |  |
| 26 |  | Iteration Plan | 1d | 2004-10-26 | 2004-10-26 |  |  | 94d | start no earlier than 2004-10-26 |
| 27 | 1.4.1.2 | **Authentication** | 18d | 2004-10-27 A | 2004-11-19 |  | 87% | 76d |  |
| 28 | 1.4.1.2.1 | **Design** | 4d | 2004-10-27 A | 2004-11-01 A |  | 100% |  |  |
| 29 | 1.4.1.2.1.1 | **Documentation** | 4d | 2004-10-27 A | 2004-11-01 A |  | 100% |  |  |
| 30 |  | Level 3 - 4 Use Cases | 0.5d | 2004-10-27 A | 2004-10-27 A |  | 100% |  | start no earlier than 2004-10-27 |
| 31 |  | Use Case Model | 0.5d | 2004-10-27 A | 2004-10-27 A | 30 | 100% |  | start no earlier than 2004-10-27 |
| 32 |  | Working Group Use Case Review | 1d | 2004-10-28 A | 2004-10-28 A | 31 | 100% |  |  |
| 33 |  | UML Sequence Diagram | 1d | 2004-10-29 A | 2004-10-29 A | 32 | 100% |  |  |
| 34 |  | UML Class Diagram | 1d | 2004-11-01 A | 2004-11-01 A | 33 | 100% |  |  |
| 35 |  | UML Activity Diagram | 1d | 2004-10-29 A | 2004-10-29 A |  | 100% |  | start no earlier than 2004-10-29 |
| 36 |  | Design Review | 1d | 2004-11-01 A | 2004-11-01 A | 35 | 100% |  |  |
| 37 | 1.4.1.2.2 | **Implementation** | 11d | 2004-11-01 A | 2004-11-15 |  | 80% | 80d |  |
| 38 |  | Data Model Enhancement | 5d | 2004-11-01 A | 2004-11-05 A |  | 100% |  | start no earlier than 2004-11-01 |
| 39 |  | Data Model Documentation with Examples | 1d | 2004-11-08 A | 2004-11-08 A |  | 100% |  | start no earlier than 2004-11-08 |
| 40 | 1.4.1.2.2.3 | **JAAS Authentication Modules** | 10d | 2004-11-02 A | 2004-11-15 |  | 72% | 80d |  |
| 41 |  | LDAP | 5d | 2004-11-02 A | 2004-11-08 A | 36 | 100% |  | start no earlier than 2004-11-02 |
| 42 |  | RBDMS | 5d | 2004-11-08 A | 2004-11-12 A | 36 | 100% |  | finish no earlier than 2004-11-12 |
| 43 |  | Junit Test Development | 4d | 2004-11-09 | 2004-11-12 |  |  | 81d | finish no earlier than 2004-11-12 |
| 44 |  | Code Reviews | 0.33d | 2004-11-15 A | 2004-11-15 A | 41, 42, 43 | 100% |  | finish no earlier than 2004-11-15 |
| 45 | 1.4.1.2.3 | **Unit Testing** | 4d | 2004-11-16 A | 2004-11-19 A |  | 100% |  |  |
| 46 |  | Perform Testing | 1d | 2004-11-16 A | 2004-11-16 A | 44 | 100% |  | start no earlier than 2004-11-15 |
| 47 |  | Evaluate Results | 1d | 2004-11-17 A | 2004-11-17 A | 46 | 100% |  | start no earlier than 2004-11-16 |
| 48 |  | Integration Testing | 1d | 2004-11-18 A | 2004-11-18 A | 47 | 100% |  |  |
| 49 |  | User Working Group Review (SAD, Design Models) | 1d | 2004-11-19 A | 2004-11-19 A | 48 | 100% |  |  |
| 50 | 1.4.2 | **Iteration II** | 28d | 2004-11-23 A | 2004-12-30 |  | 72% | 42d |  |
| 51 |  | Iteration Plan | 1d | 2004-11-30 | 2004-11-30 |  |  | 64d | start no earlier than 2004-11-30 |
| 52 | 1.4.2.2 | **Authorization** | 28d | 2004-11-23 A | 2004-12-30 |  | 74% | 42d |  |
| 53 | 1.4.2.2.1 | **Design** | 6d | 2004-12-01 A | 2004-12-08 A |  | 100% |  |  |
| 54 | 1.4.2.2.1.1 | **Documentation** | 6d | 2004-12-01 A | 2004-12-08 A |  | 100% |  |  |
| 55 |  | Level 3 - 4 Use Cases | 1d | 2004-12-01 A | 2004-12-01 A |  | 100% |  | start no earlier than 2004-12-01 |
| 56 |  | Use Case Model | 1d | 2004-12-01 A | 2004-12-01 A | 51 | 100% |  | start no earlier than 2004-11-22 |
| 57 |  | User Working Group Review | 1d | 2004-12-02 A | 2004-12-02 A | 56 | 100% |  |  |
| 58 |  | UML Sequence Diagram | 1d | 2004-12-03 A | 2004-12-03 A | 57 | 100% |  |  |
| 59 |  | UML Class Diagram | 1d | 2004-12-06 A | 2004-12-06 A | 58 | 100% |  |  |
| 60 |  | UML Activity Diagram | 1d | 2004-12-06 A | 2004-12-06 A |  | 100% |  | start no earlier than 2004-12-06 |
| 61 |  | Design Review | 1d | 2004-12-07 A | 2004-12-07 A | 60 | 100% |  |  |
| 62 |  | UML Model for EVS | 2d | 2004-12-07 A | 2004-12-08 A |  | 100% |  | start no earlier than 2004-12-07 |
| 63 | 1.4.2.2.2 | **Implementation** | 23.5d | 2004-11-23 A | 2004-12-24 |  | 75% | 46.5d |  |
| 64 |  | Authorization XML Schema | 10d | 2004-12-09 A | 2004-12-22 A |  | 100% |  | start no earlier than 2004-12-09 |
| 65 | 1.4.2.2.2.2 | **Authorization API** | 23.5d | 2004-11-23 A | 2004-12-24 |  | 66% | 46.5d |  |
| 66 |  | Enhance Phase I Object Model | 7d | 2004-11-23 A | 2004-12-01 A | 38 | 100% |  | start no earlier than 2004-12-23 |
| 67 | 1.4.2.2.2.2.2 | **develop run time API** | 16.5d | 2004-12-02 A | 2004-12-24 | 66 | 55% | 46.5d |  |
| 68 |  | Implement AuthorizationManager Interface | 15d | 2004-12-02 A | 2004-12-22 |  | 60% | 48d | finish no earlier than 2004-12-22 |
| 69 |  | Junit Test Development | 4.5d | 2004-12-16 A | 2004-12-22 |  | 50% | 46.5d | finish no earlier than 2004-12-22 |
| 70 |  | Code Review | 1d | 2004-12-23 | 2004-12-24 | 69 |  | 46.5d |  |

| ID | WBS | Task | Duration | Start | Finish | Predecessors | Complete | Total float | Constraint |
| --- | --- | --- | --- | --- | --- | --- | --- | --- | --- |
| 71 | 1.4.2.2.3 | **Unit Testing** | 4d | 2004-12-27 | 2004-12-30 |  |  | 42d |  |
| 72 |  | Review Integration Test Plan | 1d | 2004-12-27 | 2004-12-27 |  |  | 42d | start no earlier than 2004-12-27 |
| 73 |  | Evaluate Results | 1d | 2004-12-28 | 2004-12-28 | 72 |  | 42d |  |
| 74 |  | Integration Testing | 1d | 2004-12-29 | 2004-12-29 | 73 |  | 42d |  |
| 75 |  | User Working Group Review | 1d | 2004-12-30 | 2004-12-30 | 74 |  | 42d |  |
| 76 | 1.4.3 | **Iteration III** | 26d | 2004-12-21 | 2005-01-25 |  |  | 29d |  |
| 77 |  | Iteration Plan | 1d | 2004-12-21 | 2004-12-21 |  |  | 39d | start no earlier than 2004-12-21 |
| 78 | 1.4.3.2 | **Prototype (Reference Implementation)** | 25d | 2004-12-22 | 2005-01-25 |  |  | 29d |  |
| 79 | 1.4.3.2.1 | **Implementation** | 15d | 2004-12-22 | 2005-01-11 |  |  | 39d |  |
| 80 | 1.4.3.2.1.1 | **Demo Application** | 15d | 2004-12-22 | 2005-01-11 |  |  | 39d |  |
| 81 |  | Integrate Authentication | 5d | 2004-12-22 | 2004-12-28 | 77 |  | 39d | start no earlier than 2004-12-22 |
| 82 |  | User Interface | 10d | 2004-12-29 | 2005-01-11 | 81 |  | 39d |  |
| 83 |  | Integrate Authorization | 5d | 2004-12-31 | 2005-01-06 | 50 |  | 42d |  |
| 84 | 1.4.3.2.2 | **Documentation** | 5d | 2005-01-19 | 2005-01-25 |  |  | 29d |  |
| 85 |  | User Guide | 5d | 2005-01-19 | 2005-01-25 |  |  | 29d | start no earlier than 2005-01-19 |
| 86 | 1.4.4 | **Iteration IV** | 88d | 2004-10-18 A | 2005-02-16 |  | 22% | 13d |  |
| 87 |  | Iteration Plan | 2d | 2004-10-18 | 2004-10-19 |  |  | 99d | start no earlier than 2004-10-18 |
| 88 | 1.4.4.2 | **User Provisioning** | 86d | 2004-10-20 A | 2005-02-16 |  | 23% | 13d |  |
| 89 | 1.4.4.2.1 | **Design** | 27d | 2004-10-20 A | 2004-11-25 A |  | 100% |  |  |
| 90 | 1.4.4.2.1.1 | **Documentation** | 27d | 2004-10-20 A | 2004-11-25 A |  | 100% |  |  |
| 91 |  | Level 3 - 4 Use Cases | 1d | 2004-10-27 A | 2004-10-27 A | 87 | 100% |  | start no earlier than 2004-10-27 |
| 92 |  | Use Case Model | 6d | 2004-10-20 A | 2004-10-27 A | 87 | 100% |  | finish no earlier than 2004-10-27 |
| 93 |  | Gather Requirements | 5d | 2004-10-28 A | 2004-11-03 A | 92 | 100% |  |  |
| 94 |  | Create DDL for mysql | 1d | 2004-11-10 A | 2004-11-10 A |  | 100% |  | start no earlier than 2004-11-10 |
| 95 |  | Generate Hibernate Mappings | 1d | 2004-11-22 A | 2004-11-22 A | 94 | 100% |  |  |
| 96 |  | Generate Hibernate Mappings | 1d | 2004-11-23 A | 2004-11-23 A | 95 | 100% |  |  |
| 97 |  | UML Class Diagram | 1d | 2004-11-24 A | 2004-11-24 A | 96 | 100% |  |  |
| 98 |  | Design Review | 1d | 2004-11-25 A | 2004-11-25 A | 97 | 100% |  | finish no earlier than 2004-11-15 |
| 99 | 1.4.4.2.2 | **Implementation** | 28d | 2004-11-29 A | 2005-01-05 |  | 14% | 43d |  |
| 100 |  | Create Hibernate Mappings | 4d | 2004-12-03 A | 2004-12-08 A |  | 100% |  | start no earlier than 2004-12-03 |
| 101 |  | Create Roles | 3.75d | 2004-11-29 A | 2004-12-10 A | 100 | 100% |  | start no earlier than 2004-11-29 |
| 102 |  | Modify Roles | 2.5d | 2004-12-10 A | 2004-12-14 A | 101 | 100% |  |  |
| 103 |  | Create Privileges | 1.5d | 2004-12-14 A | 2004-12-16 A | 102 | 100% |  |  |
| 104 |  | Modify Privileges | 1.5d | 2004-12-16 A | 2004-12-17 A | 103 | 100% |  |  |
| 105 |  | Assign Privileges to Roles | 1.5d | 2004-12-17 A | 2004-12-21 A | 104 | 100% |  |  |
| 106 |  | Create Protection Elements | 1d | 2004-12-21 | 2004-12-22 | 105 |  | 49.75d |  |
| 107 |  | Modify Protection Elements | 1d | 2004-12-22 | 2004-12-23 | 106 |  | 49.75d |  |
| 108 |  | Create Protection Group | 1d | 2004-12-23 | 2004-12-24 | 107 |  | 49.75d |  |
| 109 |  | Modify Protection Group | 1d | 2004-12-24 | 2004-12-27 | 108 |  | 49.75d |  |
| 110 |  | Assign Protection Elements to Groups | 1d | 2004-12-27 | 2004-12-28 | 109 |  | 49.75d |  |
| 111 |  | Assign Protection Elements to Users | 1d | 2005-01-04 | 2005-01-04 |  |  | 43d | start no earlier than 2005-01-04 |
| 112 |  | Assign Protection Group to User Roles | 1d | 2005-01-05 | 2005-01-05 | 111 |  | 43d |  |
| 113 | 1.4.4.2.2.14 | **Struts Interface** | 24d | 2004-12-03 | 2005-01-05 |  |  | 43d |  |
| 114 |  | Design HTML/JSP Pages | 20d | 2004-12-03 | 2004-12-30 |  |  | 47d | start no earlier than 2004-12-03 |
| 115 |  | Develop Struts Actions, Forms, Config | 20d | 2004-12-06 | 2004-12-31 |  |  | 43d | finish no earlier than 2004-12-31 |
| 116 |  | Validation | 3d | 2005-01-03 | 2005-01-05 | 115 |  | 43d |  |
| 117 |  | Junit Test Cases (Ongoing Task) | 17d | 2004-12-14 | 2005-01-05 |  |  | 43d | finish no earlier than 2005-01-05 |
| 118 |  | Code Reviews (Onging Task) | 23d | 2004-12-06 | 2005-01-05 |  |  | 37d | finish no earlier than 2005-01-05 |
| 119 | 1.4.4.2.3 | **Unit Testing** | 6d | 2005-01-06 | 2005-01-13 |  |  | 37d |  |
| 120 |  | Perform Testing | 3d | 2005-01-06 | 2005-01-10 | 118 |  | 37d | start no earlier than 2004-12-15 |
| 121 |  | Evaluate Results | 1d | 2005-01-11 | 2005-01-11 | 120 |  | 37d |  |
| 122 |  | Integration Testing | 1d | 2005-01-12 | 2005-01-12 | 121 |  | 37d |  |
| 123 |  | User Working Group Review | 1d | 2005-01-13 | 2005-01-13 | 122 |  | 37d |  |
| 124 |  | User Guide | 12d | 2005-02-01 | 2005-02-16 |  |  | 13d | start no earlier than 2005-02-01 |
| 125 | 1.5 | **Transition** | 41d | 2005-01-10 | 2005-03-07 |  |  | 0d |  |
| 126 | 1.5.1 | **Iteration I** | 21.5d | 2005-01-10 | 2005-02-08 |  |  | 19.5d |  |
| 127 |  | System Integration Document | 12d | 2005-01-10 | 2005-01-25 |  |  | 21d | start no earlier than 2005-01-10 |
| 128 |  | caCore Technical Guide | 8d | 2005-01-26 | 2005-02-04 | 127 |  | 21d |  |
| 129 | 1.5.1.3 | **Integration Pilot (Release One)** | 19.5d | 2005-01-12 | 2005-02-08 |  |  | 19.5d |  |
| 130 | 1.5.1.3.1 | **Client Implementation** | 9d | 2005-01-12 | 2005-01-24 |  |  | 30d |  |
| 131 |  | Design | 2d | 2005-01-12 | 2005-01-13 |  |  | 30d | start no earlier than 2005-01-12 |
| 132 |  | Development | 5d | 2005-01-14 | 2005-01-20 | 131 |  | 30d |  |
| 133 |  | Testing | 2d | 2005-01-21 | 2005-01-24 | 132 |  | 30d |  |
| 134 |  | Integration Testing | 5d | 2005-01-25 | 2005-01-31 |  |  | 19.5d | start no earlier than 2005-01-25 |
| 135 |  | Evaluate Results | 0.5d | 2005-02-01 | 2005-02-01 | 134 |  | 19.5d |  |
| 136 |  | Apply Needed Enhancements | 5d | 2005-02-01 | 2005-02-08 | 135 |  | 19.5d |  |
| 137 | 1.5.2 | **Iteration II** | 7d | 2005-02-15 | 2005-02-23 |  |  | 8d |  |
| 138 |  | Staging | 5d | 2005-02-15 | 2005-02-21 |  |  | 10d | start no earlier than 2005-02-15 |
| 139 |  | Testing | 3d | 2005-02-21 | 2005-02-23 |  |  | 8d | start no earlier than 2005-02-21 |
| 140 |  | caCore Release 3 | 1d | 2005-03-07 | 2005-03-07 |  |  | 0d | start no earlier than 2005-03-07 |

## Version 2 (saved 2004-12-27, file NCICBSecurityService.mpp)

Note of the change: Updated from meeting with Charles

Last finish stays 2005-03-07. Complete tasks 52 → 62.

Added:

| ID | Task | Duration | Start | Finish | Predecessors | Resources |
| --- | --- | --- | --- | --- | --- | --- |
| 79 | Use Case Development | 0d | 2004-12-29 | 2004-12-29 |  | Eric |
| 119 | Testing | 3d | 2005-01-17 | 2005-01-19 |  | Eric |
| 120 | Defect Fixes | 3d | 2005-01-17 | 2005-01-19 |  | Kunal |
| 122 | **Load Testing** | 4d | 2005-01-20 | 2005-01-25 |  |  |
| 123 | Configuration | 2d | 2005-01-20 | 2005-01-21 | 116 | Eric |
| 124 | Testing | 2d | 2005-01-24 | 2005-01-25 | 123 |  |
| 125 | **Documentation** | 12d | 2005-01-26 | 2005-02-10 |  |  |

Removed: 73 Evaluate Results; 75 User Working Group Review; 116 Validation; 117 Junit Test Cases (Ongoing Task); 121 Evaluate Results

Changed:

| ID | Task | Start | Finish | Duration | Complete | Total float | Predecessors | Other |
| --- | --- | --- | --- | --- | --- | --- | --- | --- |
| 1 | **Security Module (Release One)** |  |  |  | 44% → 50% |  |  |  |
| 24 | **Construction** |  | 2005-02-16 → 2005-02-10 (-6d) | 88d → 84d | 38% → 47% | 13d → 17d |  |  |
| 50 | **Iteration II** |  | 2004-12-30 → 2004-12-29 (-1d) | 28d → 27d | 72% → 92% | 42d → 24d |  |  |
| 51 | Iteration Plan | 2004-11-30 A | 2004-11-30 A |  | 0% → 100% | 64d → none |  |  |
| 52 | **Authorization** |  | 2004-12-30 → 2004-12-29 (-1d) | 28d → 27d | 74% → 92% | 42d → 24d |  |  |
| 63 | **Implementation** |  |  |  | 75% → 97% | 46.5d → 27.5d |  |  |
| 65 | **Authorization API** |  |  |  | 66% → 96% | 46.5d → 27.5d |  |  |
| 67 | **develop run time API** |  |  |  | 55% → 95% | 46.5d → 27.5d |  |  |
| 68 | Implement AuthorizationManager Interface |  | 2004-12-22 A |  | 60% → 100% | 48d → none |  |  |
| 69 | Junit Test Development |  | 2004-12-22 A |  | 50% → 100% | 46.5d → none |  |  |
| 71 | **Testing** |  | 2004-12-30 → 2004-12-29 (-1d) | 4d → 3d |  | 42d → 24d |  | was named Unit Testing |
| 72 | Integration Test Plan |  |  |  |  | 42d → 43d |  | was named Review Integration Test Plan; resources Team → Vinay |
| 73 | Integration Testing | 2004-12-29 → 2004-12-28 (-1d) |  | 1d → 2d |  | 42d → 43d | Evaluate Results → 72 |  |
| 74 | **Iteration III** | 2004-12-21 → 2004-12-29 (+8d) | 2005-01-25 → 2005-02-01 (+7d) | 26d → 24d |  | 29d → 24d | none → 50 |  |
| 75 | Iteration Plan | 2004-12-21 → 2004-12-30 (+9d) | 2004-12-21 → 2004-12-30 (+9d) |  |  | 39d → 24d |  | resources Kunal → none |
| 76 | **Prototype (Reference Implementation)** | 2004-12-22 → 2004-12-29 (+7d) | 2005-01-25 → 2005-02-01 (+7d) | 25d → 24d |  | 29d → 24d |  |  |
| 77 | **Implementation** | 2004-12-22 → 2004-12-29 (+7d) | 2005-01-11 → 2005-02-01 (+21d) | 15d → 24d |  | 39d → 24d |  |  |
| 78 | **Demo Application** | 2004-12-22 → 2004-12-29 (+7d) | 2005-01-11 → 2005-02-01 (+21d) | 15d → 24d |  | 39d → 24d |  |  |
| 80 | Integrate Authentication | 2004-12-22 → 2004-12-31 (+9d) | 2004-12-28 → 2005-01-06 (+9d) |  |  | 39d → 24d |  | resources Kunal → Vinay; Brian |
| 81 | User Interface | 2004-12-29 → 2005-01-07 (+9d) | 2005-01-11 → 2005-01-25 (+14d) | 10d → 13d |  | 39d → 24d |  | resources Eric → Vinay; Brian |
| 82 | Integrate Authorization | 2004-12-31 → 2005-01-26 (+26d) | 2005-01-06 → 2005-02-01 (+26d) |  |  | 42d → 24d | 50 → 81 | resources Kunal → Vinay; Brian |
| 85 | **Iteration IV** |  | 2005-02-16 → 2005-02-10 (-6d) | 88d → 84d | 22% → 32% | 13d → 17d |  |  |
| 87 | **User Provisioning** |  | 2005-02-16 → 2005-02-10 (-6d) | 86d → 82d | 23% → 32% | 13d → 17d |  |  |
| 98 | **Implementation** |  | 2005-01-05 → 2005-01-19 (+14d) | 28d → 38d | 14% → 26% | 43d → 33d |  |  |
| 105 | Create Protection Elements | 2004-12-21 A | 2004-12-22 A |  | 0% → 100% | 49.75d → none |  |  |
| 106 | Modify Protection Elements | 2004-12-22 A | 2004-12-23 A |  | 0% → 100% | 49.75d → none |  | resources Brian; Vinay → Brian [133.3%]; Vinay |
| 107 | Create Protection Group | 2004-12-23 A | 2004-12-24 A |  | 0% → 100% | 49.75d → none |  | resources Brian; Vinay → Brian [33.3%]; Vinay |
| 108 | Modify Protection Group | 2004-12-24 A | 2004-12-27 A |  | 0% → 100% | 49.75d → none |  | resources Brian; Vinay → Brian [11.1%]; Vinay |
| 109 | Assign Protection Elements to Groups | 2004-12-27 A | 2004-12-28 A |  | 0% → 100% | 49.75d → none |  | resources Brian; Vinay → Brian [33.3%]; Vinay |
| 110 | Assign Protection Elements to Users | 2005-01-04 A | 2005-01-04 A |  | 0% → 100% | 43d → none |  |  |
| 111 | Assign Protection Group to User Roles | 2005-01-05 A | 2005-01-05 A |  | 0% → 100% | 43d → none |  |  |
| 112 | **Struts Interface** | 2004-12-03 A | 2005-01-05 → 2005-01-14 (+9d) | 24d → 31d | 0% → 12% | 43d → 12d |  |  |
| 114 | Develop Struts Actions, Forms, Config, Validation | 2004-12-06 A | 2004-12-31 → 2005-01-14 (+14d) | 20d → 30d | 0% → 20% | 43d → 12d |  | was named Develop Struts Actions, Forms, Config; constraint finish no earlier than 2004-12-31 → finish no earlier than 2005-01-14; resources Kunal; Eric → Kunal |
| 115 | Code Reviews (Onging Task) | 2004-12-06 → 2004-11-30 (-6d) |  | 23d → 27d |  | 37d → 43d |  |  |
| 116 | **Testing** | 2005-01-06 → 2005-01-14 (+8d) | 2005-01-13 → 2005-01-19 (+6d) | 6d → 3d |  | 37d → 12d |  | was named Unit Testing |
| 117 | Unit Testing Complete | 2005-01-06 → 2005-01-14 (+8d) | 2005-01-10 → 2005-01-14 (+4d) | 3d → 0d |  | 37d → 12d | 115 → 112, 114 | was named Perform Testing; resources Eric → Kunal |
| 118 | **Integration Testing** | 2005-01-12 → 2005-01-17 (+5d) | 2005-01-12 → 2005-01-19 (+7d) | 1d → 3d |  | 37d → 12d | Evaluate Results → 117 | resources Brian → none |
| 121 | User Working Group Review | 2005-01-13 → 2005-01-20 (+7d) | 2005-01-13 → 2005-01-20 (+7d) |  |  | 37d → 32d | 118 → 120 |  |
| 126 | User Guide | 2005-02-01 → 2005-01-26 (-6d) | 2005-02-16 → 2005-02-10 (-6d) |  |  | 13d → 17d | none → 122 | constraint start no earlier than 2005-02-01 → start no earlier than 2005-01-21; resources Brian; Eric → Eric |
| 128 | **Iteration I** |  | 2005-02-08 → 2005-03-01 (+21d) | 21.5d → 36.5d |  | 19.5d → 4.5d |  |  |
| 131 | **Integration Pilot (Release One)** |  | 2005-02-08 → 2005-03-01 (+21d) | 19.5d → 34.5d |  | 19.5d → 4.5d |  |  |
| 138 | Apply Needed Enhancements |  | 2005-02-08 → 2005-03-01 (+21d) |  |  | 19.5d → 4.5d |  |  |

## Version 3 (saved 2004-12-30, file NCICBSecurityService.mpp)

Note of the change: Updated from meeting with Charles

Last finish stays 2005-03-07. Complete tasks 62 → 63.

Added:

| ID | Task | Duration | Start | Finish | Predecessors | Constraint | Resources |
| --- | --- | --- | --- | --- | --- | --- | --- |
| 50 | Iteration I Complete | 0d | 2004-09-26 A | 2004-09-26 |  |  |  |
| 72 | Iteration II Complete | 0d | 2004-12-21 | 2004-12-21 |  | start no earlier than 2004-12-21 |  |
| 81 | Finish User Interface | 4d | 2005-01-20 | 2005-01-25 | 122 |  | Vinay; Brian |
| 85 | Iteration III Complete | 0d | 2005-01-28 | 2005-01-28 |  | start no earlier than 2005-01-28 |  |
| 122 | **Integration Testing Authorization** | 3d | 2005-01-17 | 2005-01-19 | 118, 80 |  |  |
| 123 | Testing | 1d | 2005-01-17 | 2005-01-17 |  |  | Vinay |
| 124 | Defect Fixes | 2d | 2005-01-18 | 2005-01-19 | 123 |  | Vinay |
| 131 | Iteration IV Complete | 0d | 2005-01-14 | 2005-01-14 |  | start no earlier than 2005-01-14 |  |
| 144 | Iteration I Complete | 0d | 2005-02-15 | 2005-02-15 |  | start no earlier than 2005-02-15 |  |
| 148 | Iteration II Complete | 0d | 2005-02-28 | 2005-02-28 |  | start no earlier than 2005-02-28 |  |

Removed: 71 Testing; 72 Integration Test Plan; 73 Integration Testing

Changed:

| ID | Task | Start | Finish | Duration | Complete | Total float | Predecessors | Other |
| --- | --- | --- | --- | --- | --- | --- | --- | --- |
| 24 | **Construction** | 2004-10-18 A → 2004-09-26 A (-22d) |  | 84d → 99d | 47% → 46% |  |  |  |
| 25 | **Iteration I** | 2004-10-26 A → 2004-09-26 A (-30d) |  | 19d → 40d | 84% → 87% |  |  |  |
| 26 | Iteration Plan | 2004-10-26 A | 2004-10-26 A |  | 0% → 100% | 94d → none |  |  |
| 51 | **Iteration II** |  | 2004-12-29 → 2004-12-24 (-5d) | 27d → 23.5d | 92% → 98% | 24d → 51.5d |  |  |
| 53 | **Authorization** |  | 2004-12-29 → 2004-12-24 (-5d) | 27d → 23.5d | 92% → 98% | 24d → 51.5d |  |  |
| 73 | **Iteration III** | 2004-12-29 → 2004-09-26 (-94d) |  | 24d → 92d |  | 24d → 13.5d | 51 → none |  |
| 74 | Iteration Plan | 2004-12-30 → 2004-12-21 (-9d) | 2004-12-30 → 2004-12-21 (-9d) |  |  | 24d → 17.5d |  |  |
| 75 | **Prototype (Reference Implementation)** | 2004-12-29 → 2004-09-26 (-94d) |  | 24d → 92d |  | 24d → 13.5d |  |  |
| 76 | **Implementation** | 2004-12-29 → 2004-09-26 (-94d) |  | 24d → 92d |  | 24d → 13.5d |  |  |
| 77 | **Demo Application** | 2004-12-29 → 2004-09-26 (-94d) |  | 24d → 92d |  | 24d → 13.5d |  |  |
| 78 | Use Case Development | 2004-12-29 → 2004-09-26 (-94d) | 2004-12-29 → 2004-09-26 (-94d) |  |  | 48d → 105.5d |  |  |
| 79 | Integrate Authentication | 2004-12-31 → 2004-12-22 (-9d) | 2005-01-06 → 2005-01-03 (-3d) | 5d → 9d |  | 24d → 13.5d |  |  |
| 80 | User Interface | 2005-01-07 → 2005-01-04 (-3d) | 2005-01-25 → 2005-01-14 (-11d) | 13d → 9d |  | 24d → 13.5d |  |  |
| 82 | Integrate Authorization |  |  |  |  | 24d → 13.5d | 80 → 81 |  |
| 84 | User Guide |  |  |  |  | 29d → 18.5d |  | resources Vinay → Vinay; Eric |
| 86 | **Iteration IV** |  |  |  | 32% → 31% |  |  |  |
| 133 | **Iteration I** |  | 2005-03-01 → 2005-02-16 (-13d) | 36.5d → 27.5d |  | 4.5d → 11d |  |  |
| 136 | **Integration Pilot (Release One)** | 2005-01-12 → 2005-01-20 (+8d) | 2005-03-01 → 2005-02-16 (-13d) | 34.5d → 19.5d |  | 4.5d → 3d |  |  |
| 137 | **Client Implementation** | 2005-01-12 → 2005-01-20 (+8d) | 2005-01-24 → 2005-02-01 (+8d) |  |  | 15d → 3d | none → 119 |  |
| 138 | Design | 2005-01-12 → 2005-01-20 (+8d) | 2005-01-13 → 2005-01-21 (+8d) |  |  | 15d → 3d |  |  |
| 139 | Development | 2005-01-14 → 2005-01-24 (+10d) | 2005-01-20 → 2005-01-28 (+8d) |  |  | 15d → 3d |  |  |
| 140 | Testing | 2005-01-21 → 2005-01-31 (+10d) | 2005-01-24 → 2005-02-01 (+8d) |  |  | 30d → 3d |  |  |
| 141 | Integration Testing | 2005-01-25 → 2005-02-02 (+8d) | 2005-01-31 → 2005-02-08 (+8d) |  |  | 19.5d → 13.5d | none → 140, 73 |  |
| 142 | Evaluate Results | 2005-02-01 → 2005-02-09 (+8d) | 2005-02-01 → 2005-02-09 (+8d) |  |  | 19.5d → 13.5d |  |  |
| 143 | Apply Needed Enhancements | 2005-02-01 → 2005-02-09 (+8d) | 2005-03-01 → 2005-02-16 (-13d) |  |  | 4.5d → 13.5d |  | resources Kunal → Vinay |
| 145 | **Iteration II** |  | 2005-02-23 → 2005-02-28 (+5d) | 7d → 9d |  | 8d → 6d |  |  |

## Version 4 (saved 2005-01-06, file NCICBSecurityService.mpp)

Note of the change: *** empty log message ***

Last finish stays 2005-03-07.

Added:

| ID | Task | Duration | Start | Finish | Predecessors | Constraint | Resources |
| --- | --- | --- | --- | --- | --- | --- | --- |
| 81 | Web Page | 10d | 2005-01-04 | 2005-01-17 |  |  | Eric; Brian |
| 82 | domain/persistance | 8d | 2005-01-04 | 2005-01-13 |  |  |  |
| 127 | Presentation Dry Run | 3d | 2005-01-21 | 2005-01-25 | 124 | start no earlier than 2005-01-14 | JJ |

Changed:

| ID | Task | Start | Finish | Duration | Complete | Total float | Predecessors | Other |
| --- | --- | --- | --- | --- | --- | --- | --- | --- |
| 1 | **Security Module (Release One)** |  |  |  | 50% → 56% |  |  |  |
| 24 | **Construction** |  | 2005-02-10 → 2005-02-11 (+1d) | 99d → 100d | 46% → 56% | 17d → 16d |  |  |
| 73 | **Iteration III** | 2004-09-26 → 2004-12-21 (+86d) | 2005-02-01 → 2005-02-02 (+1d) | 92d → 32d |  | 13.5d → 12.5d |  |  |
| 75 | **Prototype (Reference Implementation)** | 2004-09-26 → 2004-12-22 (+87d) | 2005-02-01 → 2005-02-02 (+1d) | 92d → 31d |  | 13.5d → 12.5d |  |  |
| 76 | **Implementation** | 2004-09-26 → 2004-12-22 (+87d) | 2005-02-01 → 2005-02-02 (+1d) | 92d → 31d |  | 13.5d → 12.5d |  |  |
| 77 | **Demo Application** | 2004-09-26 → 2004-12-22 (+87d) | 2005-02-01 → 2005-02-02 (+1d) | 92d → 31d |  | 13.5d → 12.5d |  |  |
| 78 | Use Case Development | 2004-09-26 → 2005-01-07 (+103d) | 2004-09-26 → 2005-01-07 (+103d) | 0d → 1d |  | 105.5d → 30.5d |  | constraint none → start no earlier than 2005-01-07 |
| 80 | **User Interface** |  | 2005-01-14 → 2005-01-17 (+3d) | 9d → 10d |  | 13.5d → 12.5d |  |  |
| 83 | Finish User Interface | 2005-01-20 → 2005-01-21 (+1d) | 2005-01-25 → 2005-01-26 (+1d) |  |  | 13.5d → 12.5d |  |  |
| 84 | Integrate Authorization | 2005-01-26 → 2005-01-27 (+1d) | 2005-02-01 → 2005-02-02 (+1d) |  |  | 13.5d → 12.5d |  |  |
| 88 | **Iteration IV** |  | 2005-02-10 → 2005-02-11 (+1d) | 84d → 85d | 31% → 51% | 17d → 16d |  |  |
| 90 | **User Provisioning** |  | 2005-02-10 → 2005-02-11 (+1d) | 82d → 83d | 32% → 52% | 17d → 16d |  |  |
| 101 | **Implementation** |  | 2005-01-19 → 2005-01-20 (+1d) | 38d → 39d | 26% → 54% | 33d → 32d |  |  |
| 115 | **Struts Interface** |  |  |  | 12% → 73% |  |  |  |
| 116 | Design HTML/JSP Pages | 2004-12-03 A |  |  | 0% → 85% |  |  |  |
| 117 | Develop Struts Actions, Forms, Config, Validation |  |  |  | 20% → 65% |  |  |  |
| 119 | **Testing** |  | 2005-01-19 → 2005-01-20 (+1d) | 3d → 4d |  |  |  |  |
| 124 | **Integration Testing Authorization** | 2005-01-17 → 2005-01-18 (+1d) | 2005-01-19 → 2005-01-20 (+1d) |  |  | 13.5d → 12.5d |  |  |
| 125 | Testing | 2005-01-17 → 2005-01-18 (+1d) | 2005-01-17 → 2005-01-18 (+1d) |  |  | 13.5d → 12.5d |  |  |
| 126 | Defect Fixes | 2005-01-18 → 2005-01-19 (+1d) | 2005-01-19 → 2005-01-20 (+1d) |  |  | 13.5d → 12.5d |  |  |
| 128 | User Working Group Review | 2005-01-20 → 2005-01-27 (+7d) | 2005-01-20 → 2005-01-27 (+7d) |  |  | 32d → 27d | 123 → 123, 127 | constraint none → start no earlier than 2005-01-27 |
| 129 | **Load Testing** | 2005-01-20 → 2005-01-21 (+1d) | 2005-01-25 → 2005-01-26 (+1d) |  |  | 17d → 16d |  |  |
| 130 | Configuration | 2005-01-20 → 2005-01-21 (+1d) | 2005-01-21 → 2005-01-24 (+3d) |  |  | 17d → 16d |  |  |
| 131 | Testing | 2005-01-24 → 2005-01-25 (+1d) | 2005-01-25 → 2005-01-26 (+1d) |  |  | 17d → 16d |  |  |
| 132 | **Documentation** | 2005-01-26 → 2005-01-27 (+1d) | 2005-02-10 → 2005-02-11 (+1d) |  |  | 17d → 16d |  |  |
| 133 | User Guide | 2005-01-26 → 2005-01-27 (+1d) | 2005-02-10 → 2005-02-11 (+1d) |  |  | 17d → 16d |  |  |
| 136 | **Iteration I** |  | 2005-02-16 → 2005-02-17 (+1d) | 27.5d → 28.5d |  |  |  |  |
| 139 | **Integration Pilot (Release One)** |  | 2005-02-16 → 2005-02-17 (+1d) | 19.5d → 20.5d |  |  |  |  |
| 144 | Integration Testing | 2005-02-02 → 2005-02-03 (+1d) | 2005-02-08 → 2005-02-09 (+1d) |  |  | 13.5d → 12.5d |  |  |
| 145 | Evaluate Results | 2005-02-09 → 2005-02-10 (+1d) | 2005-02-09 → 2005-02-10 (+1d) |  |  | 13.5d → 12.5d |  |  |
| 146 | Apply Needed Enhancements | 2005-02-09 → 2005-02-10 (+1d) | 2005-02-16 → 2005-02-17 (+1d) |  |  | 13.5d → 12.5d |  |  |

## Version 5 (saved 2005-01-13, file NCICBSecurityService.mpp)

Note of the change: *** empty log message ***

Last finish stays 2005-03-07. Complete tasks 63 → 64.

Removed: 83 Finish User Interface; 87 Iteration III Complete

Changed:

| ID | Task | Start | Finish | Duration | Complete | Total float | Predecessors | Other |
| --- | --- | --- | --- | --- | --- | --- | --- | --- |
| 1 | **Security Module (Release One)** |  |  |  | 56% → 67% |  |  |  |
| 24 | **Construction** |  | 2005-02-11 → 2005-02-16 (+5d) | 100d → 103d | 56% → 72% | 16d → 13d |  |  |
| 73 | **Iteration III** | 2004-12-21 A | 2005-02-02 → 2005-01-31 (-2d) | 32d → 30d | 0% → 26% | 12.5d → 14.5d |  |  |
| 75 | **Prototype (Reference Implementation)** | 2004-12-22 A | 2005-02-02 → 2005-01-31 (-2d) | 31d → 29d | 0% → 26% | 12.5d → 14.5d |  |  |
| 76 | **Implementation** | 2004-12-22 A | 2005-02-02 → 2005-01-27 (-6d) | 31d → 27d | 0% → 30% | 12.5d → 16.5d |  |  |
| 77 | **Demo Application** | 2004-12-22 A | 2005-02-02 → 2005-01-27 (-6d) | 31d → 27d | 0% → 30% | 12.5d → 16.5d |  |  |
| 78 | Use Case Development | 2005-01-07 A | 2005-01-07 A |  | 0% → 100% | 30.5d → none |  |  |
| 80 | **User Interface** | 2005-01-04 A | 2005-01-17 → 2005-01-20 (+3d) | 10d → 13d | 0% → 50% | 12.5d → 13d |  |  |
| 81 | Develop Struts Actions, Forms, Config, Validation | 2005-01-04 A |  |  | 0% → 50% | 12.5d → 16d |  | was named Web Page |
| 82 | domain/persistance | 2005-01-04 → 2005-01-11 A (+7d) | 2005-01-13 → 2005-01-20 (+7d) |  | 0% → 50% | 14.5d → 13d |  | constraint none → finish no earlier than 2005-01-20 |
| 83 | Integrate Authorization | 2005-01-27 → 2005-01-21 (-6d) | 2005-02-02 → 2005-01-27 (-6d) |  |  | 12.5d → 16.5d | Finish User Interface → none | constraint none → start no earlier than 2005-01-21 |
| 84 | **Documentation** | 2005-01-19 → 2005-01-25 (+6d) | 2005-01-25 → 2005-01-31 (+6d) |  |  | 18.5d → 14.5d |  |  |
| 85 | User Guide | 2005-01-19 → 2005-01-25 (+6d) | 2005-01-25 → 2005-01-31 (+6d) |  |  | 18.5d → 14.5d |  | constraint start no earlier than 2005-01-19 → finish no earlier than 2005-01-31 |
| 86 | **Iteration IV** |  | 2005-02-11 → 2005-02-16 (+5d) | 85d → 88d | 51% → 72% | 16d → 13d |  |  |
| 88 | **User Provisioning** |  | 2005-02-11 → 2005-02-16 (+5d) | 83d → 86d | 52% → 73% | 16d → 13d |  |  |
| 99 | **Implementation** |  | 2005-01-20 → 2005-01-25 (+5d) | 39d → 42d | 54% → 82% | 32d → 29d |  |  |
| 113 | **Struts Interface** |  |  |  | 73% → 90% | 3d → 0d |  |  |
| 114 | Design HTML/JSP Pages |  |  |  | 85% → 90% | 14d → 11d |  |  |
| 115 | Develop Struts Actions, Forms, Config, Validation |  |  |  | 65% → 90% | 3d → 0d |  |  |
| 116 | Code Reviews (Onging Task) | 2004-11-30 A |  |  | 0% → 80% |  |  |  |
| 117 | **Testing** | 2005-01-14 A | 2005-01-20 → 2005-01-25 (+5d) | 4d → 7d |  | 3d → 13d |  |  |
| 118 | Unit Testing Complete | 2005-01-14 A |  |  | 0% → 70% |  |  |  |
| 122 | **Integration Testing Authorization** | 2005-01-18 → 2005-01-21 (+3d) | 2005-01-20 → 2005-01-25 (+5d) |  |  | 12.5d → 13d |  |  |
| 123 | Testing | 2005-01-18 → 2005-01-21 (+3d) | 2005-01-18 → 2005-01-21 (+3d) |  |  | 12.5d → 13d |  |  |
| 124 | Defect Fixes | 2005-01-19 → 2005-01-24 (+5d) | 2005-01-20 → 2005-01-25 (+5d) |  |  | 12.5d → 13d |  |  |
| 125 | Presentation Dry Run | 2005-01-21 → 2005-01-26 (+5d) | 2005-01-25 → 2005-01-28 (+3d) |  |  | 28d → 25d |  |  |
| 126 | User Working Group Review | 2005-01-27 → 2005-01-31 (+4d) | 2005-01-27 → 2005-01-31 (+4d) |  |  | 27d → 25d |  |  |
| 127 | **Load Testing** | 2005-01-21 → 2005-01-26 (+5d) | 2005-01-26 → 2005-01-31 (+5d) |  |  | 16d → 13d |  |  |
| 128 | Configuration | 2005-01-21 → 2005-01-26 (+5d) | 2005-01-24 → 2005-01-27 (+3d) |  |  | 16d → 13d |  |  |
| 129 | Testing | 2005-01-25 → 2005-01-28 (+3d) | 2005-01-26 → 2005-01-31 (+5d) |  |  | 16d → 13d |  |  |
| 130 | **Documentation** | 2005-01-27 → 2005-02-01 (+5d) | 2005-02-11 → 2005-02-16 (+5d) |  |  | 16d → 13d |  |  |
| 131 | User Guide | 2005-01-27 → 2005-02-01 (+5d) | 2005-02-11 → 2005-02-16 (+5d) |  |  | 16d → 13d |  |  |
| 134 | **Iteration I** |  | 2005-02-17 → 2005-02-16 (-1d) | 28.5d → 27.5d |  |  |  |  |
| 137 | **Integration Pilot (Release One)** |  | 2005-02-17 → 2005-02-16 (-1d) | 20.5d → 19.5d |  |  |  |  |
| 142 | Integration Testing | 2005-02-03 → 2005-02-02 (-1d) | 2005-02-09 → 2005-02-08 (-1d) |  |  | 12.5d → 13.5d |  |  |
| 143 | Evaluate Results | 2005-02-10 → 2005-02-09 (-1d) | 2005-02-10 → 2005-02-09 (-1d) |  |  | 12.5d → 13.5d |  |  |
| 144 | Apply Needed Enhancements | 2005-02-10 → 2005-02-09 (-1d) | 2005-02-17 → 2005-02-16 (-1d) |  |  | 12.5d → 13.5d |  |  |

## Version 6 (saved 2005-01-20, file NCICBSecurityService.mpp)

Note of the change: *** empty log message ***

Last finish stays 2005-03-07.

Changed:

| ID | Task | Start | Finish | Duration | Complete | Total float | Predecessors | Other |
| --- | --- | --- | --- | --- | --- | --- | --- | --- |
| 1 | **Security Module (Release One)** |  |  |  | 67% → 68% |  |  |  |
| 24 | **Construction** |  |  |  | 72% → 74% |  |  |  |
| 73 | **Iteration III** |  |  |  | 26% → 42% |  |  |  |
| 75 | **Prototype (Reference Implementation)** |  |  |  | 26% → 43% |  |  |  |
| 76 | **Implementation** |  |  |  | 30% → 47% |  |  |  |
| 77 | **Demo Application** |  |  |  | 30% → 47% |  |  |  |
| 80 | **User Interface** |  |  |  | 50% → 80% |  |  |  |
| 81 | Develop Struts Actions, Forms, Config, Validation |  |  |  | 50% → 80% |  |  |  |
| 82 | domain/persistance |  |  |  | 50% → 80% |  |  |  |
| 84 | **Documentation** | 2005-01-25 A |  |  | 0% → 20% |  |  |  |
| 85 | User Guide | 2005-01-25 A |  |  | 0% → 20% |  |  |  |
| 119 | **Integration Testing** | 2005-01-17 → 2005-01-21 (+4d) | 2005-01-19 → 2005-01-25 (+6d) |  |  | 3d → 1d |  |  |
| 120 | Testing | 2005-01-17 → 2005-01-21 (+4d) | 2005-01-19 → 2005-01-25 (+6d) |  |  | 3d → 1d |  | constraint none → start no earlier than 2005-01-21 |
| 121 | Defect Fixes | 2005-01-17 → 2005-01-21 (+4d) | 2005-01-19 → 2005-01-25 (+6d) |  |  | 3d → 1d |  | constraint none → start no earlier than 2005-01-21 |
| 134 | **Iteration I** |  | 2005-02-16 → 2005-02-18 (+2d) | 27.5d → 29.5d |  | 11d → 11.5d |  |  |
| 137 | **Integration Pilot (Release One)** | 2005-01-20 → 2005-01-26 (+6d) | 2005-02-16 → 2005-02-18 (+2d) | 19.5d → 17.5d |  | 3d → 1d |  |  |
| 138 | **Client Implementation** | 2005-01-20 → 2005-01-26 (+6d) | 2005-02-01 → 2005-02-03 (+2d) | 9d → 7d |  | 3d → 1d |  |  |
| 139 | Design | 2005-01-20 → 2005-01-26 (+6d) | 2005-01-21 → 2005-01-27 (+6d) |  |  | 3d → 27d |  |  |
| 140 | Development | 2005-01-24 → 2005-01-26 (+2d) | 2005-01-28 → 2005-02-01 (+4d) |  |  | 3d → 1d | 139 → none |  |
| 141 | Testing | 2005-01-31 → 2005-02-02 (+2d) | 2005-02-01 → 2005-02-03 (+2d) |  |  | 3d → 1d |  |  |
| 142 | Integration Testing | 2005-02-02 → 2005-02-04 (+2d) | 2005-02-08 → 2005-02-10 (+2d) |  |  | 13.5d → 11.5d |  |  |
| 143 | Evaluate Results | 2005-02-09 → 2005-02-11 (+2d) | 2005-02-09 → 2005-02-11 (+2d) |  |  | 13.5d → 11.5d |  |  |
| 144 | Apply Needed Enhancements | 2005-02-09 → 2005-02-11 (+2d) | 2005-02-16 → 2005-02-18 (+2d) |  |  | 13.5d → 11.5d |  |  |

## Version 7 (saved 2005-01-21, file NCICBSecurityService.mpp)

Note of the change: *** empty log message ***

Last finish stays 2005-03-07.

Added:

| ID | Task | Duration | Start | Finish | Constraint | Resources |
| --- | --- | --- | --- | --- | --- | --- |
| 135 | **Documentation** | 23d | 2005-01-21 | 2005-02-22 |  |  |
| 137 | Java Docs | 6d | 2005-01-24 | 2005-01-31 | start no earlier than 2005-01-24 | Kunal |
| 138 | UPT User Guide | 4d | 2005-02-07 | 2005-02-10 | start no earlier than 2005-02-07 | Eric |

Changed:

| ID | Task | Start | Finish | Duration | Complete | Total float | Predecessors | Other |
| --- | --- | --- | --- | --- | --- | --- | --- | --- |
| 24 | **Construction** |  |  |  | 74% → 73% |  |  |  |
| 73 | **Iteration III** |  | 2005-01-31 → 2005-02-07 (+7d) | 30d → 35d | 42% → 40% | 14.5d → 9.5d |  |  |
| 75 | **Prototype (Reference Implementation)** |  | 2005-01-31 → 2005-02-07 (+7d) | 29d → 34d | 43% → 41% | 14.5d → 9.5d |  |  |
| 84 | **Documentation** |  | 2005-01-31 → 2005-02-07 (+7d) | 5d → 10d | 20% → 15% | 14.5d → 9.5d |  |  |
| 85 | User Guide (RI) |  | 2005-01-31 → 2005-02-07 (+7d) | 5d → 6.7d | 20% → 15% | 14.5d → 9.5d |  | was named User Guide; constraint finish no earlier than 2005-01-31 → finish no earlier than 2005-02-07 |
| 133 | **Transition** | 2005-01-10 → 2005-01-21 (+11d) |  | 41d → 32d |  |  |  |  |
| 134 | **Iteration I** | 2005-01-10 → 2005-01-21 (+11d) | 2005-02-18 → 2005-02-22 (+4d) | 29.5d → 23d |  | 11.5d → 4d |  |  |
| 136 | Deployment Guide Document | 2005-01-10 → 2005-01-21 (+11d) | 2005-01-25 → 2005-01-24 (-1d) | 12d → 2d |  | 21d → 30d |  | was named System Integration Document; constraint start no earlier than 2005-01-10 → start no earlier than 2005-01-21; resources Vinay → Kunal; Eric |
| 139 | caCore Technical Guide | 2005-01-26 → 2005-02-11 (+16d) | 2005-02-04 → 2005-02-22 (+18d) |  |  | 21d → 9d | 136 → 138 |  |
| 140 | **Integration Pilot (Release One)** |  | 2005-02-18 → 2005-02-22 (+4d) | 17.5d → 19.5d |  |  |  |  |
| 145 | Integration Testing | 2005-02-04 → 2005-02-08 (+4d) | 2005-02-10 → 2005-02-14 (+4d) |  |  | 11.5d → 9.5d |  |  |
| 146 | Evaluate Results | 2005-02-11 → 2005-02-15 (+4d) | 2005-02-11 → 2005-02-15 (+4d) |  |  | 11.5d → 9.5d |  |  |
| 147 | Apply Needed Enhancements | 2005-02-11 → 2005-02-15 (+4d) | 2005-02-18 → 2005-02-22 (+4d) |  |  | 11.5d → 9.5d |  |  |

## Version 8 (saved 2005-01-27, file NCICBSecurityService.mpp)

Note of the change: *** empty log message ***

Last finish 2005-03-07 → 2005-03-23 (+16d). Complete tasks 64 → 75.

Added:

| ID | Task | Duration | Start | Finish | Predecessors | Constraint | Resources |
| --- | --- | --- | --- | --- | --- | --- | --- |
| 130 | API Load testing | 5d | 2005-03-01 | 2005-03-07 |  | start no earlier than 2005-03-01 | Viany; Brian |
| 137 | QA of BackEnd APIs (2 days Task) | 0d | 2005-01-22 A | 2005-01-23 A |  |  | Kunal |
| 141 | API Guide | 3d | 2005-02-14 | 2005-02-16 | 140 |  | Vinay |

Changed:

| ID | Task | Start | Finish | Duration | Complete | Total float | Predecessors | Other |
| --- | --- | --- | --- | --- | --- | --- | --- | --- |
| 1 | **Security Module (Release One)** |  | 2005-03-07 → 2005-03-23 (+16d) | 156d? → 167.5d? | 68% → 59% |  |  |  |
| 10 | **Elaboration** |  |  |  | 81% → 95% | 93d → 104.5d |  |  |
| 11 | **Iteration I** |  |  |  | 92% → 98% | 103d → 114.5d |  |  |
| 15 | **Finalize Requirements** |  | 2004-10-13 A |  | 50% → 100% | 103d → none |  |  |
| 16 | Stakeholder Sign Off | 2004-10-01 A | 2004-10-01 A |  | 0% → 100% | 111d → none |  |  |
| 18 | **Iteration II** |  |  |  | 73% → 93% | 93d → 104.5d |  |  |
| 20 | Software Architecture Document |  |  |  | 70% → 90% | 95d → 106.5d |  |  |
| 22 | Prioritize Risk List | 2004-10-26 A | 2004-10-26 A |  | 0% → 100% | 94d → none |  |  |
| 24 | **Construction** |  | 2005-02-16 → 2005-03-17 (+29d) | 103d → 124d | 73% → 58% | 13d → 3.5d |  |  |
| 43 | Junit Test Development |  |  |  |  | 81d → 92.5d |  | resources Kunal → Brian |
| 50 | Iteration I Complete |  |  |  | 41% → 99% | 116d → 127.5d |  |  |
| 73 | **Iteration III** |  | 2005-02-07 → 2005-02-24 (+17d) | 35d → 48d | 40% → 37% | 9.5d → 8d |  |  |
| 75 | **Prototype (Reference Implementation)** | 2004-12-22 A → 2005-01-04 A (+13d) | 2005-02-07 → 2005-02-24 (+17d) | 34d → 38d | 41% → 37% | 9.5d → 8d |  |  |
| 76 | **Implementation** | 2004-12-22 A → 2005-01-04 A (+13d) | 2005-01-27 → 2005-02-17 (+21d) | 27d → 33d | 47% → 58% | 16.5d → 13d |  |  |
| 77 | **Demo Application** | 2004-12-22 A → 2005-01-04 A (+13d) | 2005-01-27 → 2005-02-17 (+21d) | 27d → 33d | 47% → 58% | 16.5d → 13d |  |  |
| 79 | Integrate Authentication | 2004-12-22 → 2005-01-27 A (+36d) | 2005-01-03 → 2005-01-28 A (+25d) | 9d → 2d | 0% → 100% | 16.61d → none |  | constraint start no earlier than 2004-12-22 → finish no earlier than 2005-01-28 |
| 80 | **User Interface** |  | 2005-01-20 → 2005-02-01 A (+12d) | 13d → 21d | 80% → 100% | 13d → none |  |  |
| 81 | Develop Struts Actions, Forms, Config, Validation |  | 2005-01-17 → 2005-02-01 A (+15d) |  | 80% → 100% | 16d → none |  |  |
| 82 | domain/persistance |  | 2005-01-20 → 2005-02-01 A (+12d) |  | 80% → 100% | 13d → none |  |  |
| 83 | Integrate Authorization | 2005-01-21 → 2005-01-28 (+7d) | 2005-01-27 → 2005-02-17 (+21d) | 5d → 15d |  | 16.5d → 13d |  | constraint start no earlier than 2005-01-21 → start no earlier than 2005-01-28 |
| 84 | **Documentation** |  | 2005-02-07 → 2005-02-24 (+17d) | 10d → 23d | 15% → 4% | 9.5d → 8d |  |  |
| 85 | User Guide (RI) |  | 2005-02-07 → 2005-02-24 (+17d) | 6.7d → 23d | 15% → 4% | 9.5d → 8d |  | constraint finish no earlier than 2005-02-07 → finish no earlier than 2005-02-24 |
| 86 | **Iteration IV** |  | 2005-02-16 → 2005-03-17 (+29d) | 88d → 109d | 72% → 51% | 13d → 3.5d |  |  |
| 88 | **User Provisioning** |  | 2005-02-16 → 2005-03-17 (+29d) | 86d → 107d | 73% → 51% | 13d → 3.5d |  |  |
| 99 | **Implementation** |  | 2005-01-25 → 2005-02-04 (+10d) | 42d → 50d | 82% → 53% | 29d → 32.5d |  |  |
| 113 | **Struts Interface** |  | 2005-01-14 → 2005-02-04 (+21d) | 31d → 46d | 90% → 38% | 0d → 32.5d |  |  |
| 114 | Design HTML/JSP Pages |  | 2004-12-30 → 2005-02-04 (+36d) | 20d → 46d | 90% → 30% | 11d → 32.5d |  | constraint start no earlier than 2004-12-03 → none |
| 115 | Develop Struts Actions, Forms, Config, Validation |  | 2005-01-14 → 2005-02-04 (+21d) | 30d → 45d | 90% → 47% | 0d → 32.5d |  | constraint finish no earlier than 2005-01-14 → finish no earlier than 2005-02-04 |
| 116 | Code Reviews (Onging Task) |  |  |  | 80% → 85% | 43d → 54.5d |  |  |
| 117 | **Testing** |  | 2005-01-25 → 2005-02-04 (+10d) | 7d → 15d | 0% → 28% | 13d → 15d |  |  |
| 118 | Unit Testing Complete |  | 2005-01-14 A |  | 70% → 100% | 5d → none |  |  |
| 119 | **Integration Testing (UPT Only)** | 2005-01-21 A | 2005-01-25 → 2005-02-04 (+10d) | 3d → 11d | 0% → 18% | 1d → 15d |  | was named Integration Testing |
| 120 | Testing | 2005-01-21 A | 2005-01-25 → 2005-02-04 (+10d) | 3d → 11d | 0% → 16% | 1d → 15d |  | constraint start no earlier than 2005-01-21 → finish no earlier than 2005-02-04 |
| 121 | Defect Fixes | 2005-01-21 A | 2005-01-25 → 2005-02-04 (+10d) | 3d → 11d | 0% → 19% | 1d → 0d |  | constraint start no earlier than 2005-01-21 → finish no earlier than 2005-02-04 |
| 122 | **Integration Testing Authorization** | 2005-01-21 A | 2005-01-25 A |  | 0% → 100% | 13d → none |  |  |
| 123 | Testing | 2005-01-21 A | 2005-01-21 A |  | 0% → 100% | 13d → none |  | resources Vinay → Vinay; Kunal |
| 124 | Defect Fixes | 2005-01-24 A | 2005-01-25 A |  | 0% → 100% | 13d → none |  | resources Vinay → Vinay; Kunal |
| 125 | Presentation Dry Run | 2005-01-26 A | 2005-01-28 → 2005-01-27 A (-1d) | 3d → 1.5d | 0% → 100% | 25d → none |  | resources JJ → Vinay; Kunal |
| 126 | User Working Group Review | 2005-01-31 → 2005-02-07 A (+7d) | 2005-01-31 → 2005-02-28 A (+28d) | 1d → 0.5d | 0% → 100% | 25d → none |  | resources Brian → Brian; Vinay; Eric; Kunal |
| 127 | **Load Testing (RI)** | 2005-01-26 → 2005-02-07 (+12d) | 2005-01-31 → 2005-03-01 (+29d) | 4d → 17d |  | 13d → 3.5d |  | was named Load Testing |
| 128 | Configuration | 2005-01-26 → 2005-02-07 (+12d) | 2005-01-27 → 2005-02-08 (+12d) |  |  | 13d → 16.5d |  |  |
| 129 | Testing & Fixing if required | 2005-01-28 → 2005-02-09 (+12d) | 2005-01-31 → 2005-03-01 (+29d) | 2d → 4d |  | 13d → 3.5d |  | was named Testing; resources none → Eric; Kunal |
| 131 | **Documentation** | 2005-02-01 → 2005-03-02 (+29d) | 2005-02-16 → 2005-03-17 (+29d) |  |  | 13d → 3.5d |  |  |
| 132 | User Guide | 2005-02-01 → 2005-03-02 (+29d) | 2005-02-16 → 2005-03-17 (+29d) |  |  | 13d → 3.5d |  |  |
| 134 | **Transition** | 2005-01-21 A | 2005-03-07 → 2005-03-23 (+16d) | 32d → 43.5d | 0% → 6% |  |  |  |
| 135 | **Iteration I** | 2005-01-21 A | 2005-02-22 → 2005-03-23 (+29d) | 23d → 43.5d | 0% → 8% | 4d → 0d |  |  |
| 136 | **Documentation** | 2005-01-21 A | 2005-02-22 → 2005-02-17 (-5d) | 23d → 20d | 0% → 14% | 9d → 23.5d |  |  |
| 138 | Deployment Guide Document | 2005-01-21 A | 2005-01-24 → 2005-02-04 (+11d) | 2d → 11d | 0% → 5% | 30d → 23.5d |  | constraint start no earlier than 2005-01-21 → finish no earlier than 2005-02-04 |
| 139 | Java Docs | 2005-01-24 A | 2005-01-31 → 2005-01-27 (-4d) | 6d → 4d | 0% → 70% | 25d → 38.5d |  |  |
| 140 | UPT User Guide |  | 2005-02-10 → 2005-02-11 (+1d) | 4d → 5d |  | 9d → 23.5d | none → 138 | resources Eric → Eric; Vinay |
| 142 | Input to caCore Technical Guide | 2005-02-11 → 2005-02-17 (+6d) | 2005-02-22 → 2005-02-17 (-5d) | 8d → 1d |  | 9d → 23.5d | 140 → 141 | was named caCore Technical Guide; constraint none → finish no earlier than 2005-02-14 |
| 143 | **Integration Pilot (Release One)** | 2005-01-26 → 2005-02-07 (+12d) | 2005-02-22 → 2005-03-23 (+29d) | 19.5d → 32.5d |  | 1d → 0d |  |  |
| 144 | **Client Implementation** | 2005-01-26 → 2005-02-07 (+12d) | 2005-02-03 → 2005-03-08 (+33d) | 7d → 22d |  | 1d → 10.5d |  |  |
| 145 | Design | 2005-01-26 → 2005-02-07 (+12d) | 2005-01-27 → 2005-02-08 (+12d) |  |  | 27d → 30.5d |  |  |
| 146 | Development | 2005-01-26 → 2005-02-28 (+33d) | 2005-02-01 → 2005-03-04 (+31d) |  |  | 1d → 0d |  |  |
| 147 | Testing | 2005-02-02 → 2005-03-07 (+33d) | 2005-02-03 → 2005-03-08 (+33d) |  |  | 1d → 0d |  |  |
| 148 | Integration Testing | 2005-02-08 → 2005-03-09 (+29d) | 2005-02-14 → 2005-03-15 (+29d) |  |  | 9.5d → 0d |  |  |
| 149 | Evaluate Results | 2005-02-15 → 2005-03-16 (+29d) | 2005-02-15 → 2005-03-16 (+29d) |  |  | 9.5d → 0d |  |  |
| 150 | Apply Needed Enhancements | 2005-02-15 → 2005-03-16 (+29d) | 2005-02-22 → 2005-03-23 (+29d) |  |  | 9.5d → 0d |  |  |

## Version 9 (saved 2005-02-03, file NCICBSecurityService.mpp)

Note of the change: *** empty log message ***

Last finish stays 2005-03-23. Complete tasks 75 → 80.

Removed: 127 Load Testing (RI); 128 Configuration; 129 Testing & Fixing if required; 131 Documentation; 132 User Guide

Changed:

| ID | Task | Start | Finish | Duration | Complete | Total float | Predecessors | Other |
| --- | --- | --- | --- | --- | --- | --- | --- | --- |
| 1 | **Security Module (Release One)** |  |  |  | 59% → 80% |  |  |  |
| 24 | **Construction** |  | 2005-03-17 → 2005-02-28 (-17d) | 124d → 111d | 58% → 84% | 3.5d → 16.5d |  |  |
| 83 | Integrate Authorization |  |  |  |  |  |  | resources Vinay; Brian → Brian |
| 86 | **Iteration IV** |  | 2005-03-17 → 2005-02-28 (-17d) | 109d → 96d | 51% → 95% | 3.5d → 16.5d |  |  |
| 88 | **User Provisioning** |  | 2005-03-17 → 2005-02-28 (-17d) | 107d → 94d | 51% → 96% | 3.5d → 16.5d |  |  |
| 99 | **Implementation** |  |  |  | 53% → 99% | 32.5d → 0d |  |  |
| 113 | **Struts Interface** |  |  |  | 38% → 99% | 32.5d → 0d |  |  |
| 114 | Design HTML/JSP Pages |  | 2005-02-04 A |  | 30% → 100% | 32.5d → none |  |  |
| 115 | Develop Struts Actions, Forms, Config, Validation |  | 2005-02-04 A |  | 47% → 100% | 32.5d → none |  |  |
| 116 | Code Reviews (Onging Task) |  | 2005-01-05 A |  | 85% → 100% | 54.5d → none |  |  |
| 117 | **Testing** |  | 2005-02-04 A |  | 28% → 100% | 15d → none |  |  |
| 119 | **Integration Testing (UPT Only)** |  | 2005-02-04 A |  | 18% → 100% | 15d → none |  |  |
| 120 | Testing |  | 2005-02-04 A |  | 16% → 100% | 15d → none |  |  |
| 121 | Defect Fixes |  | 2005-02-04 A |  | 19% → 100% | 0d → none |  |  |
| 127 | API Load testing | 2005-03-01 → 2005-02-18 (-11d) | 2005-03-07 → 2005-02-28 (-7d) | 5d → 7d |  | 11.5d → 16.5d | none → 137 | constraint start no earlier than 2005-03-01 → start no earlier than 2005-02-18; resources Viany; Brian → Viany |
| 129 | **Transition** |  |  |  | 6% → 24% |  |  |  |
| 130 | **Iteration I** |  |  |  | 8% → 29% |  |  |  |
| 131 | **Documentation** |  |  |  | 14% → 52% |  |  |  |
| 133 | UPT Deployment Guide Document |  |  |  | 5% → 80% | 23.5d → 17.4d |  | was named Deployment Guide Document |
| 134 | Java Docs |  |  |  |  |  |  | resources Kunal → Kunal; Vinay |
| 136 | API Guide | 2005-02-14 A |  |  | 0% → 30% | 23.5d → 16.5d |  |  |

## Version 10 (saved 2005-02-17, file NCICBSecurityService.mpp)

Note of the change: Security Status meeting on Feb 17th 2005

Last finish stays 2005-03-23. Complete tasks 80 → 85.

Added:

| ID | Task | Duration | Start | Finish | Constraint | Resources |
| --- | --- | --- | --- | --- | --- | --- |
| 50 | Synch the EA Model | 1d? | 2004-09-27 | 2004-09-27 |  |  |
| 73 | Synch the EA Model | 1d? | 2004-12-02 | 2004-12-02 |  |  |
| 88 | Synch the EA Model | 1d | 2004-09-27 | 2004-09-27 |  |  |
| 131 | Synch the EA Model | 1d | 2004-09-27 | 2004-09-27 |  |  |
| 141 | csm Application developers guide | 10d | 2005-02-23 | 2005-03-08 | start no earlier than 2005-02-23 | Eric; Vinay |
| 151 | Synch the EA Model | 1d? | 2004-09-27 | 2004-09-27 |  | Vinay |
| 154 | Deploy UPT on QA | 2d | 2005-02-18 | 2005-02-21 | start no earlier than 2005-02-18 | Eric |
| 155 | Testing on QA | 5d | 2005-02-21 | 2005-02-25 | start no earlier than 2005-02-21 | Eric |
| 156 | Test on JBOSS 4 | 5d | 2005-02-21 | 2005-02-25 | start no earlier than 2005-02-21 | Vinay |
| 160 | Tag the CVS | 1d | 2004-09-27 | 2004-09-27 |  |  |

Changed:

| ID | Task | Start | Finish | Duration | Complete | Total float | Predecessors | Other |
| --- | --- | --- | --- | --- | --- | --- | --- | --- |
| 1 | **Security Module (Release One)** |  |  |  | 80% → 77% |  |  |  |
| 24 | **Construction** |  |  | 111d → 111d? | 84% → 83% |  |  |  |
| 25 | **Iteration I** |  |  | 40d → 40d? | 87% → 85% |  |  |  |
| 27 | **Authentication** | 2004-10-27 A → 2004-09-27 A (-30d) |  | 18d → 40d? | 87% → 84% |  |  |  |
| 45 | **Unit Testing** | 2004-11-16 A → 2004-09-27 A (-50d) | 2004-11-19 A → 2004-11-19 | 4d → 40d? | 100% → 80% | none → 87.5d |  |  |
| 52 | **Iteration II** |  |  | 23.5d → 23.5d? | 98% → 96% |  |  |  |
| 54 | **Authorization** |  |  | 23.5d → 23.5d? | 98% → 96% |  |  |  |
| 65 | **Implementation** |  |  | 23.5d → 23.5d? | 97% → 95% |  |  |  |
| 67 | **Authorization API** |  |  | 23.5d → 23.5d? | 96% → 93% |  |  |  |
| 69 | **develop run time API** |  |  | 16.5d → 16.5d? | 95% → 91% |  |  |  |
| 75 | **Iteration III** | 2004-12-21 A → 2004-09-27 A (-85d) |  | 48d → 109d | 37% → 36% |  |  |  |
| 77 | **Prototype (Reference Implementation)** | 2005-01-04 A → 2004-09-27 A (-99d) |  | 38d → 109d |  |  |  |  |
| 86 | **Documentation** | 2005-01-25 A → 2004-09-27 A (-120d) |  | 23d → 109d |  |  |  |  |
| 89 | **Iteration IV** | 2004-10-18 A → 2004-09-27 A (-21d) |  | 96d → 111d |  |  |  |  |
| 91 | **User Provisioning** | 2004-10-20 A → 2004-09-27 A (-23d) |  | 94d → 111d |  |  |  |  |
| 130 | API Load testing |  |  |  |  |  |  | resources Viany → Vinay |
| 133 | **Transition** | 2005-01-21 A → 2004-09-27 A (-116d) |  | 43.5d → 127.5d? | 24% → 31% |  |  |  |
| 134 | **Iteration I** | 2005-01-21 A → 2004-09-27 A (-116d) |  | 43.5d → 127.5d? | 29% → 44% |  |  |  |
| 135 | **Documentation** |  | 2005-02-17 → 2005-03-08 (+19d) | 20d → 33d | 52% → 71% | 23.5d → 10.5d |  |  |
| 137 | UPT Deployment Guide Document |  | 2005-02-04 A |  | 80% → 100% | 17.4d → none |  |  |
| 138 | Java Docs |  | 2005-01-27 A |  | 70% → 100% | 38.5d → none |  |  |
| 139 | UPT User Guide | 2005-02-07 A | 2005-02-11 A |  | 0% → 100% | 17.4d → none |  |  |
| 140 | API Guide |  | 2005-02-16 A |  | 30% → 100% | 16.5d → none |  |  |
| 142 | Input to caCore Technical Guide | 2005-02-17 A | 2005-02-17 A |  | 0% → 100% | 16.5d → none | 140 → 141 |  |
| 143 | **Integration Pilot (Release One)** | 2005-02-07 → 2004-09-27 (-133d) |  | 32.5d → 127.5d? |  |  |  |  |
| 153 | **Iteration II** | 2005-02-15 → 2004-09-27 (-141d) |  | 9d → 110d |  |  |  |  |

## Version 11 (saved 2005-02-28, file NCICBSecurityService.mpp)

Note of the change: *** empty log message ***

Last finish stays 2005-03-23. Complete tasks 85 → 89.

Changed:

| ID | Task | Start | Finish | Complete | Total float | Other |
| --- | --- | --- | --- | --- | --- | --- |
| 1 | **Security Module (Release One)** |  |  | 77% → 80% |  |  |
| 24 | **Construction** |  |  | 83% → 84% |  |  |
| 75 | **Iteration III** |  |  | 36% → 38% |  |  |
| 77 | **Prototype (Reference Implementation)** |  |  | 37% → 38% |  |  |
| 86 | **Documentation** |  |  | 4% → 8% |  |  |
| 88 | Synch the EA Model | 2004-09-27 A | 2004-09-27 A | 0% → 100% | 116d → none | resources none → Vinay |
| 133 | **Transition** |  |  | 31% → 47% |  |  |
| 153 | **Iteration II** | 2004-09-27 A |  | 0% → 57% |  |  |
| 154 | Deploy UPT on QA | 2005-02-18 A | 2005-02-21 A | 0% → 100% | 21.5d → none |  |
| 155 | Testing on QA | 2005-02-21 A | 2005-02-25 A | 0% → 100% | 17.5d → none |  |
| 156 | Test on JBOSS 4 | 2005-02-21 A | 2005-02-25 A | 0% → 100% | 17.5d → none |  |

## Version 12 (saved 2005-03-04, file NCICBSecurityService.mpp)

Note of the change: updated RI date

Last finish 2005-03-23 → 2005-04-11 (+19d). Complete tasks 89 → 91.

Changed:

| ID | Task | Start | Finish | Duration | Complete | Total float | Other |
| --- | --- | --- | --- | --- | --- | --- | --- |
| 1 | **Security Module (Release One)** |  | 2005-03-23 → 2005-04-11 (+19d) | 167.5d? → 180.5d? | 80% → 83% |  |  |
| 24 | **Construction** |  | 2005-02-28 → 2005-03-25 (+25d) | 111d? → 130d? |  | 16.5d → 10.5d |  |
| 75 | **Iteration III** |  | 2005-02-24 → 2005-03-25 (+29d) | 109d → 130d |  | 8d → 0d |  |
| 77 | **Prototype (Reference Implementation)** |  | 2005-02-24 → 2005-03-25 (+29d) | 109d → 130d |  | 8d → 0d |  |
| 78 | **Implementation** |  | 2005-02-17 → 2005-03-25 (+36d) | 33d → 59d |  | 13d → 0d |  |
| 79 | **Demo Application** |  | 2005-02-17 → 2005-03-25 (+36d) | 33d → 59d |  | 13d → 0d |  |
| 85 | Integrate Authorization | 2005-01-28 → 2005-03-07 (+38d) | 2005-02-17 → 2005-03-25 (+36d) |  |  | 13d → 0d | constraint start no earlier than 2005-01-28 → start no earlier than 2005-03-07; resources Brian → Brian; Vinay |
| 133 | **Transition** |  | 2005-03-23 → 2005-04-11 (+19d) | 127.5d? → 140.5d? | 47% → 67% |  |  |
| 134 | **Iteration I** |  | 2005-03-23 → 2005-04-11 (+19d) | 127.5d? → 140.5d? | 44% → 72% |  |  |
| 135 | **Documentation** |  |  |  | 71% → 94% |  |  |
| 141 | csm Application developers guide | 2005-02-23 A |  |  | 0% → 80% |  | resources Eric; Vinay → Eric; Vinay; Kunal |
| 143 | **Integration Pilot (Release One)** | 2004-09-27 A | 2005-03-23 → 2005-04-11 (+19d) | 127.5d? → 140.5d? | 0% → 34% |  |  |
| 144 | **Client Implementation (with c3pr)** | 2005-02-07 → 2005-02-25 A (+18d) |  | 22d → 8d | 0% → 78% | 10.5d → 5.5d | was named Client Implementation |
| 145 | Design | 2005-02-07 → 2005-02-25 A (+18d) | 2005-02-08 → 2005-02-28 A (+20d) |  | 0% → 100% | 30.5d → none |  |
| 146 | Development | 2005-02-28 A | 2005-03-04 A |  | 0% → 100% | 0d → none |  |
| 148 | Integration Testing | 2005-03-09 → 2005-03-28 (+19d) | 2005-03-15 → 2005-04-01 (+17d) |  |  |  |  |
| 149 | Evaluate Results | 2005-03-16 → 2005-04-04 (+19d) | 2005-03-16 → 2005-04-04 (+19d) |  |  |  |  |
| 150 | Apply Needed Enhancements | 2005-03-16 → 2005-04-04 (+19d) | 2005-03-23 → 2005-04-11 (+19d) |  |  |  |  |

## Version 13 (saved 2005-03-11, file NCICBSecurityService.mpp)

Note of the change: *** empty log message ***

Last finish 2005-04-11 → 2005-03-25 (-17d). Complete tasks 91 → 96.

Changed:

| ID | Task | Start | Finish | Duration | Complete | Total float | Predecessors | Other |
| --- | --- | --- | --- | --- | --- | --- | --- | --- |
| 1 | **Security Module (Release One)** |  | 2005-04-11 → 2005-03-25 (-17d) | 180.5d? → 170d? | 83% → 85% |  |  |  |
| 24 | **Construction** |  |  |  | 84% → 86% | 10.5d → 0d |  |  |
| 25 | **Iteration I** |  | 2004-11-19 A |  | 85% → 100% | 87.5d → none |  |  |
| 27 | **Authentication** |  | 2004-11-19 A |  | 84% → 100% | 87.5d → none |  |  |
| 37 | **Implementation** |  | 2004-11-15 A |  | 80% → 100% | 91.5d → none |  |  |
| 40 | **JAAS Authentication Modules** |  | 2004-11-15 A |  | 72% → 100% | 91.5d → none |  |  |
| 43 | Junit Test Development | 2004-11-09 A | 2004-11-12 A |  | 0% → 100% | 92.5d → none |  |  |
| 45 | **Unit Testing** |  | 2004-11-19 A |  | 80% → 100% | 87.5d → none |  |  |
| 50 | Synch the EA Model | 2004-09-27 A | 2004-09-27 A |  | 0% → 100% | 126.5d → none |  |  |
| 51 | Iteration I Complete |  | 2004-09-26 A |  | 99% → 100% | 127.5d → none |  |  |
| 52 | **Iteration II** |  |  |  | 96% → 98% | 63d → 65.5d |  |  |
| 54 | **Authorization** |  |  |  | 96% → 98% | 63d → 65.5d |  |  |
| 65 | **Implementation** |  |  |  | 95% → 97% | 63d → 65.5d |  |  |
| 67 | **Authorization API** |  |  |  | 93% → 96% | 63d → 65.5d |  |  |
| 69 | **develop run time API** |  |  |  | 91% → 95% | 63d → 65.5d |  |  |
| 73 | Synch the EA Model | 2004-12-02 A | 2004-12-02 A |  | 0% → 100% | 78.5d → none |  |  |
| 89 | **Iteration IV** |  | 2005-02-28 → 2005-03-16 (+16d) | 111d → 123d |  | 16.5d → 7d |  |  |
| 91 | **User Provisioning** |  | 2005-02-28 → 2005-03-16 (+16d) | 111d → 123d |  | 16.5d → 7d |  |  |
| 130 | API Load testing | 2005-02-18 → 2005-03-08 (+18d) | 2005-02-28 → 2005-03-16 (+16d) |  |  | 16.5d → 7d |  | constraint start no earlier than 2005-02-18 → start no earlier than 2005-03-08 |
| 131 | Synch the EA Model | 2004-09-27 A | 2004-09-27 A |  | 0% → 100% | 126.5d → none |  |  |
| 133 | **Transition** |  | 2005-04-11 → 2005-03-23 (-19d) | 140.5d? → 127.5d? |  | 0d → 2.5d |  |  |
| 134 | **Iteration I** |  | 2005-04-11 → 2005-03-23 (-19d) | 140.5d? → 127.5d? |  | 0d → 2.5d |  |  |
| 143 | **Integration Pilot (Release One)** |  | 2005-04-11 → 2005-03-23 (-19d) | 140.5d? → 127.5d? |  | 0d → 2.5d |  |  |
| 148 | Integration Testing | 2005-03-28 → 2005-03-09 (-19d) | 2005-04-01 → 2005-03-15 (-17d) |  |  | 0d → 2.5d | 147, 75 → 147 |  |
| 149 | Evaluate Results | 2005-04-04 → 2005-03-16 (-19d) | 2005-04-04 → 2005-03-16 (-19d) |  |  | 0d → 2.5d |  |  |
| 150 | Apply Needed Enhancements | 2005-04-04 → 2005-03-16 (-19d) | 2005-04-11 → 2005-03-23 (-19d) |  |  | 0d → 2.5d |  |  |
| 153 | **Iteration II** |  | 2005-02-28 → 2005-03-22 (+22d) | 110d → 127d |  | 17.5d → 3d |  |  |
| 157 | Staging | 2005-02-15 → 2005-03-16 (+29d) | 2005-02-21 → 2005-03-22 (+29d) |  |  | 21.5d → 3d |  | constraint start no earlier than 2005-02-15 → start no earlier than 2005-03-16 |
| 158 | Testing | 2005-02-21 → 2005-02-22 (+1d) | 2005-02-23 → 2005-02-24 (+1d) |  |  | 19.5d → 21d |  | constraint start no earlier than 2005-02-21 → start no earlier than 2005-02-22 |

## Version 14 (saved 2005-04-06, file NCICBSecurityService_phase3.mpp)

Note of the change: *** empty log message ***

Last finish 2005-03-25 → 2005-05-23 (+59d). Complete tasks 96 → 105.

Added:

| ID | Task | Duration | Start | Finish | Predecessors | Constraint | Resources |
| --- | --- | --- | --- | --- | --- | --- | --- |
| 4 | RI documentation | 7d | 2005-04-01 A | 2005-04-11 |  | finish no earlier than 2005-04-11 | Kunal; Eric |
| 10 | Update Detail task plan | 1d | 2005-04-29 | 2005-04-29 | 9 | start no earlier than 2005-04-11 | Vinay; Charles |
| 11 | A dot release modification | 5d | 2005-04-14 | 2005-04-20 | 5 |  | Vinay; Kunal |
| 14 | Prototype development | 20d | 2005-04-26 | 2005-05-23 |  | start no earlier than 2005-04-26 | Vinay; Kunal |

Removed: 8 Use Case Model

Changed:

| ID | Task | Start | Finish | Duration | Complete | Total float | Predecessors | Other |
| --- | --- | --- | --- | --- | --- | --- | --- | --- |
| 1 | **Security Module (Release four)** | 2004-08-02 A → 2004-09-26 A (+55d) | 2005-03-25 → 2005-05-23 (+59d) | 170d? → 171d? | 85% → 80% |  |  | was named Security Module (Release One) |
| 2 | **Inception** | 2004-08-02 A → 2005-04-01 A (+242d) | 2004-09-22 A → 2005-04-29 (+219d) | 38d → 21d | 100% → 13% | none → 16d |  |  |
| 3 | Phase 3 Evaluation | 2004-08-02 A → 2005-04-04 A (+245d) | 2004-08-10 A → 2005-04-12 (+245d) |  | 100% → 50% | none → 11d |  | was named Phase I Evaluation; resources Vinay; Brian → Vinay |
| 5 | CM configuration | 2004-08-09 A → 2005-04-12 (+246d) | 2004-08-24 A → 2005-04-13 (+232d) | 12d → 2d | 100% → 0% | none → 16d | none → 4 | was named Interview NCICB Team Leads; constraint start no earlier than 2004-08-09 → start no earlier than 2005-04-07; resources Vinay; Brian → Vinay; Kunal |
| 6 | Scope and Vision Document | 2004-08-30 A → 2005-04-01 A (+214d) | 2004-09-10 A → 2005-04-14 (+216d) |  | 100% → 10% | none → 9d |  | resources Brian → Vinay; Eric |
| 7 | Supplentary Specifications | 2004-09-01 A → 2005-04-14 (+225d) | 2004-09-03 A → 2005-04-18 (+227d) |  | 100% → 0% | none → 16d |  |  |
| 8 | Fuctional Specifications | 2004-09-06 A → 2005-04-19 (+225d) | 2004-09-10 A → 2005-04-25 (+227d) |  | 100% → 0% | none → 16d |  |  |
| 9 | Identify Risk List | 2004-09-20 A → 2005-04-26 (+218d) | 2004-09-22 A → 2005-04-28 (+218d) |  | 100% → 0% | none → 16d | Use Case Model → 8 |  |
| 12 | **Elaboration** |  | 2004-10-27 → 2005-05-23 (+208d) | 23d? → 171d? | 95% → 51% | 107d → 0d |  |  |
| 13 | **Iteration I** |  | 2004-10-13 → 2005-05-23 (+222d) | 13d → 171d | 98% → 28% | 117d → 0d |  |  |
| 15 | Level 1 - 2 Use Cases | 2004-09-27 A → 2004-09-27 | 2004-10-01 A → 2004-10-01 |  | 100% → 0% | none → 166d |  |  |
| 27 | **Construction** |  |  |  | 86% → 89% | 0d → 41d |  |  |
| 55 | **Iteration II** |  | 2004-12-24 A |  | 98% → 100% | 65.5d → none |  |  |
| 57 | **Authorization** |  | 2004-12-24 A |  | 98% → 100% | 65.5d → none |  |  |
| 68 | **Implementation** |  | 2004-12-24 A |  | 97% → 100% | 65.5d → none |  |  |
| 70 | **Authorization API** |  | 2004-12-24 A |  | 96% → 100% | 65.5d → none |  |  |
| 72 | **develop run time API** |  | 2004-12-24 A |  | 95% → 100% | 65.5d → none |  |  |
| 75 | Code Review | 2004-12-23 A | 2004-12-24 A |  | 0% → 100% | 65.5d → none |  |  |
| 77 | Iteration II Complete | 2004-12-21 A | 2004-12-21 A |  | 0% → 100% | 69d → none |  |  |
| 92 | **Iteration IV** |  | 2005-03-16 A |  | 95% → 100% | 7d → none |  |  |
| 93 | Iteration Plan | 2004-10-18 A | 2004-10-19 A |  | 0% → 100% | 113d → none |  |  |
| 94 | **User Provisioning** |  | 2005-03-16 A |  | 96% → 100% | 7d → none |  |  |
| 105 | **Implementation** |  | 2005-02-04 A |  | 99% → 100% | 0d → none |  |  |
| 119 | **Struts Interface** |  | 2005-02-04 A |  | 99% → 100% | 0d → none |  |  |
| 133 | API Load testing | 2005-03-08 A | 2005-03-16 A |  | 0% → 100% | 7d → none |  |  |
| 135 | Iteration IV Complete | 2005-01-14 A | 2005-01-14 A |  | 0% → 100% | 51d → none |  |  |
| 136 | **Transition** |  | 2005-03-23 → 2005-03-31 A (+8d) | 127.5d? → 134d? | 67% → 100% | 2.5d → none |  |  |
| 137 | **Iteration I** |  | 2005-03-23 A |  | 72% → 100% | 2.5d → none |  |  |
| 138 | **Documentation** |  | 2005-03-08 A |  | 94% → 100% | 13d → none |  |  |
| 144 | csm Application developers guide |  | 2005-03-08 A |  | 80% → 100% | 13d → none |  |  |
| 146 | **Integration Pilot (Release One)** |  | 2005-03-23 A |  | 34% → 100% | 2.5d → none |  |  |
| 147 | **Client Implementation (with c3pr)** |  | 2005-03-08 A |  | 78% → 100% | 2.5d → none |  |  |
| 150 | Testing | 2005-03-07 A | 2005-03-08 A |  | 0% → 100% | 2.5d → none |  |  |
| 151 | Integration Testing | 2005-03-09 A | 2005-03-15 A |  | 0% → 100% | 2.5d → none |  |  |
| 152 | Evaluate Results | 2005-03-16 A | 2005-03-16 A |  | 0% → 100% | 2.5d → none |  |  |
| 153 | Apply Needed Enhancements | 2005-03-16 A | 2005-03-23 A |  | 0% → 100% | 2.5d → none |  |  |
| 154 | Synch the EA Model | 2004-09-27 A | 2004-09-27 A |  | 0% → 100% | 129d → none |  |  |
| 155 | Iteration I Complete | 2005-02-15 A | 2005-02-15 A |  | 0% → 100% | 29d → none |  |  |
| 156 | **Iteration II** | 2004-09-27 A → 2005-02-18 A (+144d) | 2005-03-22 → 2005-03-29 A (+7d) | 127d → 28d | 57% → 100% | 3d → none |  |  |
| 160 | Staging | 2005-03-16 A | 2005-03-22 A |  | 0% → 100% | 3d → none |  |  |
| 161 | Testing | 2005-02-22 A | 2005-02-24 A |  | 0% → 100% | 21d → none |  |  |
| 162 | Iteration II Complete | 2005-02-28 A | 2005-02-28 A |  | 0% → 100% | 20d → none |  |  |
| 163 | Tag the CVS | 2004-09-27 → 2005-03-29 A (+183d) | 2004-09-27 → 2005-03-29 A (+183d) |  | 0% → 100% | 129d → none |  |  |
| 164 | caCore Release 3 | 2005-03-07 → 2005-03-31 A (+24d) | 2005-03-07 → 2005-03-31 A (+24d) |  | 0% → 100% | 14d → none |  |  |

## Version 15 (saved 2005-04-07, file NCICBSecurityService_phase3.mpp)

Note of the change: *** empty log message ***

Last finish stays 2005-05-23.

Changed:

| ID | Task | Start | Finish | Duration | Complete | Total float | Other |
| --- | --- | --- | --- | --- | --- | --- | --- |
| 12 | **Elaboration** | 2004-09-27 A → 2004-10-01 A (+4d) |  | 171d? → 167d? | 51% → 50% |  |  |
| 13 | **Iteration I** | 2004-09-27 A → 2004-10-01 A (+4d) |  | 171d → 167d | 28% → 27% |  |  |
| 15 | Level 1 - 2 Use Cases | 2004-09-27 → 2005-05-02 (+217d) | 2004-10-01 → 2005-05-09 (+220d) | 5d → 6d |  | 166d → 10d | constraint none → start no earlier than 2005-05-02 |
| 16 | Risk List Priority | 2004-09-27 A → 2005-05-10 A (+225d) | 2004-09-29 A → 2005-05-12 A (+225d) |  |  |  |  |
| 17 | Detailed Iteration Release Plan | 2004-09-27 A → 2005-04-11 A (+196d) | 2004-10-01 → 2005-04-15 (+196d) |  |  | 166d → 26d |  |
