# CSM 3.1

How a schedule from MS Project changed from version to version. A marks actual dates.

## Version 1 (saved 2005-09-19)

Note of the change: Draft Version For Review

| ID | WBS | Task | Duration | Start | Finish | Predecessors | Complete | Total float | Constraint |
| --- | --- | --- | --- | --- | --- | --- | --- | --- | --- |
| 1 | 1 | **CSM Post Release** | 35.25d | 2005-08-01 A | 2005-09-19 |  | 59% | 105d |  |
| 2 | 1.1 | **Production Support** | 22d | 2005-08-01 | 2005-08-30 |  |  | 118.25d |  |
| 3 |  | Support Activities | 22d | 2005-08-01 | 2005-08-30 |  |  | 118.25d |  |
| 4 | 1.2 | **Meetings** | 3.2d | 2005-08-01 A | 2005-08-04 |  | 80% | 137.05d |  |
| 5 |  | Status Meeting | 0.1d | 2005-08-01 | 2005-08-01 |  |  | 140.15d |  |
| 6 |  | IBM | 0.2d | 2005-08-01 A | 2005-08-01 A |  | 100% |  |  |
| 7 |  | IBM | 0.2d | 2005-08-04 A | 2005-08-04 A |  | 100% |  | start no earlier than 2005-08-04 |
| 8 |  | Post Release Analysis | 1d | 2005-08-11 A | 2005-08-11 A |  | 100% |  | start no earlier than 2005-08-11 |
| 9 | 1.4 | **Presentations/Conferences** | 15d | 2005-08-01 A | 2005-08-19 A |  | 100% |  |  |
| 10 | 1.4.1 | **Preparation** | 10d | 2005-08-01 A | 2005-08-12 A |  | 100% |  |  |
| 11 |  | Developer's Boot Camp Presentation | 3d | 2005-08-01 A | 2005-08-03 A |  | 100% |  |  |
| 12 |  | caCore Architecture Meeting | 2d | 2005-08-04 A | 2005-08-05 A | 11 | 100% |  |  |
| 13 |  | Review | 0.3d | 2005-08-09 A | 2005-08-09 A |  | 100% |  | start no earlier than 2005-08-09 |
| 14 |  | Update | 2.5d | 2005-08-09 A | 2005-08-11 A | 13 | 100% |  |  |
| 15 |  | Installation Test | 1d | 2005-08-12 A | 2005-08-12 A |  | 100% |  | start no earlier than 2005-08-12 |
| 16 |  | Developer Boot Camp Presentation (NCICB) | 1d | 2005-08-15 A | 2005-08-15 A | 10 | 100% |  |  |
| 17 |  | caBig Architecture F2F | 3d | 2005-08-16 A | 2005-08-18 A | 16 | 100% |  |  |
| 18 |  | Developer Boot Camp | 2d | 2005-08-18 A | 2005-08-19 A |  | 100% |  | start no earlier than 2005-08-18 |
| 19 | 1.5 | **Best Practices** | 3d | 2005-08-08 A | 2005-08-11 A |  | 100% |  |  |
| 20 |  | Create SOP Documents | 3d | 2005-08-08 A | 2005-08-11 A | 13FS-1d | 100% |  |  |
| 21 |  | SDK Defect Fix/Documentation Update | 3d | 2005-08-03 A | 2005-08-05 A |  | 100% |  | finish no earlier than 2005-08-08 |
| 22 |  | SdK Testing/Documentation Update | 5d | 2005-08-08 A | 2005-08-12 A | 21 | 100% |  |  |
| 23 |  | Production | 0d | 2005-08-25 A | 2005-08-25 A |  | 100% |  | start no earlier than 2005-08-25 |
| 24 | 1.9 | **Open Source Initiative** | 4d | 2005-08-22 A | 2005-08-25 |  | 25% | 121.25d |  |
| 25 |  | Define Approach | 1d | 2005-08-22 A | 2005-08-22 A | 18 | 100% |  |  |
| 26 |  | List OS Items for Development | 3d | 2005-08-23 | 2005-08-25 | 25 |  | 121.25d |  |
| 27 | 1.10 | **Reference Implementation** | 1d | 2005-08-02 A | 2005-08-02 A |  | 100% |  |  |
| 28 |  | WrapUp Work | 1d | 2005-08-02 A | 2005-08-02 A |  | 100% |  | start no earlier than 2005-08-02 |
| 29 | 1.11 | **Requirement Gathering/Scope** | 18.25d | 2005-08-22 A | 2005-09-15 | 9 | 99% | 0d |  |
| 30 |  | Gather/Writeup Requirements | 7d | 2005-08-22 A | 2005-08-30 A |  | 100% |  |  |
| 31 |  | Internal Review/Updates | 2d | 2005-08-31 A | 2005-09-01 A | 30 | 100% |  |  |
| 32 |  | Estimation | 5d | 2005-09-02 A | 2005-09-08 A | 31 | 100% |  |  |
| 33 |  | Requirements Prioritization | 0.25d | 2005-09-09 A | 2005-09-09 A | 32 | 100% |  |  |
| 34 |  | Scope Document Development | 4d | 2005-09-09 A | 2005-09-15 A | 33 | 100% |  |  |
| 35 |  | Scope Document SignOff | 0d | 2005-09-15 | 2005-09-15 | 34 |  | 0d |  |
| 36 | 1.12 | **Planning** | 17.25d | 2005-08-25 A | 2005-09-19 |  | 31% | 105d |  |
| 37 |  | Project Plan | 10d | 2005-08-25 | 2005-09-07 |  |  | 112.05d | start no earlier than 2005-08-25 |
| 38 |  | Project Plan Review | 0.2d | 2005-09-08 | 2005-09-08 | 37 |  | 112.05d |  |
| 39 |  | Task Plan | 5d | 2005-09-09 A | 2005-09-16 A | 33 | 100% |  |  |
| 40 |  | Task Plan Review | 1d | 2005-09-16 | 2005-09-19 | 39 |  | 105d |  |
| 41 |  | Task Plan SignOff | 0d | 2005-09-19 | 2005-09-19 | 40 |  | 105d |  |
| 42 |  | Project Plan SignOff | 0d | 2005-09-19 | 2005-09-19 | 41 |  | 105d |  |
| 43 | 2 | **CSM 3.1** | 107d | 2005-09-15 A | 2006-02-20 | 35 |  | 0d |  |
| 44 |  | Production Support | 100d | 2005-09-15 | 2006-02-20 |  |  | 0d |  |
| 45 |  | Best Practices/SOPs | 100d | 2005-09-15 | 2006-02-09 |  |  | 7d |  |
| 46 | 2.3 | **Elaboration Phase** | 55.4d | 2005-09-15 A | 2005-12-06 | 35 | 2% | 51.6d |  |
| 47 | 2.3.1 | **Iteration 1** | 9.2d | 2005-09-15 A | 2005-09-28 |  | 12% | 32d |  |
| 48 | 2.3.1.1 | **Analysis & Design** | 9.2d | 2005-09-15 A | 2005-09-28 |  | 12% | 32d |  |
| 49 | 2.3.1.1.1 | **SDK Integration** | 9.2d | 2005-09-15 A | 2005-09-28 |  | 12% | 32d |  |
| 50 |  | Documentation & Training Bootcamp | 2d | 2005-09-15 A | 2005-09-19 A |  | 100% |  |  |
| 51 | 2.3.1.1.1.2 | **Detail Use Case Development** | 7.2d | 2005-09-19 | 2005-09-28 |  |  | 32d |  |
| 52 |  | Use Case # | 6d | 2005-09-19 | 2005-09-27 | 50 |  | 32d |  |
| 53 |  | Use Case Review | 0.2d | 2005-09-27 | 2005-09-27 | 52 |  | 32d |  |
| 54 |  | Update/Baseline Use Cases | 1d | 2005-09-27 | 2005-09-28 | 53 |  | 32d |  |
| 55 | 2.3.1.1.1.3 | **Design** | 5.4d | 2005-09-15 | 2005-09-22 |  |  | 3.85d |  |
| 56 |  | Detail Design | 4d | 2005-09-15 | 2005-09-21 |  |  | 7.85d |  |
| 57 |  | Detail Design | 2d | 2005-09-15 | 2005-09-19 |  |  | 6.85d |  |
| 58 |  | SAD Update Draft Complete | 0d | 2005-09-21 | 2005-09-21 | 56, 57 |  | 6.7d |  |
| 59 |  | Design Review | 0.2d | 2005-09-21 | 2005-09-21 | 58 |  | 6.7d |  |
| 60 |  | Update Design | 1d | 2005-09-21 | 2005-09-22 | 59 |  | 6.7d |  |
| 61 |  | Design Baselined/Sign Off | 0.2d | 2005-09-22 | 2005-09-22 | 60 |  | 6.7d |  |
| 62 | 2.3.2 | **Iteration 2** | 10.2d | 2005-09-19 | 2005-10-03 |  |  | 3.85d |  |
| 63 | 2.3.2.1 | **Analysis & Design** | 10.2d | 2005-09-19 | 2005-10-03 |  |  | 3.85d |  |
| 64 | 2.3.2.1.1 | **Enhanced Logging** | 10.2d | 2005-09-19 | 2005-10-03 |  |  | 3.85d |  |
| 65 | 2.3.2.1.1.1 | **Detail Use Case Development** | 3d | 2005-09-28 | 2005-10-03 |  |  | 32d |  |
| 66 |  | Use Case # | 3d | 2005-09-28 | 2005-10-03 | 51 |  | 32d |  |
| 67 | 2.3.2.1.1.2 | **Design** | 6.4d | 2005-09-19 | 2005-09-27 |  |  | 3.85d |  |
| 68 |  | Use Case # | 5d | 2005-09-19 | 2005-09-26 | 57 |  | 5.7d |  |
| 69 |  | Update CSM SAD Draft Complete | 0d | 2005-09-26 | 2005-09-26 | 68 |  | 5.7d |  |
| 70 |  | Design Review | 0.2d | 2005-09-26 | 2005-09-26 | 69 |  | 6.85d |  |

| ID | WBS | Task | Duration | Start | Finish | Predecessors | Total float | Constraint |
| --- | --- | --- | --- | --- | --- | --- | --- | --- |
| 71 |  | Update Design | 1d | 2005-09-26 | 2005-09-27 | 70 | 5.7d |  |
| 72 |  | Design Baselined/Sign Off | 0.2d | 2005-09-27 | 2005-09-27 | 71 | 6.85d |  |
| 73 | 2.3.3 | **Iteration 3** | 37d | 2005-10-03 | 2005-11-28 |  | 32d |  |
| 74 | 2.3.3.1 | **Analysis & Design** | 37d | 2005-10-03 | 2005-11-28 |  | 32d |  |
| 75 | 2.3.3.1.1 | **Hibernate Upgrade** | 13.9d | 2005-10-17 | 2005-11-03 |  | 29.1d |  |
| 76 |  | Define Approach | 12d | 2005-10-17 | 2005-11-01 |  | 29.1d | start no earlier than 2005-10-17 |
| 77 |  | Approach Review | 0.2d | 2005-11-02 | 2005-11-02 | 76 | 29.1d |  |
| 78 |  | Update Approach | 1.5d | 2005-11-02 | 2005-11-03 | 77 | 29.1d |  |
| 79 |  | Approach Baselined/Sign Off | 0.2d | 2005-11-03 | 2005-11-03 | 78 | 29.1d |  |
| 80 | 2.3.3.1.2 | **Authorization Caching** | 37d | 2005-10-03 | 2005-11-28 |  | 32d |  |
| 81 | 2.3.3.1.2.1 | **Detail Use Case Development** | 5d | 2005-10-03 | 2005-10-10 |  | 32d |  |
| 82 |  | Use Case # | 5d | 2005-10-03 | 2005-10-10 | 66 | 32d |  |
| 83 | 2.3.3.1.2.2 | **Design** | 5.8d | 2005-11-16 | 2005-11-28 |  | 35.8d |  |
| 84 |  | Detail Design | 5d | 2005-11-16 | 2005-11-23 | 115 | 35.8d | start no earlier than 2005-10-17 |
| 85 |  | Design Doc Draft Complete | 0d | 2005-11-23 | 2005-11-23 | 84 | 35.8d |  |
| 86 |  | Design Review | 0.3d | 2005-11-23 | 2005-11-23 | 85 | 35.8d |  |
| 87 |  | Update Design | 0.5d | 2005-11-23 | 2005-11-28 | 86 | 35.8d |  |
| 88 |  | Design Baselined/Sign Off | 0d | 2005-11-28 | 2005-11-28 | 87 | 35.8d |  |
| 89 | 2.3.4 | **Iteration 4** | 38.2d | 2005-10-10 | 2005-12-06 |  | 32d |  |
| 90 | 2.3.4.1 | **Test Plan** | 38.2d | 2005-10-10 | 2005-12-06 | 82 | 32d |  |
| 91 |  | SDK Integration | 5d | 2005-10-10 | 2005-10-17 |  | 32d |  |
| 92 |  | Enhanced Logging | 4d | 2005-11-16 | 2005-11-22 | 115 | 51.6d |  |
| 93 |  | Authorization Caching | 4d | 2005-11-22 | 2005-11-30 | 92 | 51.6d |  |
| 94 |  | Regression Tests for Hibernate Upgrade | 4d | 2005-11-30 | 2005-12-06 | 93 | 51.6d |  |
| 95 |  | SOP Check (existing and new) | 1d | 2005-10-17 | 2005-10-18 | 91 | 32d |  |
| 96 |  | Cummalative Requirements Document | 9d | 2005-10-18 | 2005-10-31 | 95 | 32d |  |
| 97 |  | Traceability Matrix | 6d | 2005-10-31 | 2005-11-08 | 96 | 32d |  |
| 98 | 2.4 | **Construction Phase** | 84.75d | 2005-09-22 | 2006-01-26 |  | 4.85d |  |
| 99 | 2.4.1 | **Iteration 1** | 38d | 2005-09-22 | 2005-11-16 |  | 4.85d |  |
| 100 | 2.4.1.1 | **SDK Integration** | 38d | 2005-09-22 | 2005-11-16 |  | 4.85d |  |
| 101 | 2.4.1.1.1 | **Development and Unit Test** | 31d | 2005-09-22 | 2005-11-04 |  | 4.85d |  |
| 102 |  | Merging ListProxy and SDKLIistProxy | 6d | 2005-09-27 | 2005-10-05 | 72 | 6.85d |  |
| 103 |  | Merging ApplicationService and SDKApplicationService | 5.75d | 2005-10-05 | 2005-10-13 | 102 | 6.85d |  |
| 104 |  | Business methods secured at class level | 13.75d | 2005-09-22 | 2005-10-12 | 61 | 7.85d |  |
| 105 |  | Merge Build file to have single generation process | 9d | 2005-10-13 | 2005-10-26 | 106 | 6.85d |  |
| 106 |  | Code Review | 0.25d | 2005-10-13 | 2005-10-13 | 103, 104 | 6.85d |  |
| 107 |  | Flag to add writeable apis to generated code | 6d | 2005-10-13 | 2005-10-21 | 106 | 28.35d |  |
| 108 |  | Turn Security off by default | 6d | 2005-10-21 | 2005-10-31 | 107 | 28.35d |  |
| 109 |  | Enhance Security Error Reporting | 3.75d | 2005-10-31 | 2005-11-04 | 108 | 28.35d |  |
| 110 |  | Code Merge and Cleanup | 5.75d | 2005-10-26 | 2005-11-03 | 105 | 6.85d |  |
| 111 |  | Code Review | 0.25d | 2005-11-04 | 2005-11-04 | 110, 109 | 28.35d |  |
| 112 |  | Development and Unit Test Complete | 0d | 2005-11-04 | 2005-11-04 | 111 | 28.8d |  |
| 113 | 2.4.1.1.2 | **Integration Test** | 7d | 2005-11-04 | 2005-11-16 |  | 28.8d |  |
| 114 |  | Develop Integration Tests | 2d | 2005-11-04 | 2005-11-08 | 112 | 28.8d |  |
| 115 |  | Execute Integration Tests | 5d | 2005-11-08 | 2005-11-16 | 114, 97 | 35.8d |  |
| 116 | 2.4.2 | **Iteration 2** | 32d | 2005-11-03 | 2005-12-22 |  | 3.85d |  |
| 117 | 2.4.2.1 | **Enhanced Logging** | 32d | 2005-11-03 | 2005-12-22 |  | 3.85d |  |
| 118 |  | Development and Unit Test | 25d | 2005-11-03 | 2005-12-13 | 110 | 6.85d |  |
| 119 |  | Development and Unit Test Complete | 0d | 2005-12-13 | 2005-12-13 | 118 | 6.85d |  |
| 120 |  | Develop Integration Test | 2d | 2005-12-13 | 2005-12-15 | 119 | 6.85d |  |
| 121 |  | Execute Integration Tests | 5d | 2005-12-15 | 2005-12-22 | 120 | 6.85d |  |
| 122 | 2.4.3 | **Iteration 3** | 42.55d | 2005-11-03 | 2006-01-10 |  | 28.8d |  |
| 123 | 2.4.3.1 | **Hibernate Upgrade** | 30d | 2005-11-03 | 2005-12-20 |  | 29.15d |  |
| 124 |  | Development and Unit Test | 20d | 2005-11-03 | 2005-12-06 | 79 | 29.15d |  |
| 125 |  | Development and Unit Test Complete | 0d | 2005-12-06 | 2005-12-06 | 124 | 29.15d |  |
| 126 |  | Regression Testing | 10d | 2005-12-06 | 2005-12-20 | 125 | 29.15d |  |
| 127 | 2.4.3.2 | **Authorization Caching** | 29d | 2005-11-28 | 2006-01-10 |  | 28.8d |  |
| 128 |  | Development and Unit Test | 15d | 2005-11-28 | 2005-12-19 | 88 | 35.8d |  |
| 129 |  | Development and Unit Test Complete | 0d | 2005-12-19 | 2005-12-19 | 128 | 35.8d |  |
| 130 |  | Develop Integration Test | 2d | 2005-12-19 | 2006-01-03 | 129 | 28.8d |  |
| 131 |  | Execute Integration Test | 5d | 2006-01-03 | 2006-01-10 | 130 | 28.8d |  |
| 132 | 2.4.4 | **Iteration 4** | 24.5d | 2005-12-20 | 2006-01-26 |  | 5.35d |  |
| 133 | 2.4.4.1 | **Document Creation** | 15.3d | 2005-12-20 | 2006-01-13 |  | 26.05d |  |
| 134 |  | SDK Programmers Guide | 10d | 2005-12-27 | 2006-01-10 | 126 | 26.05d |  |
| 135 |  | Review | 0.2d | 2006-01-11 | 2006-01-11 | 134 | 26.05d |  |
| 136 |  | Update from Review | 2d | 2006-01-11 | 2006-01-13 | 135 | 26.05d |  |
| 137 |  | CSM Guide For Application Developers | 10d | 2005-12-20 | 2006-01-05 | 126 | 29.15d |  |
| 138 |  | Review | 0.2d | 2006-01-05 | 2006-01-06 | 137 | 29.15d |  |
| 139 |  | Update From Review | 2d | 2006-01-06 | 2006-01-10 | 138 | 29.15d |  |
| 140 |  | Baseline/SignOff Documents | 0d | 2006-01-10 | 2006-01-10 | 139 | 29.15d |  |

| ID | WBS | Task | Duration | Start | Finish | Predecessors | Total float |
| --- | --- | --- | --- | --- | --- | --- | --- |
| 141 | 2.4.4.2 | **QA Testing** | 23d | 2005-12-22 | 2006-01-26 |  | 3.85d |
| 142 |  | Technical Test Development | 10d | 2005-12-22 | 2006-01-09 | 121 | 6.85d |
| 143 |  | Execution/Defect Fixes | 10d | 2006-01-09 | 2006-01-23 | 142 | 6.85d |
| 144 |  | Testing Report Creation | 3d | 2006-01-23 | 2006-01-26 | 143 | 16.85d |
| 145 | 2.5 | **Transition Phase** | 16d | 2006-01-23 | 2006-02-14 |  | 3.85d |
| 146 |  | Deployment to Stage | 3d | 2006-01-23 | 2006-01-26 | 143 | 3.85d |
| 147 |  | SOP Updates | 3d | 2006-01-26 | 2006-01-31 | 146 | 3.85d |
| 148 |  | Stage Testing | 5d | 2006-01-31 | 2006-02-07 | 147 | 3.85d |
| 149 |  | Testing Report | 2d | 2006-02-07 | 2006-02-09 | 148 | 6.85d |
| 150 | 2.5.5 | **Deployment to Production** | 5d | 2006-02-07 | 2006-02-14 |  | 3.85d |
| 151 |  | Update Zope Site | 5d | 2006-02-07 | 2006-02-14 | 148 | 3.85d |
| 152 |  | Work With Operations/ Finalize Builds | 5d | 2006-02-07 | 2006-02-14 | 148 | 3.85d |
| 153 |  | CSM 3.1 Complete | 0d | 2006-02-14 | 2006-02-14 | 150 | 3.85d |

## Version 2 (saved 2005-09-19)

Note of the change: Updated After Team Review

Last finish 2006-02-20 → 2006-02-15 (-5d). Complete tasks 24 → 27.

Added:

| ID | Task | Duration | Start | Finish | Resources |
| --- | --- | --- | --- | --- | --- |
| 45 | Gforge Support | 104d | 2005-09-15 | 2006-02-15 | Team [5%] |
| 90 | Overall Test Plan | 5d | 2005-10-10 | 2005-10-17 | Eric |

Removed: 68 Use Case #; 69 Update CSM SAD Draft Complete

Changed:

| ID | Task | Start | Finish | Duration | Complete | Total float | Predecessors | Other |
| --- | --- | --- | --- | --- | --- | --- | --- | --- |
| 1 | **CSM Post Release** |  |  |  | 59% → 85% | 105d → 102.15d |  |  |
| 2 | **Production Support** | 2005-08-01 A | 2005-08-30 A |  | 0% → 100% | 118.25d → none |  |  |
| 3 | Support Activities | 2005-08-01 A | 2005-08-30 A |  | 0% → 100% | 118.25d → none |  |  |
| 4 | **Meetings** |  | 2005-08-04 A |  | 80% → 100% | 137.05d → none |  |  |
| 5 | Status Meeting | 2005-08-01 A | 2005-08-01 A |  | 0% → 100% | 140.15d → none |  |  |
| 36 | **Planning** |  |  |  | 31% → 37% | 105d → 102.15d |  |  |
| 40 | Task Plan Review | 2005-09-16 A | 2005-09-19 A |  | 0% → 100% | 105d → none |  |  |
| 43 | **CSM 3.1** |  | 2006-02-20 → 2006-02-15 (-5d) | 107d → 104.15d |  |  |  |  |
| 44 | Production Support |  | 2006-02-20 → 2006-02-15 (-5d) | 100d → 97d |  | 0d → 0.15d |  |  |
| 46 | Best Practices/SOPs |  | 2006-02-09 → 2006-02-15 (+6d) | 100d → 104d |  | 7d → 0.15d |  |  |
| 47 | **Elaboration Phase** |  | 2005-12-06 → 2005-12-07 (+1d) | 55.4d → 56.4d |  | 51.6d → 47.75d |  |  |
| 53 | Use Cases |  |  |  |  | 32d → 25.15d |  | was named Use Case # |
| 56 | **Design** |  | 2005-09-22 → 2005-09-26 (+4d) | 5.4d → 7.4d |  | 3.85d → 0d |  |  |
| 57 | Detail Design |  | 2005-09-19 → 2005-09-23 (+4d) | 2d → 6d |  | 6.85d → 0d |  |  |
| 58 | SAD Update Draft Complete | 2005-09-21 → 2005-09-23 (+2d) | 2005-09-21 → 2005-09-23 (+2d) |  |  | 6.7d → 0d | 68, 57 → 57 | resources Vinay [50%] → Kunal [75%] |
| 59 | Design Review | 2005-09-21 → 2005-09-23 (+2d) | 2005-09-21 → 2005-09-23 (+2d) |  |  | 6.7d → 0d |  |  |
| 60 | Update Design | 2005-09-21 → 2005-09-23 (+2d) | 2005-09-22 → 2005-09-26 (+4d) |  |  | 6.7d → 0d |  | resources Vinay [50%]; Kunal [75%] → Kunal [75%] |
| 61 | Design Baselined/Sign Off | 2005-09-22 → 2005-09-26 (+4d) | 2005-09-22 → 2005-09-26 (+4d) |  |  | 6.7d → 0d |  |  |
| 62 | **Iteration 2** | 2005-09-19 → 2005-09-23 (+4d) |  | 10.2d → 6.2d |  | 3.85d → 28.35d |  |  |
| 63 | **Analysis & Design** | 2005-09-19 → 2005-09-23 (+4d) |  | 10.2d → 6.2d |  | 3.85d → 28.35d |  |  |
| 64 | **Enhanced Logging** | 2005-09-19 → 2005-09-23 (+4d) |  | 10.2d → 6.2d |  | 3.85d → 28.35d |  |  |
| 66 | Level 2 Use Cases |  |  |  |  | 32d → 25.15d |  | was named Use Case # |
| 67 | **Design** | 2005-09-19 → 2005-09-23 (+4d) | 2005-09-27 → 2005-09-29 (+2d) | 6.4d → 4.4d |  | 3.85d → 93.75d |  |  |
| 68 | Detail Design | 2005-09-15 → 2005-09-23 (+8d) | 2005-09-21 → 2005-09-28 (+7d) | 4d → 3d |  | 7.85d → 93.75d | none → 57 |  |
| 69 | Design Review | 2005-09-26 → 2005-09-28 (+2d) | 2005-09-26 → 2005-09-28 (+2d) |  |  | 6.85d → 93.75d | Update CSM SAD Draft Complete → 68 |  |
| 70 | Update Design | 2005-09-26 → 2005-09-28 (+2d) | 2005-09-27 → 2005-09-29 (+2d) |  |  | 5.7d → 93.75d |  | resources Kunal [75%] → Vinay [50%] |
| 71 | Design Baselined/Sign Off | 2005-09-27 → 2005-09-29 (+2d) | 2005-09-27 → 2005-09-29 (+2d) |  |  | 6.85d → 93.75d |  |  |
| 72 | **Iteration 3** |  | 2005-11-28 → 2005-11-29 (+1d) | 37d → 38d |  | 32d → 25.15d |  |  |
| 73 | **Analysis & Design** |  | 2005-11-28 → 2005-11-29 (+1d) | 37d → 38d |  | 32d → 25.15d |  |  |
| 79 | **Authorization Caching** |  | 2005-11-28 → 2005-11-29 (+1d) | 37d → 38d |  | 32d → 25.15d |  |  |
| 82 | **Design** | 2005-11-16 → 2005-11-17 (+1d) | 2005-11-28 → 2005-11-29 (+1d) |  |  | 35.8d → 31.95d |  |  |
| 83 | Detail Design | 2005-11-16 → 2005-11-17 (+1d) | 2005-11-23 → 2005-11-28 (+5d) |  |  | 35.8d → 31.95d |  |  |
| 84 | Design Doc Draft Complete | 2005-11-23 → 2005-11-28 (+5d) | 2005-11-23 → 2005-11-28 (+5d) |  |  | 35.8d → 31.95d |  |  |
| 85 | Design Review | 2005-11-23 → 2005-11-28 (+5d) | 2005-11-23 → 2005-11-28 (+5d) |  |  | 35.8d → 31.95d |  |  |
| 86 | Update Design | 2005-11-23 → 2005-11-28 (+5d) | 2005-11-28 → 2005-11-29 (+1d) |  |  | 35.8d → 31.95d |  |  |
| 87 | Design Baselined/Sign Off | 2005-11-28 → 2005-11-29 (+1d) | 2005-11-28 → 2005-11-29 (+1d) |  |  | 35.8d → 31.95d |  |  |
| 88 | **Iteration 4** |  | 2005-12-06 → 2005-12-07 (+1d) | 38.2d → 39.2d |  | 32d → 25.15d |  |  |
| 89 | **Test Plan** |  | 2005-12-06 → 2005-12-07 (+1d) | 38.2d → 39.2d |  | 32d → 25.15d |  |  |
| 91 | SDK Integration | 2005-10-10 → 2005-10-17 (+7d) | 2005-10-17 → 2005-10-24 (+7d) |  |  | 32d → 25.15d | none → 90 |  |
| 92 | Enhanced Logging | 2005-11-16 → 2005-11-17 (+1d) | 2005-11-22 → 2005-11-23 (+1d) |  |  | 51.6d → 47.75d |  |  |
| 93 | Authorization Caching | 2005-11-22 → 2005-11-23 (+1d) | 2005-11-30 → 2005-12-01 (+1d) |  |  | 51.6d → 47.75d |  |  |
| 94 | Regression Tests for Hibernate Upgrade | 2005-11-30 → 2005-12-01 (+1d) | 2005-12-06 → 2005-12-07 (+1d) |  |  | 51.6d → 47.75d |  |  |
| 95 | SOP Check (existing and new) | 2005-10-17 → 2005-10-24 (+7d) | 2005-10-18 → 2005-10-25 (+7d) |  |  | 32d → 25.15d |  |  |
| 96 | Cummalative Requirements Document | 2005-10-18 → 2005-10-25 (+7d) | 2005-10-31 → 2005-11-01 (+1d) | 9d → 5d |  | 32d → 25.15d |  |  |
| 97 | Traceability Matrix | 2005-10-31 → 2005-11-01 (+1d) | 2005-11-08 → 2005-11-09 (+1d) |  |  | 32d → 25.15d |  |  |
| 98 | **Construction Phase** | 2005-09-22 → 2005-09-26 (+4d) | 2006-01-26 → 2006-01-27 (+1d) | 84.75d → 83.75d |  | 4.85d → 0d |  |  |
| 99 | **Iteration 1** | 2005-09-22 → 2005-09-26 (+4d) | 2005-11-16 → 2005-11-17 (+1d) | 38d → 37d |  | 4.85d → 0d |  |  |
| 100 | **SDK Integration** | 2005-09-22 → 2005-09-26 (+4d) | 2005-11-16 → 2005-11-17 (+1d) | 38d → 37d |  | 4.85d → 0d |  |  |
| 101 | **Development and Unit Test** | 2005-09-22 → 2005-09-26 (+4d) | 2005-11-04 → 2005-11-07 (+3d) | 31d → 30d |  | 4.85d → 0d |  |  |
| 102 | Merging ListProxy and SDKLIistProxy | 2005-09-27 → 2005-09-26 (-1d) | 2005-10-05 → 2005-10-04 (-1d) |  |  | 6.85d → 2d | 71 → 61 |  |
| 103 | Merging ApplicationService and SDKApplicationService | 2005-10-05 → 2005-10-04 (-1d) | 2005-10-13 → 2005-10-12 (-1d) |  |  | 6.85d → 2d |  |  |
| 104 | Business methods secured at class level | 2005-09-22 → 2005-09-26 (+4d) | 2005-10-12 → 2005-10-14 (+2d) |  |  | 7.85d → 0d |  |  |
| 105 | Merge Build file to have single generation process | 2005-10-13 → 2005-10-14 (+1d) | 2005-10-26 → 2005-10-27 (+1d) |  |  | 6.85d → 0d |  |  |
| 106 | Code Review | 2005-10-13 → 2005-10-14 (+1d) | 2005-10-13 → 2005-10-14 (+1d) |  |  | 6.85d → 0d |  |  |
| 107 | Flag to add writeable apis to generated code | 2005-10-13 → 2005-10-14 (+1d) | 2005-10-21 → 2005-10-24 (+3d) |  |  | 28.35d → 24.95d |  |  |
| 108 | Turn Security off by default | 2005-10-21 → 2005-10-24 (+3d) | 2005-10-31 → 2005-11-01 (+1d) |  |  | 28.35d → 24.95d |  |  |
| 109 | Enhance Security Error Reporting | 2005-10-31 → 2005-11-01 (+1d) | 2005-11-04 → 2005-11-07 (+3d) |  |  | 28.35d → 24.95d |  |  |
| 110 | Code Merge and Cleanup | 2005-10-26 → 2005-10-27 (+1d) | 2005-11-03 → 2005-11-04 (+1d) |  |  | 6.85d → 0d |  |  |
| 111 | Code Review | 2005-11-04 → 2005-11-07 (+3d) | 2005-11-04 → 2005-11-07 (+3d) |  |  | 28.35d → 24.95d |  |  |
| 112 | Development and Unit Test Complete | 2005-11-04 → 2005-11-07 (+3d) | 2005-11-04 → 2005-11-07 (+3d) |  |  | 28.8d → 24.95d |  |  |
| 113 | **Integration Test** | 2005-11-04 → 2005-11-07 (+3d) | 2005-11-16 → 2005-11-17 (+1d) |  |  | 28.8d → 24.95d |  |  |
| 114 | Develop Integration Tests | 2005-11-04 → 2005-11-07 (+3d) | 2005-11-08 → 2005-11-09 (+1d) |  |  | 28.8d → 24.95d |  |  |
| 115 | Execute Integration Tests | 2005-11-08 → 2005-11-09 (+1d) | 2005-11-16 → 2005-11-17 (+1d) |  |  | 35.8d → 24.95d |  |  |
| 116 | **Iteration 2** | 2005-11-03 → 2005-11-04 (+1d) | 2005-12-22 → 2005-12-23 (+1d) |  |  | 3.85d → 0d |  |  |
| 117 | **Enhanced Logging** | 2005-11-03 → 2005-11-04 (+1d) | 2005-12-22 → 2005-12-23 (+1d) |  |  | 3.85d → 0d |  |  |
| 118 | Development and Unit Test | 2005-11-03 → 2005-11-04 (+1d) | 2005-12-13 → 2005-12-14 (+1d) |  |  | 6.85d → 0d |  |  |
| 119 | Development and Unit Test Complete | 2005-12-13 → 2005-12-14 (+1d) | 2005-12-13 → 2005-12-14 (+1d) |  |  | 6.85d → 0d |  |  |
| 120 | Develop Integration Test | 2005-12-13 → 2005-12-14 (+1d) | 2005-12-15 → 2005-12-16 (+1d) |  |  | 6.85d → 0d |  |  |
| 121 | Execute Integration Tests | 2005-12-15 → 2005-12-16 (+1d) | 2005-12-22 → 2005-12-23 (+1d) |  |  | 6.85d → 0d |  |  |
| 122 | **Iteration 3** |  | 2006-01-10 → 2006-01-11 (+1d) | 42.55d → 43.55d |  | 28.8d → 24.95d |  |  |

| ID | Task | Start | Finish | Duration | Total float |
| --- | --- | --- | --- | --- | --- |
| 127 | **Authorization Caching** | 2005-11-28 → 2005-11-29 (+1d) | 2006-01-10 → 2006-01-11 (+1d) |  | 28.8d → 24.95d |
| 128 | Development and Unit Test | 2005-11-28 → 2005-11-29 (+1d) | 2005-12-19 → 2005-12-20 (+1d) |  | 35.8d → 31.95d |
| 129 | Development and Unit Test Complete | 2005-12-19 → 2005-12-20 (+1d) | 2005-12-19 → 2005-12-20 (+1d) |  | 35.8d → 31.95d |
| 130 | Develop Integration Test | 2005-12-19 → 2005-12-20 (+1d) | 2006-01-03 → 2006-01-04 (+1d) |  | 28.8d → 24.95d |
| 131 | Execute Integration Test | 2006-01-03 → 2006-01-04 (+1d) | 2006-01-10 → 2006-01-11 (+1d) |  | 28.8d → 24.95d |
| 132 | **Iteration 4** |  | 2006-01-26 → 2006-01-27 (+1d) | 24.5d → 25.5d | 5.35d → 2.5d |
| 141 | **QA Testing** | 2005-12-22 → 2005-12-23 (+1d) | 2006-01-26 → 2006-01-27 (+1d) |  | 3.85d → 0d |
| 142 | Technical Test Development | 2005-12-22 → 2005-12-23 (+1d) | 2006-01-09 → 2006-01-10 (+1d) |  | 6.85d → 0d |
| 143 | Execution/Defect Fixes | 2006-01-09 → 2006-01-10 (+1d) | 2006-01-23 → 2006-01-24 (+1d) |  | 6.85d → 0d |
| 144 | Testing Report Creation | 2006-01-23 → 2006-01-24 (+1d) | 2006-01-26 → 2006-01-27 (+1d) |  | 16.85d → 13d |
| 145 | **Transition Phase** | 2006-01-23 → 2006-01-24 (+1d) | 2006-02-14 → 2006-02-15 (+1d) |  | 3.85d → 0d |
| 146 | Deployment to Stage | 2006-01-23 → 2006-01-24 (+1d) | 2006-01-26 → 2006-01-27 (+1d) |  | 3.85d → 0d |
| 147 | SOP Updates | 2006-01-26 → 2006-01-27 (+1d) | 2006-01-31 → 2006-02-01 (+1d) |  | 3.85d → 0d |
| 148 | Stage Testing | 2006-01-31 → 2006-02-01 (+1d) | 2006-02-07 → 2006-02-08 (+1d) |  | 3.85d → 0d |
| 149 | Testing Report | 2006-02-07 → 2006-02-08 (+1d) | 2006-02-09 → 2006-02-10 (+1d) |  | 6.85d → 3d |
| 150 | **Deployment to Production** | 2006-02-07 → 2006-02-08 (+1d) | 2006-02-14 → 2006-02-15 (+1d) |  | 3.85d → 0d |
| 151 | Update Zope Site | 2006-02-07 → 2006-02-08 (+1d) | 2006-02-14 → 2006-02-15 (+1d) |  | 3.85d → 0d |
| 152 | Work With Operations/ Finalize Builds | 2006-02-07 → 2006-02-08 (+1d) | 2006-02-14 → 2006-02-15 (+1d) |  | 3.85d → 0d |
| 153 | CSM 3.1 Complete | 2006-02-14 → 2006-02-15 (+1d) | 2006-02-14 → 2006-02-15 (+1d) |  | 3.85d → 0d |

## Version 3 (saved 2005-09-26)

Note of the change: updated after 9/26 status meeting

Last finish 2006-02-15 → 2006-03-13 (+26d). Complete tasks 27 → 30.

Added:

| ID | Task | Duration | Start | Finish | Predecessors | Constraint | Resources |
| --- | --- | --- | --- | --- | --- | --- | --- |
| 72 | **Design** | 4d | 2005-09-27 | 2005-09-30 |  |  |  |
| 73 | Object Instance Level Security | 1d | 2005-09-27 | 2005-09-27 |  | start no earlier than 2005-09-27 | Vinay |
| 74 | Grid Security | 1d | 2005-09-28 | 2005-09-28 | 73 |  | Vinay |
| 75 | HTTP Request | 1d | 2005-09-29 | 2005-09-29 | 74 |  | Vinay |
| 76 | SOP List | 1d | 2005-09-30 | 2005-09-30 | 75 |  | Vinay |

Changed:

| ID | Task | Start | Finish | Duration | Complete | Total float | Predecessors | Other |
| --- | --- | --- | --- | --- | --- | --- | --- | --- |
| 43 | **CSM 3.1** |  | 2006-02-15 → 2006-03-13 (+26d) | 104.15d → 121.82d | 0% → 1% |  |  |  |
| 47 | **Elaboration Phase** |  | 2005-12-07 → 2006-01-09 (+33d) | 56.4d → 77.07d | 2% → 7% | 47.75d → 44.75d |  |  |
| 62 | **Iteration 2** | 2005-09-23 A |  |  | 0% → 37% | 28.35d → 109.62d |  |  |
| 63 | **Analysis & Design** | 2005-09-23 A |  |  | 0% → 37% | 28.35d → 109.62d |  |  |
| 64 | **Enhanced Logging** | 2005-09-23 A |  |  | 0% → 57% | 28.35d → 109.62d |  |  |
| 67 | **Design** | 2005-09-23 A |  |  | 0% → 95% | 93.75d → 111.42d |  |  |
| 68 | Detail Design | 2005-09-23 A | 2005-09-28 A |  | 0% → 100% | 93.75d → none |  |  |
| 69 | Design Review | 2005-09-28 A | 2005-09-28 A |  | 0% → 100% | 93.75d → none |  |  |
| 70 | Update Design | 2005-09-28 A | 2005-09-29 A |  | 0% → 100% | 93.75d → none |  |  |
| 77 | **Iteration 3** |  | 2005-11-29 → 2006-01-04 (+36d) | 38d → 61.67d |  | 25.15d → 25.95d |  |  |
| 78 | **Analysis & Design** |  | 2005-11-29 → 2006-01-04 (+36d) | 38d → 61.67d |  | 25.15d → 25.95d |  |  |
| 84 | **Authorization Caching** |  | 2005-11-29 → 2006-01-04 (+36d) | 38d → 61.67d |  | 25.15d → 25.95d |  |  |
| 87 | **Design** | 2005-11-17 → 2005-12-14 (+27d) | 2005-11-29 → 2006-01-04 (+36d) | 5.8d → 12.8d |  | 31.95d → 25.95d |  |  |
| 88 | Detail Design | 2005-11-17 → 2005-12-14 (+27d) | 2005-11-28 → 2006-01-03 (+36d) |  |  | 31.95d → 25.95d |  |  |
| 89 | Design Doc Draft Complete | 2005-11-28 → 2006-01-03 (+36d) | 2005-11-28 → 2006-01-03 (+36d) |  |  | 31.95d → 25.95d |  |  |
| 90 | Design Review | 2005-11-28 → 2006-01-03 (+36d) | 2005-11-28 → 2006-01-03 (+36d) |  |  | 31.95d → 25.95d |  |  |
| 91 | Update Design | 2005-11-28 → 2006-01-03 (+36d) | 2005-11-29 → 2006-01-04 (+36d) |  |  | 31.95d → 25.95d |  |  |
| 92 | Design Baselined/Sign Off | 2005-11-29 → 2006-01-04 (+36d) | 2005-11-29 → 2006-01-04 (+36d) |  |  | 31.95d → 25.95d |  |  |
| 93 | **Iteration 4** |  | 2005-12-07 → 2006-01-09 (+33d) | 39.2d → 59.87d |  | 25.15d → 44.75d |  |  |
| 94 | **Test Plan** |  | 2005-12-07 → 2006-01-09 (+33d) | 39.2d → 59.87d |  | 25.15d → 44.75d |  |  |
| 97 | Enhanced Logging | 2005-11-17 → 2005-12-14 (+27d) | 2005-11-23 → 2005-12-27 (+34d) |  |  | 47.75d → 44.75d |  |  |
| 98 | Authorization Caching | 2005-11-23 → 2005-12-27 (+34d) | 2005-12-01 → 2006-01-03 (+33d) |  |  | 47.75d → 44.75d |  |  |
| 99 | Regression Tests for Hibernate Upgrade | 2005-12-01 → 2006-01-03 (+33d) | 2005-12-07 → 2006-01-09 (+33d) |  |  | 47.75d → 44.75d |  |  |
| 103 | **Construction Phase** |  | 2006-01-27 → 2006-02-22 (+26d) | 83.75d → 101.42d |  |  |  |  |
| 104 | **Iteration 1** |  | 2005-11-17 → 2005-12-14 (+27d) | 37d → 53.67d |  |  |  |  |
| 105 | **SDK Integration** |  | 2005-11-17 → 2005-12-14 (+27d) | 37d → 53.67d |  |  |  |  |
| 106 | **Development and Unit Test** |  | 2005-11-07 → 2005-12-05 (+28d) | 30d → 46.67d |  |  |  |  |
| 109 | Business methods secured at class level | 2005-09-26 → 2005-10-12 (+16d) | 2005-10-14 → 2005-10-25 (+11d) | 13.75d → 9.17d |  |  | 61 → 108 | resources Vinay [50%] → Kunal [75%] |
| 110 | Merge Build file to have single generation process | 2005-10-14 → 2005-10-25 (+11d) | 2005-10-27 → 2005-11-07 (+11d) |  |  |  | 111 → 109 |  |
| 111 | Code Review | 2005-10-14 → 2005-11-07 (+24d) | 2005-10-14 → 2005-11-07 (+24d) |  |  |  | 108, 109 → 110 |  |
| 112 | Flag to add writeable apis to generated code | 2005-10-14 → 2005-11-07 (+24d) | 2005-10-24 → 2005-11-14 (+21d) | 6d → 4d |  | 24.95d → 0d |  | resources Vinay [50%] → Kunal [75%] |
| 113 | Turn Security off by default | 2005-10-24 → 2005-11-14 (+21d) | 2005-11-01 → 2005-11-18 (+17d) | 6d → 4d |  | 24.95d → 0d |  | resources Vinay [50%] → Kunal [75%] |
| 114 | Enhance Security Error Reporting | 2005-11-01 → 2005-11-18 (+17d) | 2005-11-07 → 2005-11-23 (+16d) | 3.75d → 2.5d |  | 24.95d → 0d |  | resources Vinay [50%] → Kunal [75%] |
| 115 | Code Merge and Cleanup | 2005-10-27 → 2005-11-23 (+27d) | 2005-11-04 → 2005-12-05 (+31d) |  |  |  | 110 → 114 |  |
| 116 | Code Review | 2005-11-07 → 2005-12-05 (+28d) | 2005-11-07 → 2005-12-05 (+28d) |  |  | 24.95d → 32.95d | 115, 114 → 115 |  |
| 117 | Development and Unit Test Complete | 2005-11-07 → 2005-12-05 (+28d) | 2005-11-07 → 2005-12-05 (+28d) |  |  | 24.95d → 32.95d |  | resources Kunal; Vinay → Kunal [75%] |
| 118 | **Integration Test** | 2005-11-07 → 2005-12-05 (+28d) | 2005-11-17 → 2005-12-14 (+27d) |  |  | 24.95d → 32.95d |  |  |
| 119 | Develop Integration Tests | 2005-11-07 → 2005-12-05 (+28d) | 2005-11-09 → 2005-12-07 (+28d) |  |  | 24.95d → 32.95d |  |  |
| 120 | Execute Integration Tests | 2005-11-09 → 2005-12-07 (+28d) | 2005-11-17 → 2005-12-14 (+27d) |  |  | 24.95d → 32.95d |  |  |
| 121 | **Iteration 2** | 2005-11-04 → 2005-12-05 (+31d) | 2005-12-23 → 2006-01-20 (+28d) |  |  |  |  |  |
| 122 | **Enhanced Logging** | 2005-11-04 → 2005-12-05 (+31d) | 2005-12-23 → 2006-01-20 (+28d) |  |  |  |  |  |
| 123 | Development and Unit Test | 2005-11-04 → 2005-12-05 (+31d) | 2005-12-14 → 2006-01-11 (+28d) |  |  |  |  |  |
| 124 | Development and Unit Test Complete | 2005-12-14 → 2006-01-11 (+28d) | 2005-12-14 → 2006-01-11 (+28d) |  |  |  |  |  |
| 125 | Develop Integration Test | 2005-12-14 → 2006-01-11 (+28d) | 2005-12-16 → 2006-01-13 (+28d) |  |  |  |  |  |
| 126 | Execute Integration Tests | 2005-12-16 → 2006-01-13 (+28d) | 2005-12-23 → 2006-01-20 (+28d) |  |  |  |  |  |
| 127 | **Iteration 3** |  | 2006-01-11 → 2006-02-03 (+23d) | 43.55d → 60.22d |  | 24.95d → 25.95d |  |  |
| 132 | **Authorization Caching** | 2005-11-29 → 2006-01-04 (+36d) | 2006-01-11 → 2006-02-03 (+23d) | 29d → 22d |  | 24.95d → 25.95d |  |  |
| 133 | Development and Unit Test | 2005-11-29 → 2006-01-04 (+36d) | 2005-12-20 → 2006-01-25 (+36d) |  |  | 31.95d → 25.95d |  |  |
| 134 | Development and Unit Test Complete | 2005-12-20 → 2006-01-25 (+36d) | 2005-12-20 → 2006-01-25 (+36d) |  |  | 31.95d → 25.95d |  |  |
| 135 | Develop Integration Test | 2005-12-20 → 2006-01-25 (+36d) | 2006-01-04 → 2006-01-27 (+23d) |  |  | 24.95d → 25.95d |  |  |
| 136 | Execute Integration Test | 2006-01-04 → 2006-01-27 (+23d) | 2006-01-11 → 2006-02-03 (+23d) |  |  | 24.95d → 25.95d |  |  |
| 137 | **Iteration 4** |  | 2006-01-27 → 2006-02-22 (+26d) | 25.5d → 43.17d |  | 2.5d → 13d |  |  |
| 146 | **QA Testing** | 2005-12-23 → 2006-01-20 (+28d) | 2006-01-27 → 2006-02-22 (+26d) |  |  |  |  |  |
| 147 | Technical Test Development | 2005-12-23 → 2006-01-20 (+28d) | 2006-01-10 → 2006-02-03 (+24d) |  |  |  |  |  |
| 148 | Execution/Defect Fixes | 2006-01-10 → 2006-02-03 (+24d) | 2006-01-24 → 2006-02-17 (+24d) |  |  |  |  |  |
| 149 | Testing Report Creation | 2006-01-24 → 2006-02-17 (+24d) | 2006-01-27 → 2006-02-22 (+26d) |  |  |  |  |  |
| 150 | **Transition Phase** | 2006-01-24 → 2006-02-17 (+24d) | 2006-02-15 → 2006-03-13 (+26d) |  |  |  |  |  |
| 151 | Deployment to Stage | 2006-01-24 → 2006-02-17 (+24d) | 2006-01-27 → 2006-02-22 (+26d) |  |  |  |  |  |
| 152 | SOP Updates | 2006-01-27 → 2006-02-22 (+26d) | 2006-02-01 → 2006-02-27 (+26d) |  |  |  |  |  |
| 153 | Stage Testing | 2006-02-01 → 2006-02-27 (+26d) | 2006-02-08 → 2006-03-06 (+26d) |  |  |  |  |  |
| 154 | Testing Report | 2006-02-08 → 2006-03-06 (+26d) | 2006-02-10 → 2006-03-08 (+26d) |  |  |  |  |  |
| 155 | **Deployment to Production** | 2006-02-08 → 2006-03-06 (+26d) | 2006-02-15 → 2006-03-13 (+26d) |  |  |  |  |  |
| 156 | Update Zope Site | 2006-02-08 → 2006-03-06 (+26d) | 2006-02-15 → 2006-03-13 (+26d) |  |  |  |  |  |
| 157 | Work With Operations/ Finalize Builds | 2006-02-08 → 2006-03-06 (+26d) | 2006-02-15 → 2006-03-13 (+26d) |  |  |  |  |  |
| 158 | CSM 3.1 Complete | 2006-02-15 → 2006-03-13 (+26d) | 2006-02-15 → 2006-03-13 (+26d) |  |  |  |  |  |

## Version 4 (saved 2005-10-03)

Note of the change: updated task plan to adjust for Vinay leaving and updated status from the 10/3/2005 status meeting.

Last finish 2006-03-13 → 2006-03-03 (-10d). Complete tasks 30 → 35.

Added:

| ID | Task | Duration | Start | Finish | Predecessors | Resources |
| --- | --- | --- | --- | --- | --- | --- |
| 149 | 21 CFR Part 11 Document Prep | 5d | 2006-02-24 | 2006-03-03 | 147 | Resource 4; Resource 3; Kunal [75%] |

Removed: 87 Design; 88 Detail Design; 89 Design Doc Draft Complete; 90 Design Review; 91 Update Design; 92 Design Baselined/Sign Off; 134 Development and Unit Test Complete; 135 Develop Integration Test; 136 Execute Integration Test

Changed:

| ID | Task | Start | Finish | Duration | Complete | Total float | Predecessors | Other |
| --- | --- | --- | --- | --- | --- | --- | --- | --- |
| 43 | **CSM 3.1** |  | 2006-03-13 → 2006-03-03 (-10d) | 121.82d → 115.78d | 1% → 4% |  |  |  |
| 47 | **Elaboration Phase** |  |  |  | 7% → 30% | 44.75d → 38.71d |  |  |
| 48 | **Iteration 1** |  |  |  | 12% → 83% | 45.82d → 106.58d |  |  |
| 49 | **Analysis & Design** |  |  |  | 12% → 83% | 45.82d → 106.58d |  |  |
| 50 | **SDK Integration** |  |  |  | 12% → 83% | 45.82d → 106.58d |  |  |
| 52 | **Detail Use Case Development** | 2005-09-19 A |  |  | 0% → 83% | 45.82d → 106.58d |  |  |
| 53 | Use Cases | 2005-09-19 A | 2005-09-27 A |  | 0% → 100% | 25.15d → none |  |  |
| 56 | **Design** | 2005-09-15 A |  |  | 0% → 77% |  |  |  |
| 57 | Detail Design | 2005-09-15 A |  |  | 0% → 95% |  |  |  |
| 62 | **Iteration 2** |  |  |  | 37% → 89% | 109.62d → 103.58d |  |  |
| 63 | **Analysis & Design** |  |  |  | 37% → 89% | 109.62d → 103.58d |  |  |
| 64 | **Enhanced Logging** |  |  |  | 57% → 97% | 109.62d → 103.58d |  |  |
| 65 | **Detail Use Case Development** | 2005-09-28 A | 2005-10-03 A |  | 0% → 100% | 45.82d → none |  |  |
| 66 | Level 2 Use Cases | 2005-09-28 A | 2005-10-03 A |  | 0% → 100% | 25.15d → none |  |  |
| 72 | **Design** | 2005-09-27 A |  |  | 0% → 75% | 110.07d → 104.03d |  |  |
| 73 | Object Instance Level Security | 2005-09-27 A | 2005-09-27 A |  | 0% → 100% | 92.4d → none |  |  |
| 74 | Grid Security | 2005-09-28 A | 2005-09-28 A |  | 0% → 100% | 92.4d → none |  |  |
| 76 | SOP List | 2005-09-30 A | 2005-09-30 A |  | 0% → 100% | 92.4d → none |  |  |
| 77 | **Iteration 3** |  | 2006-01-04 → 2005-11-03 (-62d) | 61.67d → 23.45d |  | 25.95d → 16.87d |  |  |
| 78 | **Analysis & Design** |  | 2006-01-04 → 2005-11-03 (-62d) | 61.67d → 23.45d |  | 25.95d → 16.87d |  |  |
| 84 | **Authorization Caching** |  | 2006-01-04 → 2005-10-10 (-86d) | 61.67d → 5d |  | 25.95d → 16.87d |  |  |
| 97 | **Construction Phase** |  | 2006-02-22 → 2006-02-03 (-19d) | 101.42d → 88.67d |  |  |  |  |
| 115 | **Iteration 2** | 2005-12-05 → 2005-11-14 (-21d) | 2006-01-20 → 2005-12-28 (-23d) | 32d → 30d |  | 0d → 32.83d |  |  |
| 116 | **Audit Trail Enhancement** | 2005-12-05 → 2005-11-14 (-21d) | 2006-01-20 → 2005-12-28 (-23d) | 32d → 30d |  | 0d → 32.83d |  | was named Enhanced Logging |
| 117 | Development and Unit Test | 2005-12-05 → 2005-11-14 (-21d) | 2006-01-11 → 2005-12-13 (-29d) | 25d → 20d |  | 0d → 32.83d | 109 → none | constraint none → start no earlier than 2005-11-14; resources Vinay [50%] → Resource 3 |
| 118 | Development and Unit Test Complete | 2006-01-11 → 2005-12-13 (-29d) | 2006-01-11 → 2005-12-13 (-29d) |  |  | 0d → 32.83d |  | resources Vinay [50%] → Resource 3 |
| 119 | Develop Integration Test | 2006-01-11 → 2005-12-14 (-28d) | 2006-01-13 → 2005-12-20 (-24d) | 2d → 5d |  | 0d → 32.83d |  | resources Vinay [50%] → Resource 3 |
| 120 | Execute Integration Tests | 2006-01-13 → 2005-12-21 (-23d) | 2006-01-20 → 2005-12-28 (-23d) |  |  | 0d → 32.83d |  | resources Vinay [50%] → Resource 3 |
| 121 | **Iteration 3** | 2005-11-03 → 2005-11-14 (+11d) | 2006-02-03 → 2006-01-03 (-31d) | 60.22d → 32.32d |  | 25.95d → 20.32d |  |  |
| 122 | **Hibernate Upgrade** | 2005-11-03 → 2005-11-14 (+11d) | 2005-12-20 → 2005-12-28 (+8d) |  |  | 43.97d → 32.83d |  |  |
| 123 | Development and Unit Test | 2005-11-03 → 2005-11-14 (+11d) | 2005-12-06 → 2005-12-13 (+7d) |  |  | 26.3d → 32.83d | 83 → none | constraint none → start no earlier than 2005-11-14 |
| 124 | Development and Unit Test Complete | 2005-12-06 → 2005-12-13 (+7d) | 2005-12-06 → 2005-12-13 (+7d) |  |  | 26.3d → 32.83d |  |  |
| 125 | Regression Testing | 2005-12-06 → 2005-12-14 (+8d) | 2005-12-20 → 2005-12-28 (+8d) |  |  | 26.3d → 32.83d |  |  |
| 126 | **Authorization Caching** | 2006-01-04 → 2005-12-14 (-21d) | 2006-02-03 → 2006-01-03 (-31d) | 22d → 12d |  | 25.95d → 0d |  |  |
| 127 | Gather Requirements | 2006-01-04 → 2005-12-14 (-21d) | 2006-01-25 → 2006-01-03 (-22d) | 15d → 5d |  | 25.95d → 0d | Design Baselined/Sign Off → 114 | was named Development and Unit Test |
| 128 | **Iteration 4** | 2005-12-20 → 2005-12-29 (+9d) | 2006-02-22 → 2006-02-03 (-19d) | 43.17d → 25.32d |  | 13d → 2.32d |  |  |
| 129 | **Document Creation** | 2005-12-20 → 2005-12-29 (+9d) | 2006-01-13 → 2006-01-17 (+4d) | 15.3d → 12.2d |  | 40.87d → 32.83d |  |  |
| 130 | SDK Programmers Guide | 2005-12-27 → 2005-12-29 (+2d) | 2006-01-10 → 2006-01-12 (+2d) |  |  | 23.2d → 32.83d | 125 → 120 | resources Eric → Resource 3 |
| 131 | Review | 2006-01-11 → 2006-01-13 (+2d) | 2006-01-11 → 2006-01-13 (+2d) |  |  | 23.2d → 32.83d |  |  |
| 132 | Update from Review | 2006-01-11 → 2006-01-13 (+2d) | 2006-01-13 → 2006-01-17 (+4d) |  |  | 23.2d → 32.83d |  | resources Eric → Resource 3 |
| 133 | CSM Guide For Application Developers | 2005-12-20 → 2005-12-29 (+9d) | 2006-01-05 → 2006-01-12 (+7d) |  |  | 26.3d → 32.83d |  |  |
| 134 | Review | 2006-01-05 → 2006-01-13 (+8d) | 2006-01-06 → 2006-01-13 (+7d) |  |  | 26.3d → 32.83d |  |  |
| 135 | Update From Review | 2006-01-06 → 2006-01-13 (+7d) | 2006-01-10 → 2006-01-17 (+7d) |  |  | 26.3d → 32.83d |  |  |
| 136 | Baseline/SignOff Documents | 2006-01-10 → 2006-01-17 (+7d) | 2006-01-10 → 2006-01-17 (+7d) |  |  | 26.3d → 32.83d |  |  |
| 137 | **QA Testing** | 2006-01-20 → 2006-01-03 (-17d) | 2006-02-22 → 2006-02-03 (-19d) |  |  |  |  |  |
| 138 | Technical Test Development | 2006-01-20 → 2006-01-03 (-17d) | 2006-02-03 → 2006-01-17 (-17d) |  |  |  | 120 → 127 | resources Vinay [50%] → Kunal [75%] |
| 139 | Execution/Defect Fixes | 2006-02-03 → 2006-01-17 (-17d) | 2006-02-17 → 2006-01-31 (-17d) |  |  |  |  | resources Eric; Vinay [50%]; Kunal [75%]; Resource 4 → Eric; Resource 3; Kunal [75%]; Resource 4 |
| 140 | Testing Report Creation | 2006-02-17 → 2006-01-31 (-17d) | 2006-02-22 → 2006-02-03 (-19d) |  |  | 13d → 19.71d |  |  |
| 141 | **Transition Phase** | 2006-02-17 → 2006-01-31 (-17d) | 2006-03-13 → 2006-03-03 (-10d) | 16d → 22.71d |  |  |  |  |
| 142 | Deployment to Stage | 2006-02-17 → 2006-01-31 (-17d) | 2006-02-22 → 2006-02-03 (-19d) |  |  |  |  |  |
| 143 | SOP Updates | 2006-02-22 → 2006-02-03 (-19d) | 2006-02-27 → 2006-02-10 (-17d) |  |  |  |  | resources Kunal [75%]; Vinay [50%] → Kunal [75%]; Resource 3 |
| 144 | Stage Testing | 2006-02-27 → 2006-02-10 (-17d) | 2006-03-06 → 2006-02-17 (-17d) |  |  |  |  | resources Eric; Vinay [50%]; Kunal [75%]; Resource 4 → Eric; Resource 3; Kunal [75%]; Resource 4 |
| 145 | Testing Report | 2006-03-06 → 2006-02-17 (-17d) | 2006-03-08 → 2006-02-21 (-15d) |  |  | 3d → 8d |  |  |
| 146 | **Deployment to Production** | 2006-03-06 → 2006-02-17 (-17d) | 2006-03-13 → 2006-03-03 (-10d) | 5d → 10d |  |  |  |  |
| 147 | Update Zope Site | 2006-03-06 → 2006-02-17 (-17d) | 2006-03-13 → 2006-02-24 (-17d) |  |  |  |  |  |
| 148 | Work With Operations/ Finalize Builds | 2006-03-06 → 2006-02-17 (-17d) | 2006-03-13 → 2006-02-22 (-19d) | 5d → 3d |  | 0d → 7d |  | resources Resource 4 → Resource 4; Resource 3 |
| 150 | CSM 3.1 Complete | 2006-03-13 → 2006-03-03 (-10d) | 2006-03-13 → 2006-03-03 (-10d) |  |  |  |  |  |

## Version 5 (saved 2005-10-17)

Note of the change: baseline candidate draft

Last finish 2006-03-03 → 2006-03-09 (+6d). Complete tasks 35 → 39.

Added:

| ID | Task | Duration | Start | Finish | Predecessors | Constraint | Resources |
| --- | --- | --- | --- | --- | --- | --- | --- |
| 114 | **CSM Defect Fix** | 7d | 2005-10-12 | 2005-10-20 |  |  |  |
| 115 | Development and Unit Testing | 3d | 2005-10-12 | 2005-10-14 |  | start no earlier than 2005-10-12 | Kunal |
| 116 | Review Junit Test Cases | 0.2d | 2005-10-18 | 2005-10-18 | 115FS+1d |  | Charles; Kunal; Eric |
| 117 | QA Testing | 2d | 2005-10-17 | 2005-10-18 | 115 |  | Eric |
| 118 | Release Packaging | 1d | 2005-10-19 | 2005-10-19 | 117 |  | Kunal |
| 119 | Move to Production | 1d | 2005-10-20 | 2005-10-20 | 118 |  | Kunal |

Removed: 92 Authorization Caching

Changed:

| ID | Task | Start | Finish | Duration | Complete | Total float | Predecessors | Other |
| --- | --- | --- | --- | --- | --- | --- | --- | --- |
| 1 | **CSM Post Release** |  |  |  | 85% → 97% | 113.78d → 118.46d |  |  |
| 36 | **Planning** |  |  |  | 37% → 99% | 113.78d → 118.46d |  |  |
| 37 | Project Plan | 2005-08-25 A | 2005-09-07 A |  | 0% → 100% | 112.05d → none |  |  |
| 38 | Project Plan Review | 2005-09-08 A | 2005-09-08 A |  | 0% → 100% | 112.05d → none |  |  |
| 43 | **CSM 3.1** |  | 2006-03-03 → 2006-03-09 (+6d) | 115.78d → 120.46d | 4% → 7% |  |  |  |
| 47 | **Elaboration Phase** |  | 2006-01-09 → 2006-01-04 (-5d) | 77.07d → 74.62d | 30% → 36% | 38.71d → 45.85d |  |  |
| 48 | **Iteration 1** |  |  |  | 83% → 86% | 106.58d → 111.26d |  |  |
| 49 | **Analysis & Design** |  |  |  | 83% → 86% | 106.58d → 111.26d |  |  |
| 50 | **SDK Integration** |  |  |  | 83% → 86% | 106.58d → 111.26d |  |  |
| 52 | **Detail Use Case Development** |  |  |  | 83% → 86% | 106.58d → 111.26d |  |  |
| 54 | Use Case Review | 2005-09-27 A | 2005-09-27 A |  | 0% → 100% | 25.15d → none |  |  |
| 56 | **Design** |  |  |  | 77% → 81% | 0d → 110.71d |  |  |
| 57 | Detail Design |  | 2005-09-23 A |  | 95% → 100% | 0d → none |  |  |
| 58 | DD Update Draft Complete |  |  |  |  | 0d → 110.71d |  | was named SAD Update Draft Complete |
| 77 | **Iteration 3** | 2005-10-03 A | 2005-11-03 → 2005-11-08 (+5d) | 23.45d → 26.25d | 0% → 21% | 16.87d → 82.01d |  |  |
| 78 | **Analysis & Design** | 2005-10-03 A | 2005-11-03 → 2005-11-08 (+5d) | 23.45d → 26.25d | 0% → 21% | 16.87d → 82.01d |  |  |
| 79 | **Hibernate Upgrade** |  | 2005-11-03 → 2005-11-08 (+5d) | 13.9d → 16.7d |  | 80.13d → 82.01d |  |  |
| 80 | Define Approach |  | 2005-11-01 → 2005-11-04 (+3d) | 12d → 15d |  | 26.3d → 82.01d |  | resources Resource 4 → Charles [10%] |
| 81 | Approach Review | 2005-11-02 → 2005-11-07 (+5d) | 2005-11-02 → 2005-11-07 (+5d) |  |  | 26.3d → 82.01d |  | resources Kunal [75%]; Charles; Eric; Vinay → Kunal [75%]; Charles |
| 82 | Update Approach | 2005-11-02 → 2005-11-07 (+5d) | 2005-11-03 → 2005-11-08 (+5d) |  |  | 26.3d → 82.01d |  | resources Resource 4 → Charles [10%] |
| 83 | Approach Baselined/Sign Off | 2005-11-03 → 2005-11-08 (+5d) | 2005-11-03 → 2005-11-08 (+5d) | 0.2d → 0d |  | 26.3d → 82.01d |  | resources Kunal [75%]; Charles; Eric; Vinay; Resource 4 → Charles |
| 84 | **Authorization Caching** | 2005-10-03 A |  |  | 0% → 90% | 16.87d → 28.9d |  |  |
| 85 | **Detail Use Case Development** | 2005-10-03 A |  |  | 0% → 90% | 16.87d → 28.9d |  |  |
| 86 | Use Case # | 2005-10-03 A |  |  | 0% → 90% | 25.15d → 16.87d |  |  |
| 87 | **Iteration 4** |  | 2006-01-09 → 2006-01-04 (-5d) | 59.87d → 57.42d |  | 16.87d → 28.9d |  |  |
| 88 | **Test Plan** |  | 2006-01-09 → 2006-01-04 (-5d) | 59.87d → 57.42d |  | 16.87d → 28.9d |  |  |
| 90 | SDK Integration |  | 2005-10-24 → 2005-10-20 (-4d) | 5d → 3d |  | 16.87d → 93.26d |  |  |
| 91 | Regression Tests for Hibernate Upgrade | 2006-01-03 → 2005-10-20 (-75d) | 2006-01-09 → 2005-10-24 (-77d) | 4d → 2d |  | 38.71d → 93.26d | Authorization Caching → 90 |  |
| 92 | Enhanced Logging | 2005-12-14 → 2005-12-28 (+14d) | 2005-12-27 → 2006-01-04 (+8d) |  |  | 38.71d → 45.85d |  | resources Eric → Brian |
| 93 | SOP Check (existing and new) | 2005-10-24 → 2005-11-01 (+8d) | 2005-10-25 → 2005-11-07 (+13d) | 1d → 5d |  | 16.87d → 13.35d | 90 → none | constraint none → start no earlier than 2005-11-01; resources Eric → Charles |
| 94 | Cummalative Requirements Document | 2005-10-25 → 2005-11-08 (+14d) | 2005-11-01 → 2005-11-15 (+14d) |  |  | 16.87d → 13.35d |  |  |
| 95 | Traceability Matrix | 2005-11-01 → 2005-11-16 (+15d) | 2005-11-09 → 2005-11-23 (+14d) |  |  | 16.87d → 13.35d |  |  |
| 96 | **Construction Phase** | 2005-09-26 A | 2006-02-03 → 2006-02-09 (+6d) | 88.67d → 93.35d | 0% → 7% | 0d → 19.71d |  |  |
| 97 | **Iteration 1** | 2005-09-26 A | 2005-12-14 → 2005-12-28 (+14d) | 53.67d → 63.22d | 0% → 18% | 0d → 49.85d |  |  |
| 98 | **SDK Integration** | 2005-09-26 A | 2005-12-14 → 2005-12-28 (+14d) | 53.67d → 63.22d | 0% → 20% | 0d → 49.85d |  |  |
| 99 | **Development and Unit Test** | 2005-09-26 A | 2005-12-05 → 2005-12-09 (+4d) | 46.67d → 51.22d | 0% → 25% | 0d → 61.85d |  |  |
| 100 | Merging ListProxy and SDKLIistProxy | 2005-09-26 A |  |  | 0% → 80% | 0d → 105.91d |  |  |
| 101 | Merging ApplicationService and SDKApplicationService | 2005-10-04 A |  |  | 0% → 80% | 0d → 101.31d |  |  |
| 102 | Business methods secured at class level | 2005-10-12 → 2005-10-21 (+9d) | 2005-10-25 → 2005-11-03 (+9d) |  |  | 0d → 1.49d | 101 → 119 |  |
| 103 | Merge Build file to have single generation process | 2005-10-25 → 2005-11-03 (+9d) | 2005-11-07 → 2005-11-17 (+10d) |  |  | 0d → 1.49d |  |  |
| 104 | Code Review | 2005-11-07 → 2005-11-17 (+10d) | 2005-11-07 → 2005-11-17 (+10d) | 0.25d → 0.38d |  | 0d → 1.49d |  | resources Kunal; Vinay; Eric → Kunal; SAIC |
| 105 | Flag to add writeable apis to generated code | 2005-11-07 → 2005-11-17 (+10d) | 2005-11-14 → 2005-11-23 (+9d) |  |  | 0d → 1.49d |  |  |
| 106 | Turn Security off by default | 2005-11-14 → 2005-11-23 (+9d) | 2005-11-18 → 2005-12-01 (+13d) |  |  | 0d → 1.49d |  |  |
| 107 | Enhance Security Error Reporting | 2005-11-18 → 2005-12-01 (+13d) | 2005-11-23 → 2005-12-06 (+13d) |  |  | 0d → 1.49d |  |  |
| 108 | Code Merge and Cleanup | 2005-11-23 A | 2005-12-05 → 2005-12-09 (+4d) |  | 0% → 40% | 0d → 1.49d |  |  |
| 109 | Code Review | 2005-12-05 → 2005-12-09 (+4d) | 2005-12-05 → 2005-12-09 (+4d) | 0.25d → 0.38d |  | 0d → 1.49d |  | resources Kunal; Vinay; Eric → Kunal; SAIC |
| 110 | Development and Unit Test Complete | 2005-12-05 → 2005-12-09 (+4d) | 2005-12-05 → 2005-12-09 (+4d) |  |  | 0d → 1.49d |  |  |
| 111 | **Integration Test** | 2005-12-05 → 2005-12-09 (+4d) | 2005-12-14 → 2005-12-28 (+14d) | 7d → 12d |  | 0d → 1.49d |  |  |
| 112 | Develop Integration Tests | 2005-12-05 → 2005-12-09 (+4d) | 2005-12-07 → 2005-12-13 (+6d) |  |  | 0d → 1.49d |  |  |
| 113 | Execute/Review Integration Tests | 2005-12-07 → 2005-12-13 (+6d) | 2005-12-14 → 2005-12-28 (+14d) | 5d → 10d |  | 0d → 1.49d |  | was named Execute Integration Tests; resources Kunal [75%]; Eric → Kunal [75%]; Charles; QA |
| 126 | **Iteration 3** |  | 2006-01-03 → 2006-01-09 (+6d) | 32.32d → 37d |  | 20.32d → 30.46d |  |  |
| 128 | Development and Unit Test |  |  |  |  | 32.83d → 37.46d |  | resources Resource 4 → Resource 2 |
| 129 | Development and Unit Test Complete |  |  |  |  | 32.83d → 37.46d |  | resources Resource 4 → Resource 2 |
| 130 | Regression/Integration Testing |  |  |  |  | 32.83d → 37.46d |  | was named Regression Testing; resources Resource 4; Eric → Resource 2; Charles |
| 131 | **Authorization Caching** | 2005-12-14 → 2006-01-03 (+20d) | 2006-01-03 → 2006-01-09 (+6d) | 12d → 5d |  |  |  |  |
| 132 | Gather Requirements | 2005-12-14 → 2006-01-03 (+20d) | 2006-01-03 → 2006-01-09 (+6d) |  |  |  |  |  |
| 133 | **Iteration 4** |  | 2006-02-03 → 2006-02-09 (+6d) | 25.32d → 30d |  | 2.32d → 7d |  |  |
| 134 | **Document Creation** |  |  | 12.2d → 12.25d |  | 32.83d → 37.46d |  |  |
| 136 | Review |  |  | 0.2d → 0.25d |  | 32.83d → 37.46d |  | resources Eric; Kunal; Vinay; Resource 4; Charles → Kunal; Resource 3; Resource 2; Charles |
| 138 | CSM Guide For Application Developers |  |  |  |  | 32.83d → 37.46d |  | resources Resource 4 → Resource 2 |
| 139 | Review |  |  | 0.2d → 0.25d |  | 32.83d → 37.46d |  | resources Eric; Kunal; Vinay; Resource 4; Charles → Kunal; Resource 3; Resource 2; Charles |
| 140 | Update From Review |  |  |  |  | 32.83d → 37.46d |  | resources Resource 4 → Resource 2 |
| 141 | Baseline/SignOff Documents |  |  |  |  | 32.83d → 37.46d |  | resources Resource 4 → Resource 2 |
| 142 | **QA Testing** | 2006-01-03 → 2006-01-10 (+7d) | 2006-02-03 → 2006-02-09 (+6d) |  |  |  |  |  |
| 143 | Technical Test Development | 2006-01-03 → 2006-01-10 (+7d) | 2006-01-17 → 2006-01-23 (+6d) |  |  |  |  |  |
| 144 | Execution/Defect Fixes | 2006-01-17 → 2006-01-24 (+7d) | 2006-01-31 → 2006-02-06 (+6d) |  |  |  |  | resources Eric; Resource 3; Kunal [75%]; Resource 4 → Resource 3; Kunal [75%]; Resource 2 |
| 145 | Testing Report Creation | 2006-01-31 → 2006-02-07 (+7d) | 2006-02-03 → 2006-02-09 (+6d) |  |  |  |  | resources Eric → Resource 3 |
| 146 | **Transition Phase** | 2006-01-31 → 2006-02-07 (+7d) | 2006-03-03 → 2006-03-09 (+6d) |  |  |  |  |  |
| 147 | Deployment to Stage | 2006-01-31 → 2006-02-07 (+7d) | 2006-02-03 → 2006-02-09 (+6d) |  |  |  |  | resources Resource 4 → Resource 2 |
| 148 | SOP Updates | 2006-02-03 → 2006-02-10 (+7d) | 2006-02-10 → 2006-02-16 (+6d) |  |  |  |  |  |

| ID | Task | Start | Finish | Other |
| --- | --- | --- | --- | --- |
| 149 | Stage Testing | 2006-02-10 → 2006-02-16 (+6d) | 2006-02-17 → 2006-02-23 (+6d) | resources Eric; Resource 3; Kunal [75%]; Resource 4 → Eric; Resource 3; Kunal [75%]; Resource 2 |
| 150 | Testing Report | 2006-02-17 → 2006-02-23 (+6d) | 2006-02-21 → 2006-02-27 (+6d) | resources Eric → Resource 3 |
| 151 | **Deployment to Production** | 2006-02-17 → 2006-02-23 (+6d) | 2006-03-03 → 2006-03-09 (+6d) |  |
| 152 | Update Zope Site | 2006-02-17 → 2006-02-23 (+6d) | 2006-02-24 → 2006-03-02 (+6d) |  |
| 153 | Work With Operations/ Finalize Builds | 2006-02-17 → 2006-02-23 (+6d) | 2006-02-22 → 2006-02-28 (+6d) | resources Resource 4; Resource 3 → Resource 2; Resource 3 |
| 154 | 21 CFR Part 11 Document Prep | 2006-02-24 → 2006-03-02 (+6d) | 2006-03-03 → 2006-03-09 (+6d) | resources Resource 4; Resource 3; Kunal [75%] → Resource 2; Resource 3; Kunal [75%] |
| 155 | CSM 3.1 Complete | 2006-03-03 → 2006-03-09 (+6d) | 2006-03-03 → 2006-03-09 (+6d) |  |

## Version 6 (saved 2005-10-18)

Note of the change: updated after status meeting. Also added the UPT enhancements.

Last finish stays 2006-03-09. Complete tasks 39 → 49.

Removed: 37 Project Plan; 38 Project Plan Review; 42 Project Plan SignOff

Changed:

| ID | Task | Start | Finish | Duration | Complete | Total float | Other |
| --- | --- | --- | --- | --- | --- | --- | --- |
| 1 | **CSM Post Release** |  |  |  | 97% → 96% |  |  |
| 29 | **Requirement Gathering/Scope** |  | 2005-09-15 A |  | 99% → 100% | 0d → none |  |
| 35 | Scope Document SignOff | 2005-09-15 A | 2005-09-15 A |  | 0% → 100% | 0d → none |  |
| 36 | **Planning** | 2005-08-25 A → 2005-09-09 A (+15d) | 2005-09-19 A | 17.25d → 6d | 99% → 100% | 118.46d → none |  |
| 39 | Task Plan SignOff | 2005-09-19 A | 2005-09-19 A |  | 0% → 100% | 105d → none |  |
| 40 | **CSM 3.1** |  |  |  | 7% → 11% |  |  |
| 44 | **Elaboration Phase** |  |  |  | 36% → 60% |  |  |
| 45 | **Iteration 1** |  | 2005-09-28 A |  | 86% → 100% | 111.26d → none |  |
| 46 | **Analysis & Design** |  | 2005-09-28 A |  | 86% → 100% | 111.26d → none |  |
| 47 | **SDK Integration** |  | 2005-09-28 A |  | 86% → 100% | 111.26d → none |  |
| 49 | **Detail Use Case Development** |  | 2005-09-28 A |  | 86% → 100% | 111.26d → none |  |
| 52 | Update/Baseline Use Cases | 2005-09-27 A | 2005-09-28 A |  | 0% → 100% | 25.15d → none |  |
| 53 | **Design** |  | 2005-09-26 A |  | 81% → 100% | 110.71d → none |  |
| 55 | DD Update Draft Complete | 2005-09-23 A | 2005-09-23 A |  | 0% → 100% | 110.71d → none |  |
| 56 | Design Review | 2005-09-23 A | 2005-09-23 A |  | 0% → 100% | 11.7d → none |  |
| 57 | Update Design | 2005-09-23 A | 2005-09-26 A |  | 0% → 100% | 11.7d → none |  |
| 58 | Design Baselined/Sign Off | 2005-09-26 A | 2005-09-26 A |  | 0% → 100% | 11.7d → none |  |
| 70 | Object Instance Security |  |  |  |  |  | was named Object Instance Level Security |
| 74 | **Iteration 3** |  |  |  | 21% → 23% |  |  |
| 75 | **Analysis & Design** |  |  |  | 21% → 23% |  |  |
| 81 | **Authorization Caching** |  | 2005-10-10 A |  | 90% → 100% | 28.9d → none |  |
| 82 | **Detail Use Case Development** |  | 2005-10-10 A |  | 90% → 100% | 28.9d → none |  |
| 83 | Use Case # |  | 2005-10-10 A |  | 90% → 100% | 16.87d → none |  |
| 84 | **Iteration 4** | 2005-10-10 A |  |  | 0% → 53% | 28.9d → 45.85d |  |
| 85 | **Test Plan** | 2005-10-10 A |  |  | 0% → 26% | 28.9d → 45.85d |  |
| 86 | Overall Test Plan | 2005-10-10 A | 2005-10-17 A |  | 0% → 100% | 16.87d → none |  |
| 91 | Cummalative Requirements Document | 2005-11-08 A | 2005-11-15 A |  | 0% → 100% | 13.35d → none |  |
| 92 | Traceability Matrix | 2005-11-16 A | 2005-11-23 A |  | 0% → 100% | 13.35d → none |  |
| 93 | **Construction Phase** |  |  |  | 7% → 8% |  |  |
| 94 | **Iteration 1** |  |  |  | 18% → 22% |  |  |
| 111 | **CSM Defect Fix** | 2005-10-12 A |  |  | 0% → 42% | 1.49d → 94.71d |  |
| 112 | Development and Unit Testing | 2005-10-12 A | 2005-10-14 A |  | 0% → 100% | 1.49d → none |  |
| 114 | QA Testing |  |  |  |  |  | resources Eric → Charles |
| 124 | **Hibernate Upgrade & UPT Enhancments** |  | 2005-12-28 → 2006-01-05 (+8d) | 30d → 35d |  | 37.46d → 32.46d | was named Hibernate Upgrade |
| 125 | Development and Unit Test |  | 2005-12-13 → 2005-12-20 (+7d) | 20d → 25d |  | 37.46d → 32.46d |  |
| 126 | Development and Unit Test Complete | 2005-12-13 → 2005-12-20 (+7d) | 2005-12-13 → 2005-12-20 (+7d) |  |  | 37.46d → 32.46d |  |
| 127 | Regression/Integration Testing | 2005-12-14 → 2005-12-21 (+7d) | 2005-12-28 → 2006-01-05 (+8d) |  |  | 37.46d → 32.46d |  |
| 131 | **Document Creation** |  | 2006-01-17 → 2006-01-24 (+7d) | 12.25d → 17.25d |  | 37.46d → 32.46d |  |
| 135 | CSM Guide For Application Developers | 2005-12-29 → 2006-01-06 (+8d) | 2006-01-12 → 2006-01-19 (+7d) |  |  | 37.46d → 32.46d |  |
| 136 | Review | 2006-01-13 → 2006-01-20 (+7d) | 2006-01-13 → 2006-01-20 (+7d) |  |  | 37.46d → 32.46d |  |
| 137 | Update From Review | 2006-01-13 → 2006-01-20 (+7d) | 2006-01-17 → 2006-01-24 (+7d) |  |  | 37.46d → 32.46d |  |
| 138 | Baseline/SignOff Documents | 2006-01-17 → 2006-01-24 (+7d) | 2006-01-17 → 2006-01-24 (+7d) |  |  | 37.46d → 32.46d |  |

## Version 7 (saved 2005-10-24)

Note of the change: updated after status meeting

Last finish stays 2006-03-09. Complete tasks 49 → 52.

Changed:

| ID | Task | Start | Finish | Complete | Total float |
| --- | --- | --- | --- | --- | --- |
| 40 | **CSM 3.1** |  |  | 11% → 12% |  |
| 93 | **Construction Phase** |  |  | 8% → 11% |  |
| 94 | **Iteration 1** |  |  | 22% → 32% |  |
| 95 | **SDK Integration** |  |  | 20% → 25% |  |
| 96 | **Development and Unit Test** |  |  | 25% → 32% |  |
| 103 | Turn Security off by default | 2005-11-23 A |  | 0% → 80% |  |
| 111 | **CSM Defect Fix** |  |  | 42% → 86% | 94.71d → 4.69d |
| 113 | Review Junit Test Cases | 2005-10-18 A | 2005-10-18 A | 0% → 100% | 97.51d → none |
| 114 | QA Testing | 2005-10-17 A | 2005-10-18 A | 0% → 100% | 1.49d → none |
| 115 | Release Packaging | 2005-10-19 A | 2005-10-19 A | 0% → 100% | 1.49d → none |

## Version 8 (saved 2005-11-18)

Note of the change: Updated per the 11/18/2005 status meeting

Last finish stays 2006-03-09. Complete tasks 52 → 57.

Changed:

| ID | Task | Start | Finish | Complete | Total float | Other |
| --- | --- | --- | --- | --- | --- | --- |
| 40 | **CSM 3.1** |  |  | 12% → 17% |  |  |
| 44 | **Elaboration Phase** |  |  | 60% → 84% |  |  |
| 74 | **Iteration 3** |  | 2005-11-08 A | 23% → 100% | 82.01d → none |  |
| 75 | **Analysis & Design** |  | 2005-11-08 A | 23% → 100% | 82.01d → none |  |
| 76 | **Hibernate Upgrade** | 2005-10-17 A | 2005-11-08 A | 0% → 100% | 82.01d → none |  |
| 77 | Define Approach | 2005-10-17 A | 2005-11-04 A | 0% → 100% | 82.01d → none |  |
| 78 | Approach Review | 2005-11-07 A | 2005-11-07 A | 0% → 100% | 82.01d → none |  |
| 79 | Update Approach | 2005-11-07 A | 2005-11-08 A | 0% → 100% | 82.01d → none |  |
| 80 | Approach Baselined/Sign Off | 2005-11-08 A | 2005-11-08 A | 0% → 100% | 82.01d → none |  |
| 84 | **Iteration 4** |  |  | 53% → 62% |  |  |
| 85 | **Test Plan** |  |  | 26% → 41% |  |  |
| 87 | SDK Integration | 2005-10-17 A |  | 0% → 90% |  |  |
| 93 | **Construction Phase** |  |  | 11% → 17% |  |  |
| 94 | **Iteration 1** |  |  | 32% → 46% |  |  |
| 95 | **SDK Integration** |  |  | 25% → 40% |  |  |
| 96 | **Development and Unit Test** |  |  | 32% → 50% |  |  |
| 99 | Business methods secured at class level | 2005-10-21 A |  | 0% → 50% | 1.49d → 8.74d |  |
| 104 | Enhance Security Error Reporting | 2005-12-01 A |  | 0% → 70% | 1.49d → 3.79d |  |
| 105 | Code Merge and Cleanup |  |  | 40% → 80% |  |  |
| 111 | **CSM Defect Fix** |  | 2005-10-20 A | 86% → 100% | 4.69d → none |  |
| 116 | Move to Production | 2005-10-20 A | 2005-10-20 A | 0% → 100% | 1.49d → none |  |
| 117 | **Iteration 2** | 2005-11-14 A |  | 0% → 3% |  |  |
| 118 | **Audit Trail Enhancement** | 2005-11-14 A |  | 0% → 3% |  |  |
| 119 | Development and Unit Test | 2005-11-14 A |  | 0% → 5% |  |  |
| 125 | Development and Unit Test |  |  |  |  | resources Resource 2 → Art |
| 126 | Development and Unit Test Complete |  |  |  |  | resources Resource 2 → Art |
| 127 | Regression/Integration Testing |  |  |  |  | resources Resource 2; Charles → Art; Charles |
| 133 | Review |  |  |  |  | resources Kunal; Resource 3; Resource 2; Charles → Kunal; Resource 3; Art; Charles |
| 135 | CSM Guide For Application Developers |  |  |  |  | resources Resource 2 → Art |
| 136 | Review |  |  |  |  | resources Kunal; Resource 3; Resource 2; Charles → Kunal; Resource 3; Art; Charles |
| 137 | Update From Review |  |  |  |  | resources Resource 2 → Art |
| 138 | Baseline/SignOff Documents |  |  |  |  | resources Resource 2 → Art |
| 141 | Execution/Defect Fixes |  |  |  |  | resources Resource 3; Kunal [75%]; Resource 2 → Resource 3; Kunal [75%]; Art |
| 144 | Deployment to Stage |  |  |  |  | resources Resource 2 → Art |
| 146 | Stage Testing |  |  |  |  | resources Eric; Resource 3; Kunal [75%]; Resource 2 → Eric; Resource 3; Kunal [75%]; Art |
| 150 | Work With Operations/ Finalize Builds |  |  |  |  | resources Resource 2; Resource 3 → Art; Resource 3 |
| 151 | 21 CFR Part 11 Document Prep |  |  |  |  | resources Resource 2; Resource 3; Kunal [75%] → Art; Resource 3; Kunal [75%] |

## Version 9 (saved 2005-12-09)

Note of the change: Updated based on new release dates and change in resources

Last finish 2006-03-09 → 2006-03-20 (+11d). Complete tasks 57 → 67.

Added:

| ID | Task | Duration | Start | Finish | Predecessors | Constraint | Resources |
| --- | --- | --- | --- | --- | --- | --- | --- |
| 120 | Transaction Behavior Prototype | 3d | 2005-12-09 | 2005-12-13 |  |  | Art |
| 121 | Design Update | 0.5d | 2005-12-14 | 2005-12-14 | 120 |  | Art |
| 122 | UPT User Lockout | 1d | 2005-12-14 | 2005-12-15 | 121 |  | Art |
| 123 | **JDBC Appender Modification** | 12.55d | 2005-12-15 | 2006-01-05 |  |  |  |
| 124 | Add User, Session Id to database schema | 0.25d | 2005-12-15 | 2005-12-15 | 122 |  | Art |
| 125 | Retrieve User and Session Info | 2d | 2005-12-15 | 2005-12-19 | 124 |  | Art |
| 126 | Code Review | 0.3d | 2005-12-19 | 2005-12-20 | 125 |  | Art; Kunal; Charles |
| 127 | Update Browser | 4d | 2005-12-29 | 2006-01-05 | 132 |  | Art |
| 128 | **Object State Logger** | 6d | 2005-12-20 | 2005-12-29 |  |  |  |
| 129 | Message Generation Utility | 1d | 2005-12-20 | 2005-12-21 | 126 |  | Art |
| 130 | **Application Configuration** | 5d | 2005-12-21 | 2005-12-29 |  |  |  |
| 131 | Object Configuration | 3d | 2005-12-21 | 2005-12-27 | 129 |  | Art |
| 132 | Logging Switch | 2d | 2005-12-27 | 2005-12-29 | 131 |  | Art |
| 133 | Code Review | 0.5d | 2006-01-05 | 2006-01-05 | 127 |  | Art; Kunal; Charles |
| 134 | Test Documentation | 1d | 2006-01-05 | 2006-01-06 | 133 |  | Art |
| 135 | **CSM Audit Integration** | 5d | 2005-12-28 | 2006-01-05 |  |  |  |
| 136 | Object State/Event Logging | 5d | 2005-12-28 | 2006-01-05 | 110 | start no earlier than 2005-12-28 | Kunal |
| 143 | Code Review | 0.25d | 2005-12-08 | 2005-12-08 | 142 |  | Art; Kunal |
| 144 | Test Documentation | 0.75d | 2005-12-08 | 2005-12-08 | 143 |  | Art |
| 153 | CSM Guide For Application Developers Cont'd | 2d | 2006-01-30 | 2006-02-01 | 152 |  | Art |
| 156 | Common Logger | 7d | 2006-02-09 | 2006-02-20 | 151 |  | Kunal |
| 157 | Review | 0.25d | 2006-02-20 | 2006-02-20 | 156 |  | Kunal |
| 158 | Update from Review | 2d | 2006-02-20 | 2006-02-22 | 157 |  | Kunal |
| 162 | SDK Defect Fixes | 5d | 2006-01-16 | 2006-01-23 | 161 |  | Kunal [75%] |
| 166 | **Stage Testing** | 14.75d | 2006-02-06 | 2006-02-24 |  |  |  |
| 167 | Deployment Documentation | 3d | 2006-02-06 | 2006-02-09 | 155 |  | Art |
| 168 | Stage Test Preparation | 4d | 2006-02-13 | 2006-02-17 | 164 |  | QA |
| 169 | Deploy to Stage | 0d | 2006-02-16 | 2006-02-16 |  | start no earlier than 2006-02-16 | Art |
| 170 | Execute Stage Tests | 5d | 2006-02-17 | 2006-02-24 | 168 |  | QA |
| 171 | Defect Fixes/Test Support | 5d | 2006-02-17 | 2006-02-24 | 172 |  | Art |
| 172 | 21 Part CFR 11 Readiness | 6d | 2006-02-09 | 2006-02-17 | 167 |  | Art |
| 178 | Gforge Updates | 10d | 2006-03-03 | 2006-03-17 | 176 |  | QA [50%]; Kunal [50%] |
| 181 | CSM 3.1 Production Deployment | 0d | 2006-03-17 | 2006-03-17 |  | start no earlier than 2006-03-17 | Art |
| 182 | CSM 3.1 Released | 0d | 2006-03-20 | 2006-03-20 |  | start no earlier than 2006-03-20 | Art |

Removed: 121 Develop Integration Test; 122 Execute Integration Tests; 144 Deployment to Stage; 146 Stage Testing

Changed:

| ID | Task | Start | Finish | Duration | Complete | Total float | Predecessors | Other |
| --- | --- | --- | --- | --- | --- | --- | --- | --- |
| 40 | **CSM 3.1** |  | 2006-03-09 → 2006-03-20 (+11d) | 120.46d → 126.75d | 17% → 22% |  |  |  |
| 41 | Production Support |  | 2006-02-15 → 2006-02-06 (-9d) |  |  | 16.46d → 23.33d |  |  |
| 44 | **Elaboration Phase** |  |  |  | 84% → 91% | 45.85d → 52.13d |  |  |
| 84 | **Iteration 4** |  |  |  | 62% → 80% | 45.85d → 52.13d |  |  |
| 85 | **Test Plan** |  |  |  | 41% → 68% | 45.85d → 52.13d |  |  |
| 88 | Regression Tests for Hibernate Upgrade | 2005-10-20 A | 2005-10-24 A |  | 0% → 100% | 93.26d → none |  |  |
| 89 | Enhanced Logging | 2005-12-28 A |  |  | 0% → 80% | 45.85d → 52.13d |  |  |
| 93 | **Construction Phase** |  | 2006-02-09 → 2006-02-22 (+13d) | 93.35d → 101.72d | 17% → 38% | 19.71d → 17.63d |  |  |
| 94 | **Iteration 1** |  |  |  | 46% → 75% | 49.85d → 56.13d |  |  |
| 95 | **SDK Integration** |  |  |  | 40% → 72% | 49.85d → 56.13d |  |  |
| 96 | **Development and Unit Test** |  |  |  | 50% → 90% | 61.85d → 68.13d |  |  |
| 97 | Merging ListProxy and SDKLIistProxy |  | 2005-10-04 A |  | 80% → 100% | 105.91d → none |  |  |
| 98 | Merging ApplicationService and SDKApplicationService |  | 2005-10-12 A |  | 80% → 100% | 101.31d → none |  |  |
| 99 | Business methods secured at class level |  | 2005-11-03 A |  | 50% → 100% | 8.74d → none |  |  |
| 100 | Merge Build file to have single generation process | 2005-11-03 A |  |  | 0% → 70% | 1.49d → 76.04d |  |  |
| 102 | Flag to add writeable apis to generated code | 2005-11-17 A | 2005-11-23 A |  | 0% → 100% | 1.49d → none |  |  |
| 103 | Turn Security off by default |  | 2005-12-01 A |  | 80% → 100% | 1.49d → none |  |  |
| 104 | Enhance Security Error Reporting |  | 2005-12-06 A |  | 70% → 100% | 3.79d → none |  |  |
| 117 | **Iteration 2** | 2005-11-14 A → 2005-12-09 (+25d) | 2005-12-28 → 2006-01-06 (+9d) | 30d → 18.87d | 3% → 0% | 37.46d → 0.88d |  |  |
| 118 | **Audit Trail Enhancement** | 2005-11-14 A → 2005-12-09 (+25d) | 2005-12-28 → 2006-01-06 (+9d) | 30d → 18.87d | 3% → 0% | 37.46d → 0.88d |  |  |
| 119 | **Development and Unit Test** | 2005-11-14 A → 2005-12-09 (+25d) | 2005-12-13 → 2006-01-06 (+24d) | 20d → 18.55d | 5% → 0% | 37.46d → 1.2d | none → 139 | constraint start no earlier than 2005-11-14 → none; resources Resource 3 → none |
| 137 | CSM Integration Tests | 2005-12-13 → 2006-01-05 (+23d) | 2005-12-13 → 2006-01-06 (+24d) | 0d → 1d |  | 37.46d → 0.88d | 119 → 135 | was named Development and Unit Test Complete; resources Resource 3 → Art |
| 138 | **Iteration 3** | 2005-11-14 A | 2006-01-09 → 2006-01-05 (-4d) | 37d → 34.87d | 0% → 73% | 30.46d → 51.13d |  |  |
| 139 | **Hibernate and JDK Upgrades** | 2005-11-14 A | 2006-01-05 → 2005-12-08 (-28d) | 35d → 17d | 0% → 94% | 32.46d → 1.2d |  | was named Hibernate Upgrade & UPT Enhancments |
| 140 | Development and Unit Test | 2005-11-14 A | 2005-12-20 → 2005-11-28 A (-22d) | 25d → 9d | 0% → 100% | 32.46d → none |  |  |
| 141 | Development and Unit Test Complete | 2005-12-20 → 2005-11-28 A (-22d) | 2005-12-20 → 2005-11-28 A (-22d) |  | 0% → 100% | 32.46d → none |  |  |
| 142 | Regression/Integration Testing | 2005-12-21 → 2005-11-29 A (-22d) | 2006-01-05 → 2005-12-07 A (-29d) | 10d → 7d | 0% → 100% | 32.46d → none |  |  |
| 145 | **Authorization Caching** | 2006-01-03 → 2005-12-28 (-6d) | 2006-01-09 → 2006-01-05 (-4d) |  |  | 0d → 51.13d |  |  |
| 146 | Gather Requirements | 2006-01-03 → 2005-12-28 (-6d) | 2006-01-09 → 2006-01-05 (-4d) |  |  | 0d → 44.71d |  |  |
| 147 | **Iteration 4** | 2005-12-29 → 2006-01-06 (+8d) | 2006-02-09 → 2006-02-22 (+13d) | 30d → 32.5d |  | 7d → 0.88d |  |  |
| 148 | **Document Creation** | 2005-12-29 → 2006-01-16 (+18d) | 2006-01-24 → 2006-02-22 (+29d) | 17.25d → 26.5d |  | 32.46d → 0.88d |  |  |
| 149 | SDK Programmers Guide | 2005-12-29 → 2006-01-23 (+25d) | 2006-01-12 → 2006-02-06 (+25d) |  |  | 37.46d → 5.92d | Execute Integration Tests → 162 | resources Resource 3 → Kunal |
| 150 | Review | 2006-01-13 → 2006-02-06 (+24d) | 2006-01-13 → 2006-02-07 (+25d) |  |  | 37.46d → 5.92d |  | resources Kunal; Resource 3; Art; Charles → Kunal; QA; Art; Charles |
| 151 | Update from Review | 2006-01-13 → 2006-02-07 (+25d) | 2006-01-17 → 2006-02-09 (+23d) |  |  | 37.46d → 5.92d |  | resources Resource 3 → Kunal |
| 152 | CSM Guide For Application Developers | 2006-01-06 → 2006-01-16 (+10d) | 2006-01-19 → 2006-01-30 (+11d) |  |  | 32.46d → 0.88d | 142 → 161 | resources Art → Art [50%] |
| 154 | Review | 2006-01-20 → 2006-02-01 (+12d) | 2006-01-20 → 2006-02-02 (+13d) |  |  | 32.46d → 0.88d | 152 → 153 |  |
| 155 | Update From Review | 2006-01-20 → 2006-02-02 (+13d) | 2006-01-24 → 2006-02-06 (+13d) |  |  | 32.46d → 0.88d |  |  |
| 159 | Baseline/SignOff Documents | 2006-01-24 → 2006-02-22 (+29d) | 2006-01-24 → 2006-02-22 (+29d) |  |  | 32.46d → 5.92d | 155 → 158 | resources Art → Kunal; Charles |
| 160 | **QA Testing** | 2006-01-10 → 2006-01-06 (-4d) | 2006-02-09 → 2006-02-13 (+4d) | 23d → 26d |  | 0d → 0.88d |  |  |
| 161 | Technical Test Development | 2006-01-10 → 2006-01-06 (-4d) | 2006-01-23 → 2006-01-16 (-7d) | 10d → 6d |  | 0d → 0.88d | 146 → 137, 134 | resources Kunal [75%] → Kunal [75%]; Art |
| 163 | Execution/Defect Fixes | 2006-01-24 → 2006-01-23 (-1d) |  |  |  | 0d → 10.13d | 161 → 162 | resources Resource 3; Kunal [75%]; Art → Art [50%]; QA |
| 164 | Testing Report Creation/Requirements Matrix Update | 2006-02-07 → 2006-02-06 (-1d) | 2006-02-09 → 2006-02-13 (+4d) | 3d → 5d |  | 19.71d → 10.13d |  | was named Testing Report Creation; resources Resource 3 → QA |
| 165 | **Transition Phase** | 2006-02-07 → 2006-02-06 (-1d) | 2006-03-09 → 2006-03-17 (+8d) | 22.71d → 29d |  | 0d → 0.88d |  |  |
| 173 | Defect Fixes/SOP Updates/Documentation Review Support/Presentations | 2006-02-10 → 2006-02-22 (+12d) | 2006-02-16 → 2006-03-10 (+22d) | 3d → 10d |  | 0d → 5.92d | Deployment to Stage → 159 | was named SOP Updates |
| 174 | Testing Report | 2006-02-23 → 2006-02-24 (+1d) | 2006-02-27 → 2006-03-03 (+4d) | 2d → 5d |  | 8d → 10.13d | Stage Testing → 170 | resources Resource 3 → QA |
| 175 | **Deployment to Production** | 2006-02-23 → 2006-02-24 (+1d) | 2006-03-09 → 2006-03-17 (+8d) | 10d → 15d |  | 0d → 0.88d |  |  |
| 176 | Update Zope Site | 2006-02-23 → 2006-02-24 (+1d) | 2006-03-02 → 2006-03-03 (+1d) |  |  | 0d → 0.88d | Stage Testing → 171 | resources Kunal [75%] → Art |
| 177 | Work With Operations/ Finalize Builds | 2006-02-23 → 2006-03-03 (+8d) | 2006-02-28 → 2006-03-10 (+10d) | 3d → 5d |  | 7d → 5.88d | Stage Testing → 176 | resources Art; Resource 3 → Art |
| 179 | 21 CFR Part 11 Final Validation Readiness Prep | 2006-03-02 → 2006-03-03 (+1d) | 2006-03-09 → 2006-03-17 (+8d) | 5d → 10d |  | 0d → 0.88d |  | was named 21 CFR Part 11 Document Prep; resources Art; Resource 3; Kunal [75%] → QA [50%]; Kunal [50%] |
| 180 | CSM 3.1 Production Candidate | 2006-03-09 → 2006-03-10 (+1d) | 2006-03-09 → 2006-03-10 (+1d) |  |  | 0d → 5.88d | 175 → 177 | was named CSM 3.1 Complete; resources none → Art |

## Version 10 (saved 2005-12-13)

Note of the change: updates status on 12/13

Last finish stays 2006-03-20. Complete tasks 67 → 70.

Changed:

| ID | Task | Start | Finish | Complete | Total float |
| --- | --- | --- | --- | --- | --- |
| 40 | **CSM 3.1** |  |  | 22% → 23% |  |
| 93 | **Construction Phase** |  |  | 38% → 41% |  |
| 94 | **Iteration 1** |  |  | 75% → 79% | 56.13d → 49.71d |
| 95 | **SDK Integration** |  |  | 72% → 76% | 56.13d → 49.71d |
| 96 | **Development and Unit Test** |  |  | 90% → 96% | 68.13d → 61.71d |
| 100 | Merge Build file to have single generation process |  | 2005-11-17 A | 70% → 100% | 76.04d → none |
| 117 | **Iteration 2** | 2005-12-09 A |  | 0% → 11% |  |
| 118 | **Audit Trail Enhancement** | 2005-12-09 A |  | 0% → 11% |  |
| 119 | **Development and Unit Test** | 2005-12-09 A |  | 0% → 15% | 1.2d → 0.32d |
| 120 | Transaction Behavior Prototype | 2005-12-09 A |  | 0% → 90% |  |
| 138 | **Iteration 3** |  |  | 73% → 77% |  |
| 139 | **Hibernate and JDK Upgrades** |  | 2005-12-08 A | 94% → 100% | 1.2d → none |
| 143 | Code Review | 2005-12-08 A | 2005-12-08 A | 0% → 100% | 0.32d → none |
| 144 | Test Documentation | 2005-12-08 A | 2005-12-08 A | 0% → 100% | 0.32d → none |

## Version 11 (saved 2005-12-19)

Note of the change: updates status on 12/19

Last finish stays 2006-03-20. Complete tasks 70 → 71.

Changed:

| ID | Task | Start | Finish | Complete | Total float |
| --- | --- | --- | --- | --- | --- |
| 40 | **CSM 3.1** |  |  | 23% → 24% |  |
| 93 | **Construction Phase** |  |  | 41% → 45% |  |
| 94 | **Iteration 1** |  |  | 79% → 82% | 49.71d → 56.13d |
| 95 | **SDK Integration** |  |  | 76% → 79% | 49.71d → 56.13d |
| 96 | **Development and Unit Test** |  |  | 96% → 97% | 61.71d → 68.13d |
| 105 | Code Merge and Cleanup |  |  | 80% → 90% | 0.88d → 2.08d |
| 108 | **Integration Test** | 2005-12-09 A |  | 0% → 10% |  |
| 109 | Develop Integration Tests | 2005-12-09 A |  | 0% → 60% |  |
| 117 | **Iteration 2** |  |  | 11% → 29% |  |
| 118 | **Audit Trail Enhancement** |  |  | 11% → 29% |  |
| 119 | **Development and Unit Test** |  |  | 15% → 38% |  |
| 120 | Transaction Behavior Prototype |  | 2005-12-13 A | 90% → 100% | 0.32d → none |
| 123 | **JDBC Appender Modification** | 2005-12-15 A |  | 0% → 63% | 1.2d → 0.32d |
| 124 | Add User, Session Id to database schema | 2005-12-15 A |  | 0% → 95% | 0.32d → 4.22d |
| 125 | Retrieve User and Session Info | 2005-12-15 A |  | 0% → 95% | 0.32d → 2.32d |
| 127 | Update Browser | 2005-12-29 A |  | 0% → 50% |  |

## Version 12 (saved 2006-01-03)

Note of the change: updated per status meeting

Last finish stays 2006-03-20. Complete tasks 71 → 78.

Changed:

| ID | Task | Start | Finish | Complete | Total float |
| --- | --- | --- | --- | --- | --- |
| 40 | **CSM 3.1** |  |  | 24% → 27% |  |
| 93 | **Construction Phase** |  |  | 45% → 55% |  |
| 94 | **Iteration 1** |  |  | 82% → 97% |  |
| 95 | **SDK Integration** |  |  | 79% → 97% |  |
| 96 | **Development and Unit Test** |  |  | 97% → 98% |  |
| 105 | Code Merge and Cleanup |  | 2005-12-09 A | 90% → 100% | 2.08d → none |
| 107 | Development and Unit Test Complete | 2005-12-09 A | 2005-12-09 A | 0% → 100% | 0.88d → none |
| 108 | **Integration Test** |  |  | 10% → 92% |  |
| 109 | Develop Integration Tests |  | 2005-12-13 A | 60% → 100% | 0.88d → none |
| 110 | Execute/Review Integration Tests | 2005-12-13 A |  | 0% → 90% |  |
| 117 | **Iteration 2** |  |  | 29% → 57% | 0.88d → 50.13d |
| 118 | **Audit Trail Enhancement** |  |  | 29% → 57% | 0.88d → 50.13d |
| 119 | **Development and Unit Test** |  |  | 38% → 75% | 0.32d → 50.45d |
| 121 | Design Update | 2005-12-14 A |  | 0% → 75% | 0.32d → 64.5d |
| 123 | **JDBC Appender Modification** |  | 2006-01-05 A | 63% → 100% | 0.32d → none |
| 124 | Add User, Session Id to database schema |  | 2005-12-15 A | 95% → 100% | 4.22d → none |
| 125 | Retrieve User and Session Info |  | 2005-12-19 A | 95% → 100% | 2.32d → none |
| 126 | Code Review | 2005-12-19 A | 2005-12-20 A | 0% → 100% | 0.32d → none |
| 127 | Update Browser |  | 2006-01-05 A | 50% → 100% | 0.32d → none |
| 128 | **Object State Logger** | 2005-12-20 A |  | 0% → 67% | 2.32d → 55.95d |
| 130 | **Application Configuration** | 2005-12-21 A |  | 0% → 80% | 2.32d → 55.95d |
| 131 | Object Configuration | 2005-12-21 A |  | 0% → 80% | 0.32d → 57.55d |
| 132 | Logging Switch | 2005-12-27 A |  | 0% → 80% | 0.32d → 55.95d |

## Version 13 (saved 2006-01-04)

Note of the change: updated per status meeting on 1/4/2006

Last finish stays 2006-03-20. Complete tasks 78 → 81.

Changed:

| ID | Task | Start | Finish | Complete | Total float | Other |
| --- | --- | --- | --- | --- | --- | --- |
| 93 | **Construction Phase** |  |  | 55% → 57% |  |  |
| 94 | **Iteration 1** |  |  | 97% → 99% |  |  |
| 95 | **SDK Integration** |  |  | 97% → 99% |  |  |
| 96 | **Development and Unit Test** |  |  | 98% → 99% |  |  |
| 101 | Code Review | 2005-11-17 A | 2005-11-17 A | 0% → 100% | 76.04d → none | resources Kunal; SAIC → Kunal; Charles |
| 108 | **Integration Test** |  | 2005-12-28 A | 92% → 100% | 0.88d → none |  |
| 110 | Execute/Review Integration Tests |  | 2005-12-28 A | 90% → 100% | 0.88d → none |  |
| 117 | **Iteration 2** |  |  | 57% → 69% |  |  |
| 118 | **Audit Trail Enhancement** |  |  | 57% → 69% |  |  |
| 119 | **Development and Unit Test** |  |  | 75% → 92% |  |  |
| 121 | Design Update |  | 2005-12-14 A | 75% → 100% | 64.5d → none |  |
| 122 | UPT User Lockout | 2005-12-14 A |  | 0% → 60% | 0.32d → 64.5d |  |
| 128 | **Object State Logger** |  |  | 67% → 83% |  |  |
| 129 | Message Generation Utility | 2005-12-20 A |  | 0% → 95% | 0.32d → 59.95d |  |
| 133 | Code Review | 2006-01-05 A |  | 0% → 95% | 0.32d → 2.15d |  |
| 134 | Test Documentation | 2006-01-05 A |  | 0% → 95% | 0.32d → 1.2d |  |

## Version 14 (saved 2006-01-05)

Note of the change: per status meeting on 1/05/06 at 4:15 p.m.

Last finish stays 2006-03-20. Complete tasks 81 → 83.

Changed:

| ID | Task | Start | Finish | Complete | Total float |
| --- | --- | --- | --- | --- | --- |
| 40 | **CSM 3.1** |  |  | 27% → 28% |  |
| 93 | **Construction Phase** |  |  | 57% → 59% |  |
| 106 | Code Review | 2005-12-09 A |  | 0% → 98% | 0.88d → 68.13d |
| 117 | **Iteration 2** |  |  | 69% → 82% |  |
| 118 | **Audit Trail Enhancement** |  |  | 69% → 82% |  |
| 119 | **Development and Unit Test** |  |  | 92% → 97% |  |
| 128 | **Object State Logger** |  |  | 83% → 99% |  |
| 129 | Message Generation Utility |  |  | 95% → 98% | 59.95d → 60.95d |
| 130 | **Application Configuration** |  | 2005-12-29 A | 80% → 100% | 55.95d → none |
| 131 | Object Configuration |  | 2005-12-27 A | 80% → 100% | 57.55d → none |
| 132 | Logging Switch |  | 2005-12-29 A | 80% → 100% | 55.95d → none |
| 133 | Code Review |  |  | 95% → 98% |  |
| 135 | **CSM Audit Integration** | 2005-12-28 A |  | 0% → 40% |  |
| 136 | Object State/Event Logging | 2005-12-28 A |  | 0% → 40% |  |

## Version 15 (saved 2006-01-18)

Note of the change: updates status on 12/19

Last finish stays 2006-03-20. Complete tasks 83 → 94.

Changed:

| ID | Task | Start | Finish | Complete | Total float |
| --- | --- | --- | --- | --- | --- |
| 40 | **CSM 3.1** |  |  | 28% → 31% |  |
| 44 | **Elaboration Phase** |  |  | 91% → 98% |  |
| 84 | **Iteration 4** |  | 2006-01-04 A | 80% → 100% | 52.13d → none |
| 85 | **Test Plan** |  | 2006-01-04 A | 68% → 100% | 52.13d → none |
| 87 | SDK Integration |  | 2005-10-20 A | 90% → 100% | 93.13d → none |
| 89 | Enhanced Logging |  | 2006-01-04 A | 80% → 100% | 52.13d → none |
| 90 | SOP Check (existing and new) | 2005-11-01 A | 2005-11-07 A | 0% → 100% | 82.58d → none |
| 93 | **Construction Phase** |  |  | 59% → 65% |  |
| 94 | **Iteration 1** |  | 2005-12-28 A | 99% → 100% | 56.13d → none |
| 95 | **SDK Integration** |  | 2005-12-28 A | 99% → 100% | 56.13d → none |
| 96 | **Development and Unit Test** |  | 2005-12-09 A | 99% → 100% | 68.13d → none |
| 106 | Code Review |  | 2005-12-09 A | 98% → 100% | 68.13d → none |
| 117 | **Iteration 2** |  | 2006-01-06 A | 82% → 100% | 50.13d → none |
| 118 | **Audit Trail Enhancement** |  | 2006-01-06 A | 82% → 100% | 50.13d → none |
| 119 | **Development and Unit Test** |  | 2006-01-06 A | 97% → 100% | 50.45d → none |
| 122 | UPT User Lockout |  | 2005-12-15 A | 60% → 100% | 64.5d → none |
| 128 | **Object State Logger** |  | 2005-12-29 A | 99% → 100% | 55.95d → none |
| 129 | Message Generation Utility |  | 2005-12-21 A | 98% → 100% | 60.95d → none |
| 133 | Code Review |  | 2006-01-05 A | 98% → 100% | 2.15d → none |
| 134 | Test Documentation |  | 2006-01-06 A | 95% → 100% | 1.2d → none |
| 135 | **CSM Audit Integration** |  | 2006-01-05 A | 40% → 100% | 0.88d → none |
| 136 | Object State/Event Logging |  | 2006-01-05 A | 40% → 100% | 0.88d → none |
| 137 | CSM Integration Tests | 2006-01-05 A | 2006-01-06 A | 0% → 100% | 0.88d → none |
| 147 | **Iteration 4** | 2006-01-06 A |  | 0% → 10% | 0.88d → 5.92d |
| 160 | **QA Testing** | 2006-01-06 A |  | 0% → 23% | 0.88d → 10.13d |
| 161 | Technical Test Development | 2006-01-06 A | 2006-01-16 A | 0% → 100% | 0.88d → none |

## Version 16 (saved 2006-03-01)

Note of the change: Updated with adjustments for final release and documentation

Last finish 2006-03-20 → 2006-04-06 (+17d). Complete tasks 94 → 99.

Removed: 173 Defect Fixes/SOP Updates/Documentation Review Support/Presentations

Changed:

| ID | Task | Start | Finish | Duration | Complete | Total float | Predecessors | Other |
| --- | --- | --- | --- | --- | --- | --- | --- | --- |
| 40 | **CSM 3.1** |  | 2006-03-20 → 2006-04-06 (+17d) | 126.75d → 140.75d | 31% → 37% |  |  |  |
| 93 | **Construction Phase** |  | 2006-02-22 → 2006-03-03 (+9d) | 101.72d → 109.35d | 65% → 89% | 17.63d → 24d |  |  |
| 110 | Execute/Review Integration Tests |  |  |  |  |  |  | resources Kunal [75%]; Charles; QA → Kunal [75%]; Charles; Steven |
| 147 | **Iteration 4** |  | 2006-02-22 → 2006-03-03 (+9d) | 32.5d → 40.13d | 10% → 78% | 5.92d → 24d |  |  |
| 148 | **Document Creation** | 2006-01-16 A | 2006-02-22 → 2006-02-28 (+6d) | 26.5d → 30.38d | 0% → 76% | 0.88d → 27.75d |  |  |
| 149 | SDK Programmers Guide | 2006-01-23 → 2006-02-10 A (+18d) | 2006-02-06 → 2006-02-23 (+17d) |  | 0% → 80% | 5.92d → 27.75d |  | constraint none → finish no earlier than 2006-02-23 |
| 150 | Review | 2006-02-06 → 2006-02-24 (+18d) | 2006-02-07 → 2006-02-24 (+17d) |  |  | 5.92d → 6.79d |  | resources Kunal; QA; Art; Charles → Kunal; Steven; Art; Charles |
| 151 | Update from Review | 2006-02-07 → 2006-02-24 (+17d) | 2006-02-09 → 2006-02-28 (+19d) |  |  | 5.92d → 6.79d |  |  |
| 152 | CSM Guide For Application Developers | 2006-01-16 A | 2006-01-30 A |  | 0% → 100% | 0.88d → none |  |  |
| 153 | CSM Guide For Application Developers Cont'd | 2006-01-30 A | 2006-02-01 A |  | 0% → 100% | 0.88d → none |  |  |
| 154 | Review | 2006-02-01 → 2006-02-22 (+21d) | 2006-02-02 → 2006-02-22 (+20d) | 0.25d → 0.33d |  | 0.88d → 29d |  | constraint none → finish no earlier than 2006-02-22; resources Kunal; Resource 3; Art; Charles → Kunal; Steven; Charles |
| 155 | Update From Review | 2006-02-02 → 2006-02-23 (+21d) | 2006-02-06 → 2006-02-24 (+18d) |  |  | 0.88d → 26d |  | constraint none → finish no earlier than 2006-02-23 |
| 156 | Common Logger | 2006-02-09 A | 2006-02-20 A | 7d → 8d | 0% → 100% | 5.92d → none | 151 → none |  |
| 157 | Review | 2006-02-20 → 2006-02-21 A (+1d) | 2006-02-20 → 2006-02-21 (+1d) |  | 0% → 20% | 5.92d → 18.99d |  | resources Kunal → Steven |
| 158 | Update from Review | 2006-02-20 → 2006-02-21 (+1d) | 2006-02-22 → 2006-02-23 (+1d) |  |  | 5.92d → 18.99d |  |  |
| 159 | Baseline/SignOff Documents | 2006-02-22 → 2006-02-28 (+6d) | 2006-02-22 → 2006-02-28 (+6d) |  |  | 5.92d → 13.04d | 158 → 158, 151 |  |
| 160 | **QA Testing** |  | 2006-02-13 → 2006-03-03 (+18d) | 26d → 40.13d | 23% → 81% | 10.13d → 24d |  |  |
| 162 | SDK Defect Fixes | 2006-01-16 A | 2006-01-23 A |  | 0% → 100% | 5.92d → none |  |  |
| 163 | Execution/Defect Fixes | 2006-01-23 A | 2006-02-06 A |  | 0% → 100% | 10.13d → none |  | resources Art [50%]; QA → Art [50%]; Steven |
| 164 | Testing Report Creation/Requirements Matrix Update | 2006-02-06 → 2006-02-27 (+21d) | 2006-02-13 → 2006-03-03 (+18d) |  |  | 10.13d → 24d |  | constraint none → finish no earlier than 2006-03-03; resources QA → Steven |
| 165 | **Transition Phase** |  | 2006-03-17 → 2006-04-06 (+20d) | 29d → 44d |  | 0.88d → 0d |  |  |
| 166 | **Stage Testing** |  | 2006-02-24 → 2006-03-15 (+19d) | 14.75d → 28d |  | 0.88d → 0d |  |  |
| 167 | Deployment Documentation | 2006-02-06 → 2006-02-23 (+17d) | 2006-02-09 → 2006-02-24 (+15d) | 3d → 2d |  | 0.88d → 29d | 155 → none | constraint none → finish no earlier than 2006-02-24; resources Art → Kunal |
| 168 | Stage Test Preparation | 2006-02-13 → 2006-02-06 (-7d) | 2006-02-17 → 2006-03-01 (+12d) | 4d → 18d |  | 10.13d → 0d | 164 → none | constraint none → finish no earlier than 2006-03-01; resources QA → Steven |
| 169 | Deploy to Stage | 2006-02-16 → 2006-03-01 (+13d) | 2006-02-16 → 2006-03-01 (+13d) |  |  | 22d → 26d |  | constraint start no earlier than 2006-02-16 → start no earlier than 2006-03-01; resources Art → Kunal |
| 170 | Execute Stage Tests | 2006-02-17 → 2006-03-02 (+13d) | 2006-02-24 → 2006-03-08 (+12d) |  |  | 10.13d → 0d |  | resources QA → Steven |
| 171 | Defect Fixes/Test Support | 2006-02-17 → 2006-03-09 (+20d) | 2006-02-24 → 2006-03-15 (+19d) |  |  | 0.88d → 0d | 172 → 170, 172 | resources Art → Kunal |
| 172 | 21 Part CFR 11 Readiness | 2006-02-09 → 2006-03-16 (+35d) | 2006-02-17 → 2006-03-23 (+34d) |  |  | 0.88d → 0d | 167 → 171 | resources Art → All |
| 173 | Testing Report | 2006-02-24 → 2006-03-16 (+20d) | 2006-03-03 → 2006-03-22 (+19d) |  |  | 10.13d → 11d | 170 → 171, 170 | resources QA → Steven |
| 174 | **Deployment to Production** | 2006-02-24 → 2006-03-16 (+20d) | 2006-03-17 → 2006-04-06 (+20d) | 15d → 16d |  | 0.88d → 0d |  |  |
| 175 | Update Zope Site | 2006-02-24 → 2006-03-16 (+20d) | 2006-03-03 → 2006-03-22 (+19d) |  |  | 0.88d → 11d |  | resources Art → Kunal |
| 176 | Work With Operations/ Finalize Builds | 2006-03-03 → 2006-03-16 (+13d) | 2006-03-10 → 2006-03-22 (+12d) |  |  | 5.88d → 11d | 175 → 171, 175 | resources Art → Kunal |
| 177 | Gforge Updates | 2006-03-03 → 2006-03-16 (+13d) | 2006-03-17 → 2006-03-29 (+12d) |  |  | 0.88d → 6d | 175 → 171, 175 | resources QA [50%]; Kunal [50%] → Steven [50%]; Kunal [50%] |
| 178 | 21 CFR Part 11 Final Validation Readiness Prep | 2006-03-03 → 2006-03-24 (+21d) | 2006-03-17 → 2006-04-06 (+20d) |  |  | 0.88d → 0d | 175 → 172 | resources QA [50%]; Kunal [50%] → Steven [50%]; Kunal [50%] |
| 179 | CSM 3.1 Production Candidate | 2006-03-10 → 2006-03-22 (+12d) | 2006-03-10 → 2006-03-22 (+12d) |  |  | 5.88d → 11d |  | resources Art → none |
| 180 | CSM 3.1 Production Deployment | 2006-03-17 → 2006-03-22 (+5d) | 2006-03-17 → 2006-03-22 (+5d) |  |  | 1d → 11d | none → 179 | resources Art → Kunal |
| 181 | CSM 3.1 Released | 2006-03-20 → 2006-03-22 (+2d) | 2006-03-20 → 2006-03-22 (+2d) |  |  | 0d → 11d | none → 180 | resources Art → Kunal |

## Version 17 (saved 2006-03-10)

Note of the change: *** empty log message ***

Last finish stays 2006-04-06. Complete tasks 99 → 112.

Changed:

| ID | Task | Start | Finish | Complete | Total float | Predecessors |
| --- | --- | --- | --- | --- | --- | --- |
| 40 | **CSM 3.1** |  |  | 37% → 44% |  |  |
| 93 | **Construction Phase** |  |  | 89% → 97% |  |  |
| 147 | **Iteration 4** |  | 2006-03-03 A | 78% → 100% | 24d → none |  |
| 148 | **Document Creation** |  | 2006-02-28 A | 76% → 100% | 27.75d → none |  |
| 149 | SDK Programmers Guide |  | 2006-02-23 A | 80% → 100% | 27.75d → none |  |
| 150 | Review | 2006-02-24 A | 2006-02-24 A | 0% → 100% | 6.79d → none |  |
| 151 | Update from Review | 2006-02-24 A | 2006-02-28 A | 0% → 100% | 6.79d → none |  |
| 154 | Review | 2006-02-22 A | 2006-02-22 A | 0% → 100% | 29d → none |  |
| 155 | Update From Review | 2006-02-23 A | 2006-02-24 A | 0% → 100% | 26d → none |  |
| 157 | Review |  | 2006-02-21 A | 20% → 100% | 18.99d → none |  |
| 158 | Update from Review | 2006-02-21 A | 2006-02-23 A | 0% → 100% | 18.99d → none |  |
| 159 | Baseline/SignOff Documents | 2006-02-28 A | 2006-02-28 A | 0% → 100% | 13.04d → none |  |
| 160 | **QA Testing** |  | 2006-03-03 A | 81% → 100% | 24d → none |  |
| 164 | Testing Report Creation/Requirements Matrix Update | 2006-02-27 A | 2006-03-03 A | 0% → 100% | 24d → none |  |
| 165 | **Transition Phase** | 2006-02-06 A |  | 0% → 42% |  |  |
| 166 | **Stage Testing** | 2006-02-06 A |  | 0% → 99% |  |  |
| 167 | Deployment Documentation | 2006-02-23 A | 2006-02-24 A | 0% → 100% | 29d → none |  |
| 168 | Stage Test Preparation | 2006-02-06 A | 2006-03-01 A | 0% → 100% | 0d → none |  |
| 169 | Deploy to Stage | 2006-03-01 A | 2006-03-01 A | 0% → 100% | 26d → none |  |
| 170 | Execute Stage Tests | 2006-03-02 A | 2006-03-08 A | 0% → 100% | 0d → none |  |
| 171 | Defect Fixes/Test Support | 2006-03-09 A |  | 0% → 95% |  | 170, 172 → 170 |
| 173 | Testing Report |  |  |  |  | 171, 170 → 171 |
| 176 | Work With Operations/ Finalize Builds |  |  |  |  | 171, 175 → 171 |
| 177 | Gforge Updates |  |  |  |  | 171, 175 → 171 |

## Version 18 (saved 2006-03-24)

Note of the change: updated per status meeting

Last finish stays 2006-04-06. Complete tasks 112 → 120.

Changed:

| ID | Task | Start | Finish | Complete | Total float | Other |
| --- | --- | --- | --- | --- | --- | --- |
| 40 | **CSM 3.1** |  |  | 44% → 81% |  |  |
| 41 | Production Support | 2005-09-15 A | 2006-02-06 A | 0% → 100% | 23.33d → none |  |
| 42 | Gforge Support | 2005-09-15 A | 2006-02-15 A | 0% → 100% | 16.33d → none |  |
| 165 | **Transition Phase** |  |  | 42% → 83% |  |  |
| 166 | **Stage Testing** |  | 2006-03-15 A | 99% → 100% | 0d → none |  |
| 171 | Defect Fixes/Test Support |  | 2006-03-15 A | 95% → 100% | 0d → none |  |
| 172 | 21 Part CFR 11 Readiness | 2006-03-16 A | 2006-03-23 A | 0% → 100% | 0d → none |  |
| 174 | **Deployment to Production** | 2006-03-16 A |  | 0% → 77% |  |  |
| 175 | Update Zope Site | 2006-03-16 A | 2006-03-22 A | 0% → 100% | 11d → none |  |
| 176 | Work With Operations/ Finalize Builds | 2006-03-16 A | 2006-03-22 A | 0% → 100% | 11d → none |  |
| 177 | Gforge Updates | 2006-03-16 A | 2006-03-29 A | 0% → 100% | 6d → none |  |
| 178 | 21 CFR Part 11 Final Validation Readiness Prep | 2006-03-24 A |  | 0% → 30% |  |  |
| 179 | CSM 3.1 Production Candidate | 2006-03-22 A | 2006-03-22 A | 0% → 100% | 11d → none |  |
| 180 | CSM 3.1 Production Deployment | 2006-03-22 → 2006-03-24 (+2d) | 2006-03-22 → 2006-03-24 (+2d) |  | 11d → 10d | constraint start no earlier than 2006-03-17 → start no earlier than 2006-03-24 |
| 181 | CSM 3.1 Released | 2006-03-22 → 2006-03-27 (+5d) | 2006-03-22 → 2006-03-27 (+5d) |  | 11d → 9d | constraint start no earlier than 2006-03-20 → start no earlier than 2006-03-27 |
