# CSM 3.2

How a schedule from MS Project changed from version to version. A marks actual dates.

## Version 1 (saved 2006-05-12)

Note of the change: initial draft

| ID | WBS | Task | Duration | Start | Finish | Predecessors | Complete | Total float | Constraint |
| --- | --- | --- | --- | --- | --- | --- | --- | --- | --- |
| 1 | 1 | **CSM 3.2** | 151d? | 2006-04-20 A | 2006-11-20 |  | 7% | 0d |  |
| 2 | 1.1 | **Elaboration** | 65.95d? | 2006-04-20 A | 2006-07-21 |  | 9% | 85.05d |  |
| 3 | 1.1.1 | **Iteration 1** | 34d? | 2006-04-20 A | 2006-06-07 |  | 21% | 117d |  |
| 4 |  | Kick off | 0d | 2006-04-20 A | 2006-04-20 A |  | 100% |  | start no earlier than 2006-04-20 |
| 5 | 1.1.1.2 | **21 CFR Part 11** | 34d | 2006-04-20 A | 2006-06-07 |  | 35% | 117d |  |
| 6 |  | Preperation | 7d | 2006-04-20 A | 2006-04-28 A |  | 100% |  |  |
| 7 |  | Kickoff Meeting With Biopharm | 0d | 2006-05-01 A | 2006-05-01 A |  | 100% |  | start no earlier than 2006-05-01 |
| 8 |  | Biopharm resources allocated | 0d | 2006-05-15 | 2006-05-15 |  |  | 119d | start no earlier than 2006-05-15 |
| 9 |  | Deliver Materials | 3d | 2006-05-17 | 2006-05-19 | 8FS+2d |  | 119d |  |
| 10 |  | Provide Validation Support | 10d | 2006-05-22 | 2006-06-07 | 9 |  | 117d |  |
| 11 | 1.1.1.3 | **Project Scope** | 20d? | 2006-05-01 A | 2006-05-26 |  | 18% | 124d |  |
| 12 |  | Create/Revise Candidate Requirements Document | 4d | 2006-05-01 A | 2006-05-04 A | 6 | 100% |  |  |
| 13 |  | Revised Scope w/Product Manager | 0d | 2006-05-04 A | 2006-05-04 A |  | 100% |  |  |
| 14 |  | Define Elaboration Task Plan | 1d? | 2006-05-05 A | 2006-05-05 A | 12 | 100% |  |  |
| 15 |  | Create/Update Scope Document | 15d | 2006-05-08 | 2006-05-26 | 14 |  | 124d |  |
| 16 |  | Obtain Changes/Fixes from BMS and map to current scope | 4d | 2006-05-15 | 2006-05-18 |  |  | 119.5d | start no earlier than 2006-05-15 |
| 17 | 1.1.1.3.6 | **LOE/Requirements Gathering** | 14d | 2006-05-08 A | 2006-05-25 | 14 | 15% | 56.05d |  |
| 18 |  | Obtain exact JDK version for next release | 0.25d | 2006-05-08 | 2006-05-08 |  |  | 57.8d |  |
| 19 |  | High Level Diagram of Grid-CSM Integration | 2d | 2006-05-08 A | 2006-05-10 A | 18 | 100% |  |  |
| 20 |  | High Level Diagram of CSM Web Service | 1d | 2006-05-10 | 2006-05-11 | 19 |  | 57.8d |  |
| 21 |  | Deliver Diagrams to Avinash | 0d | 2006-05-11 | 2006-05-11 | 20 |  | 57.8d |  |
| 22 |  | IMF Presentation | 2d | 2006-05-11 A | 2006-05-15 | 21 | 80% | 57.8d |  |
| 23 |  | Estimate Tying User to Application | 1d | 2006-05-15 | 2006-05-16 | 22 |  | 57.8d |  |
| 24 |  | Estimate for Grid Integration | 6d | 2006-05-16 | 2006-05-24 | 23 |  | 57.8d |  |
| 25 |  | Meet with Apps for Performance Requirements | 0.25d | 2006-05-11 A | 2006-05-11 A |  | 100% |  | start no earlier than 2006-05-11 |
| 26 |  | Prototyp Generic LDAP | 2.5d | 2006-05-08 | 2006-05-10 |  |  | 57.05d |  |
| 27 |  | Estimate Auth Policy Caching | 3d | 2006-05-10 | 2006-05-15 | 26 |  | 56.05d |  |
| 28 |  | Estimate CLM Logging to text file and Log Viewer Mods | 2d | 2006-05-15 | 2006-05-17 | 27 |  | 56.05d |  |
| 29 |  | Estimate BMS Webservice Integration | 2.5d | 2006-05-17 | 2006-05-19 | 28 |  | 56.05d |  |
| 30 |  | Estimate BMS Integration Work | 4d | 2006-05-22 | 2006-05-25 | 29 |  | 56.05d |  |
| 31 |  | NCICB Management Review Complete | 0d | 2006-05-17 | 2006-05-17 |  |  | 132d | start no earlier than 2006-05-17 |
| 32 |  | Update Scope | 2.95d | 2006-05-26 | 2006-05-31 | 17 |  | 56.05d |  |
| 33 |  | User Feedback Sessions Complete | 0d | 2006-05-26 | 2006-05-26 |  |  | 125d | start no earlier than 2006-05-26 |
| 34 |  | Final Scope Document Complete | 0d | 2006-05-29 | 2006-05-29 |  |  | 122d | start no earlier than 2006-05-29 |
| 35 |  | Revise Task Plan | 2d | 2006-05-30 | 2006-05-31 | 34 |  | 122d |  |
| 36 | 1.1.2 | **Iteration 2** | 22.95d | 2006-05-19 | 2006-06-21 |  |  | 64d |  |
| 37 | 1.1.2.1 | **Detail Requirements** | 19.95d | 2006-05-19 | 2006-06-16 |  |  | 64d |  |
| 38 | 1.1.2.1.1 | **Define Use Cases** | 19.95d | 2006-05-19 | 2006-06-16 |  |  | 64d |  |
| 39 | 1.1.2.1.1.1 | **UPT** | 9.5d | 2006-05-19 | 2006-06-02 |  |  | 117.5d |  |
| 40 |  | Write | 5d | 2006-05-19 | 2006-05-25 | 16 |  | 119.5d |  |
| 41 |  | Review | 1d | 2006-05-26 | 2006-05-31 | 40 |  | 117.5d |  |
| 42 |  | Update per Review | 2d | 2006-05-31 | 2006-06-02 | 41 |  | 117.5d |  |
| 43 | 1.1.2.1.1.2 | **CLM** | 4d | 2006-05-31 | 2006-06-06 |  |  | 111.05d |  |
| 44 |  | Write | 3d | 2006-05-31 | 2006-06-05 | 32 |  | 111.05d |  |
| 45 |  | Review | 0.25d | 2006-06-05 | 2006-06-06 | 44 |  | 111.05d |  |
| 46 |  | Update per Review | 0.75d | 2006-06-06 | 2006-06-06 | 45 |  | 111.05d |  |
| 47 | 1.1.2.1.1.3 | **Web Service** | 4d | 2006-05-31 | 2006-06-06 |  |  | 56.05d |  |
| 48 |  | Write | 3d | 2006-05-31 | 2006-06-05 | 32 |  | 56.05d |  |
| 49 |  | Review | 0.25d | 2006-06-05 | 2006-06-06 | 48 |  | 56.05d |  |
| 50 |  | Update per Review | 0.75d | 2006-06-06 | 2006-06-06 | 49 |  | 56.05d |  |
| 51 | 1.1.2.1.1.4 | **CSM APIs** | 4d | 2006-06-06 | 2006-06-12 |  |  | 111.05d |  |
| 52 |  | Write | 3d | 2006-06-06 | 2006-06-09 | 43 |  | 111.05d |  |
| 53 |  | Review | 0.25d | 2006-06-09 | 2006-06-12 | 52 |  | 111.05d |  |
| 54 |  | Update per Review | 0.75d | 2006-06-12 | 2006-06-12 | 53 |  | 111.05d |  |
| 55 | 1.1.2.1.1.5 | **Grid** | 8d | 2006-06-06 | 2006-06-16 |  |  | 56.05d |  |
| 56 |  | Write | 7d | 2006-06-06 | 2006-06-15 | 47 |  | 56.05d |  |
| 57 |  | Review | 0.25d | 2006-06-15 | 2006-06-16 | 56 |  | 56.05d |  |
| 58 |  | Update per Review | 0.75d | 2006-06-16 | 2006-06-16 | 57 |  | 56.05d |  |
| 59 |  | General Requirements Phase Complete | 0d | 2006-06-07 | 2006-06-07 |  |  | 118d | start no earlier than 2006-06-07 |
| 60 |  | Revise Scope Document | 1d | 2006-06-16 | 2006-06-19 | 37 |  | 107.05d |  |
| 61 |  | Revised Scope Document Complete | 0d | 2006-06-08 | 2006-06-08 |  |  | 117d | start no earlier than 2006-06-08 |
| 62 |  | Update CSM Model | 2d | 2006-06-16 | 2006-06-20 | 37 |  | 108.05d |  |
| 63 |  | UML Model Changes Approved | 0d | 2006-06-09 | 2006-06-09 |  |  | 93d | start no earlier than 2006-06-09 |
| 64 |  | Revise Task Plan | 2d | 2006-06-19 | 2006-06-21 | 60 |  | 107.05d |  |
| 65 |  | Project Manager Project Plan Complete | 0d | 2006-06-12 | 2006-06-12 |  |  | 115d | start no earlier than 2006-06-12 |
| 66 |  | Product Manager Project Plan Complete | 0d | 2006-06-14 | 2006-06-14 |  |  | 113d | start no earlier than 2006-06-14 |
| 67 |  | caCore Project Plan Complete | 0d | 2006-06-21 | 2006-06-21 |  |  | 108d | start no earlier than 2006-06-21 |
| 68 | 1.1.3 | **Iteration 3** | 30.95d | 2006-06-09 | 2006-07-21 |  |  | 62d |  |
| 69 |  | Review Testability of Requirements | 4d | 2006-06-16 | 2006-06-22 | 58 |  | 56.05d |  |
| 70 |  | Test Plan Development | 15d | 2006-06-22 | 2006-07-21 | 69 |  | 50.05d |  |

| ID | WBS | Task | Duration | Start | Finish | Predecessors | Total float | Constraint |
| --- | --- | --- | --- | --- | --- | --- | --- | --- |
| 71 | 1.1.3.3 | **Prototype** | 18.95d | 2006-06-09 | 2006-07-05 |  | 92.05d |  |
| 72 |  | Grid | 13d | 2006-06-16 | 2006-07-05 | 55 | 92.05d |  |
| 73 |  | Open/Active Directory LDAP | 5d | 2006-06-09 | 2006-06-15 | 63 | 93d |  |
| 74 |  | CLM Text File Viewer | 5d | 2006-06-16 | 2006-06-22 | 73 | 93d |  |
| 75 |  | Grid Design Docs | 5d | 2006-07-05 | 2006-07-12 | 72 | 92.05d |  |
| 76 |  | CSM & CLM Design docs | 7d | 2006-06-23 | 2006-07-03 | 74 | 93d |  |
| 77 |  | CSM SAD | 3d | 2006-07-04 | 2006-07-06 | 76 | 93d |  |
| 78 |  | Design Reviews | 3d | 2006-07-07 | 2006-07-11 | 77 | 93d |  |
| 79 |  | Design Documents Posted/Review Completed | 0d | 2006-07-11 | 2006-07-11 |  | 59d | start no earlier than 2006-07-11 |
| 80 | 1.2 | **Construction** | 76d | 2006-07-11 | 2006-10-25 |  | 18d |  |
| 81 |  | Development/Test | 35d | 2006-07-11 | 2006-08-28 | 79 | 59d |  |
| 82 |  | Load and Regresstion Test Development/Testing | 35d | 2006-07-21 | 2006-09-08 | 70 | 50.05d |  |
| 83 |  | Code/Unit Test Complete | 0d | 2006-08-28 | 2006-08-28 |  | 60d | start no earlier than 2006-08-28 |
| 84 |  | QA Cycling/Integration Testing Complete (Dev) | 0d | 2006-09-11 | 2006-09-11 |  | 50d | start no earlier than 2006-09-11 |
| 85 |  | QA Cycling/Integration Testing Complete (QA) | 0d | 2006-09-26 | 2006-09-26 |  | 39d | start no earlier than 2006-09-26 |
| 86 |  | Internal System Testing Complete (QA Tier) | 0d | 2006-10-16 | 2006-10-16 |  | 25d | start no earlier than 2006-10-16 |
| 87 |  | Release Candidate pushed to Staget Tier | 0d | 2006-10-17 | 2006-10-17 |  | 24d | start no earlier than 2006-10-17 |
| 88 |  | UAT Complete (Stage Tier) | 0d | 2006-10-25 | 2006-10-25 |  | 18d | start no earlier than 2006-10-25 |
| 89 | 1.3 | **Transition** | 7d | 2006-11-09 | 2006-11-20 |  | 0d |  |
| 90 |  | Final Release Ready | 0d | 2006-11-09 | 2006-11-09 |  | 7d | start no earlier than 2006-11-09 |
| 91 |  | Internal Staging Regression Testing Complete | 0d | 2006-11-17 | 2006-11-17 |  | 1d | start no earlier than 2006-11-17 |
| 92 |  | Final Release | 0d | 2006-11-20 | 2006-11-20 |  | 0d | start no earlier than 2006-11-20 |

## Version 2 (saved 2006-05-17)

Note of the change: updated draft based on LOEs

Last finish stays 2006-11-20. Complete tasks 8 → 14.

Added:

| ID | Task | Duration | Start | Finish | Predecessors | Constraint | Resources |
| --- | --- | --- | --- | --- | --- | --- | --- |
| 81 | Production Support | 80d | 2006-07-12 | 2006-10-31 | 79 | start no earlier than 2006-07-12 | Orlando [15%]; Kunal [15%]; Steven [15%] |
| 82 | **Iteration 1** | 16.45d | 2006-07-12 | 2006-08-03 |  |  |  |
| 84 | Development | 5d | 2006-07-12 | 2006-07-18 | 78 |  | Orlando |
| 85 | Regression Testing | 1d | 2006-07-19 | 2006-07-19 | 84 |  | Orlando |
| 86 | **Open LDAP/Active Directory Authorization** | 4d | 2006-07-20 | 2006-07-25 |  |  |  |
| 87 | Design | 1d | 2006-07-20 | 2006-07-20 | 85 |  | Orlando |
| 88 | Development/Unit Test | 3d | 2006-07-21 | 2006-07-25 | 87 |  | Orlando |
| 89 | **Grid Authorization Integration Wrap Up** | 4d | 2006-07-12 | 2006-07-18 |  |  |  |
| 90 | Development/Integration Test | 4d | 2006-07-12 | 2006-07-18 | 75 |  | Kunal |
| 91 | **BMS Web Service Integration** | 6d | 2006-07-18 | 2006-07-26 |  |  |  |
| 92 | Design | 1d | 2006-07-18 | 2006-07-19 | 90 |  | Kunal |
| 93 | Development/Unit Test | 5d | 2006-07-19 | 2006-07-26 | 92 |  | Kunal |
| 94 | Components Deployed on Dev Server | 0d | 2006-07-26 | 2006-07-26 | 93 |  | Kunal; Orlando |
| 95 | **Regression Test Complete Code Coverage** | 6.5d | 2006-07-18 | 2006-07-27 |  |  |  |
| 96 | Implementation | 6.5d | 2006-07-18 | 2006-07-27 | 70 |  | Steven |
| 97 | QA Test on Dev | 5d | 2006-07-27 | 2006-08-03 | 96 |  | Steven |
| 98 | Testing Support | 3d | 2006-07-26 | 2006-07-31 | 94 |  | Kunal; Orlando |
| 99 | **Iteration 2** | 34d | 2006-07-31 | 2006-09-15 | 93 |  |  |
| 100 | **Auth Policy Caching** | 16d | 2006-07-31 | 2006-08-22 |  |  |  |
| 101 | Design | 3d | 2006-07-31 | 2006-08-03 | 98 |  | Orlando |
| 102 | Development/Unit Testing | 13d | 2006-08-03 | 2006-08-22 | 101 |  | Orlando |
| 103 | **Application Specific UPT and APIs** | 7d | 2006-08-22 | 2006-08-31 |  |  |  |
| 104 | Design | 2d | 2006-08-22 | 2006-08-24 | 102 |  | Orlando |
| 105 | Development/Unit Test | 5d | 2006-08-24 | 2006-08-31 | 104 |  | Orlando |
| 106 | **Improve Exception Handling** | 5d | 2006-08-31 | 2006-09-07 |  |  |  |
| 107 | Development/Unit Test | 5d | 2006-08-31 | 2006-09-07 | 105 |  | Orlando |
| 108 | **Performance Enhancements** | 9d | 2006-07-31 | 2006-08-11 |  |  |  |
| 109 | **Fix Update Methods** | 3d | 2006-07-31 | 2006-08-03 |  |  |  |
| 110 | Development/Unit Test | 3d | 2006-07-31 | 2006-08-03 | 98 |  | Kunal |
| 111 | **Add Protection Element Type and Retrieve All Accessible Values by Type Method** | 6d | 2006-08-03 | 2006-08-11 |  |  |  |
| 112 | Design | 2d | 2006-08-03 | 2006-08-07 | 110 |  | Kunal |
| 113 | Development | 4d | 2006-08-07 | 2006-08-11 | 112 |  | Kunal |
| 114 | **BMS Code Integration** | 10d | 2006-08-11 | 2006-08-25 |  |  |  |
| 115 | Design | 2d | 2006-08-11 | 2006-08-15 | 113 |  | Kunal |
| 116 | Development | 8d | 2006-08-15 | 2006-08-25 | 115 |  | Kunal |
| 117 | **Defect Fixes** | 10d | 2006-08-25 | 2006-09-08 |  |  |  |
| 118 | Development/Unit Test | 10d | 2006-08-25 | 2006-09-08 | 116 |  | Kunal |
| 119 | Deploy Components to Dev Server | 0d | 2006-09-08 | 2006-09-08 | 118, 105 |  | Orlando; Kunal |
| 120 | **Testing** | 31.5d | 2006-08-03 | 2006-09-15 |  |  |  |
| 121 | Load & Component Test Development | 15d | 2006-08-03 | 2006-08-24 | 97 |  | Steven |
| 122 | Execute Load Tests/Load Test Report | 8d | 2006-08-24 | 2006-09-05 | 102, 108, 121 |  | Steven |
| 123 | QA Test Components on Dev | 8d | 2006-09-05 | 2006-09-15 | 122 |  | Steven |
| 124 | Test Support | 5d | 2006-09-08 | 2006-09-15 | 119 |  | Orlando; Kunal |

Removed: 82 Load and Regresstion Test Development/Testing

Changed:

| ID | Task | Start | Finish | Duration | Complete | Total float | Predecessors | Other |
| --- | --- | --- | --- | --- | --- | --- | --- | --- |
| 2 | **Elaboration** |  | 2006-07-21 → 2006-07-18 (-3d) | 65.95d? → 62.95d? | 9% → 15% | 85.05d → 88.05d |  |  |
| 3 | **Iteration 1** |  |  |  | 21% → 33% |  |  |  |
| 11 | **Project Scope** |  |  |  | 18% → 35% |  |  |  |
| 17 | **LOE/Requirements Gathering** |  |  |  | 15% → 48% | 56.05d → 45.05d |  |  |
| 20 | High Level Diagram of CSM Web Service | 2006-05-10 A | 2006-05-11 A |  | 0% → 100% | 57.8d → none |  |  |
| 21 | Deliver Diagrams to Avinash | 2006-05-11 A | 2006-05-11 A |  | 0% → 100% | 57.8d → none |  |  |
| 22 | IMF Presentation |  | 2006-05-15 A |  | 80% → 100% | 57.8d → none |  |  |
| 26 | Prototyp Generic LDAP | 2006-05-08 A | 2006-05-10 A |  | 0% → 100% | 57.05d → none |  |  |
| 27 | Estimate Auth Policy Caching | 2006-05-10 A | 2006-05-15 A |  | 0% → 100% | 56.05d → none |  |  |
| 28 | Estimate CLM Logging to text file and Log Viewer Mods | 2006-05-15 A | 2006-05-17 A |  | 0% → 100% | 56.05d → none |  |  |
| 68 | **Iteration 3** |  | 2006-07-21 → 2006-07-18 (-3d) | 30.95d → 27.95d |  | 62d → 40d |  |  |
| 70 | Test Plan Development |  | 2006-07-21 → 2006-07-18 (-3d) | 15d → 12d |  | 50.05d → 45.55d |  |  |
| 74 | Schema Support for SQL Server |  |  |  |  |  |  | was named CLM Text File Viewer |
| 78 | Design Reviews |  |  |  |  | 93d → 67d |  | resources none → Orlando; Kunal; Charles [10%] |
| 80 | **Construction** | 2006-07-11 → 2006-07-12 (+1d) | 2006-10-25 → 2006-10-31 (+6d) | 76d → 80d |  | 18d → 13d |  |  |
| 83 | **Hibernate 3.1 Upgrade/JDK Backwards Compatibility/MySQL Upgrade Test** | 2006-07-11 → 2006-07-12 (+1d) | 2006-08-28 → 2006-07-19 (-40d) | 35d → 6d |  | 59d → 83d | 79 → none | was named Development/Test; resources Kunal; Orlando → none |

## Version 3 (saved 2006-05-26)

Note of the change: modified after Grid discussion

Last finish stays 2006-11-20. Complete tasks 14 → 16.

Added:

| ID | Task | Duration | Start | Finish | Predecessors | Resources |
| --- | --- | --- | --- | --- | --- | --- |
| 112 | **Grid SAML Assertion Support** | 20d | 2006-08-10 | 2006-09-07 |  |  |
| 113 | Design | 5d | 2006-08-10 | 2006-08-17 | 111 | Kunal |
| 114 | Development | 15d | 2006-08-17 | 2006-09-07 | 113 | Kunal |

Removed: 89 Grid Authorization Integration Wrap Up; 90 Development/Integration Test; 125 Code/Unit Test Complete; 126 QA Cycling/Integration Testing Complete (Dev)

Changed:

| ID | Task | Start | Finish | Duration | Complete | Total float | Predecessors | Other |
| --- | --- | --- | --- | --- | --- | --- | --- | --- |
| 1 | **CSM 3.2** |  |  |  | 7% → 8% |  |  |  |
| 2 | **Elaboration** |  | 2006-07-18 → 2006-07-11 (-7d) | 62.95d? → 57d? | 15% → 20% | 88.05d → 94d |  |  |
| 3 | **Iteration 1** |  |  |  | 33% → 40% |  |  |  |
| 11 | **Project Scope** |  |  |  | 35% → 46% |  |  |  |
| 17 | **LOE/Requirements Gathering** |  |  |  | 48% → 69% | 45.05d → 38.05d |  |  |
| 18 | Obtain exact JDK version for next release | 2006-05-08 A | 2006-05-08 A |  | 0% → 100% | 57.8d → none |  |  |
| 24 | Estimate for Grid Integration/ Project Scope Doc |  |  |  |  | 57.8d → 39.8d |  | was named Estimate for Grid Integration |
| 29 | Estimate BMS Webservice Integration | 2006-05-17 A |  |  | 0% → 80% | 56.05d → 59.25d |  |  |
| 30 | Estimate BMS Integration Work | 2006-05-22 A |  |  | 0% → 80% |  |  |  |
| 31 | NCICB Management Review Complete | 2006-05-17 A | 2006-05-17 A |  | 0% → 100% | 132d → none |  |  |
| 36 | **Iteration 2** |  |  | 22.95d → 22d |  | 53d → 46d |  |  |
| 37 | **Detail Requirements** |  | 2006-06-16 → 2006-06-12 (-4d) | 19.95d → 15.95d |  | 53d → 46d |  |  |
| 38 | **Define Use Cases** |  | 2006-06-16 → 2006-06-12 (-4d) | 19.95d → 15.95d |  | 53d → 46d |  |  |
| 55 | **- Performance Enhancements** |  | 2006-06-16 → 2006-06-12 (-4d) | 8d → 4d |  | 45.05d → 38.05d |  | was named Grid |
| 56 | Write |  | 2006-06-15 → 2006-06-09 (-6d) | 7d → 3d |  | 56.05d → 55.55d |  |  |
| 57 | Review | 2006-06-15 → 2006-06-09 (-6d) | 2006-06-16 → 2006-06-12 (-4d) |  |  | 56.05d → 55.55d |  |  |
| 58 | Update per Review | 2006-06-16 → 2006-06-12 (-4d) | 2006-06-16 → 2006-06-12 (-4d) |  |  | 56.05d → 55.55d |  |  |
| 60 | Revise Scope Document | 2006-06-16 → 2006-06-12 (-4d) | 2006-06-19 → 2006-06-13 (-6d) |  |  | 107.05d → 111.05d |  |  |
| 62 | Update CSM Model | 2006-06-16 → 2006-06-12 (-4d) | 2006-06-20 → 2006-06-14 (-6d) |  |  | 108.05d → 112.05d |  |  |
| 64 | Revise Task Plan | 2006-06-19 → 2006-06-13 (-6d) | 2006-06-21 → 2006-06-15 (-6d) |  |  | 107.05d → 111.05d |  |  |
| 68 | **Iteration 3** |  | 2006-07-18 → 2006-07-11 (-7d) | 27.95d → 22d |  |  |  |  |
| 69 | Review Testability of Requirements | 2006-06-16 → 2006-06-12 (-4d) | 2006-06-22 → 2006-06-16 (-6d) |  |  | 56.05d → 55.55d |  |  |
| 70 | Test Plan Development | 2006-06-22 → 2006-06-16 (-6d) | 2006-07-18 → 2006-07-04 (-14d) |  |  | 45.55d → 55.55d |  |  |
| 71 | **Prototype** |  | 2006-07-05 → 2006-06-22 (-13d) | 18.95d → 10d |  | 51d → 40d |  |  |
| 72 | Auth Caching | 2006-06-16 → 2006-06-12 (-4d) | 2006-07-05 → 2006-06-19 (-16d) | 13d → 5d |  | 92.05d → 104.05d |  | was named Grid |
| 75 | Performance Design | 2006-07-05 → 2006-06-19 (-16d) | 2006-07-12 → 2006-06-26 (-16d) |  |  | 92.05d → 104.05d |  | was named Grid Design Docs |
| 77 | CSM SAD | 2006-07-04 → 2006-06-26 (-8d) | 2006-07-06 → 2006-06-29 (-7d) |  |  | 93d → 38.05d | 76 → 75 | resources Orlando → Kunal |
| 78 | Design Reviews | 2006-07-07 → 2006-06-29 (-8d) | 2006-07-11 → 2006-07-04 (-7d) |  |  | 67d → 38.05d |  |  |
| 80 | **Construction** | 2006-07-12 → 2006-07-04 (-8d) |  | 80d → 85.05d |  |  |  |  |
| 82 | **Iteration 1** | 2006-07-12 → 2006-07-04 (-8d) | 2006-08-03 → 2006-07-31 (-3d) | 16.45d → 18.5d |  | 46d → 38.05d |  |  |
| 83 | **Hibernate 3.1 Upgrade/JDK Backwards Compatibility/MySQL Upgrade Test** | 2006-07-12 → 2006-07-04 (-8d) | 2006-07-19 → 2006-07-12 (-7d) |  |  | 83d → 82.05d |  |  |
| 84 | Development | 2006-07-12 → 2006-07-04 (-8d) | 2006-07-18 → 2006-07-11 (-7d) |  |  | 83d → 82.05d |  |  |
| 85 | Regression Testing | 2006-07-19 → 2006-07-11 (-8d) | 2006-07-19 → 2006-07-12 (-7d) |  |  | 83d → 82.05d |  |  |
| 86 | **Open LDAP/Active Directory Authorization** | 2006-07-20 → 2006-07-12 (-8d) | 2006-07-25 → 2006-07-18 (-7d) |  |  | 83d → 82.05d |  |  |
| 87 | Design | 2006-07-20 → 2006-07-12 (-8d) | 2006-07-20 → 2006-07-13 (-7d) |  |  | 83d → 82.05d |  |  |
| 88 | Development/Unit Test | 2006-07-21 → 2006-07-13 (-8d) | 2006-07-25 → 2006-07-18 (-7d) |  |  | 83d → 82.05d |  |  |
| 89 | **Auth Policy Caching** | 2006-07-31 → 2006-07-04 (-27d) | 2006-08-22 → 2006-07-24 (-29d) | 16d → 14d |  | 47.05d → 38.05d |  |  |
| 90 | Design | 2006-07-31 → 2006-07-04 (-27d) | 2006-08-03 → 2006-07-05 (-29d) | 3d → 1d |  | 47.05d → 38.05d | 99 → 78 | resources Orlando → Kunal |
| 91 | Development/Unit Testing | 2006-08-03 → 2006-07-05 (-29d) | 2006-08-22 → 2006-07-24 (-29d) |  |  | 47.05d → 38.05d |  | resources Orlando → Kunal |
| 93 | Design |  |  |  |  | 45.05d → 82.05d | Development/Integration Test → 88 | resources Kunal → Orlando |
| 94 | Development/Unit Test |  |  |  |  | 45.05d → 82.05d |  | resources Kunal → Orlando |
| 96 | **Regression Test Complete Code Coverage** | 2006-07-18 → 2006-07-04 (-14d) | 2006-07-27 → 2006-07-21 (-6d) | 6.5d → 12.5d |  | 45.55d → 48.55d |  |  |
| 97 | Implementation | 2006-07-18 → 2006-07-04 (-14d) | 2006-07-27 → 2006-07-21 (-6d) |  |  | 45.55d → 48.55d |  |  |
| 98 | QA Test | 2006-07-27 → 2006-07-21 (-6d) | 2006-08-03 → 2006-07-31 (-3d) | 5d → 6d |  | 45.55d → 48.55d |  | was named QA Test on Dev |
| 99 | Testing Support | 2006-07-26 → 2006-07-24 (-2d) | 2006-07-31 → 2006-07-28 (-3d) | 3d → 4d |  | 45.05d → 38.05d | 95 → 91 |  |
| 100 | **Iteration 2** | 2006-07-31 → 2006-07-28 (-3d) | 2006-09-15 → 2006-09-26 (+11d) | 34d → 42d |  | 45.05d → 38.05d | 94 → 99 |  |
| 101 | **Application Specific UPT and APIs** | 2006-08-22 → 2006-07-28 (-25d) | 2006-08-31 → 2006-08-08 (-23d) |  |  | 51.05d → 38.05d |  |  |
| 102 | Design | 2006-08-22 → 2006-07-28 (-25d) | 2006-08-24 → 2006-08-01 (-23d) |  |  | 51.05d → 38.05d | 91 → 99 |  |
| 103 | Development/Unit Test | 2006-08-24 → 2006-08-01 (-23d) | 2006-08-31 → 2006-08-08 (-23d) |  |  | 51.05d → 38.05d |  |  |
| 104 | **Improve Exception Handling** | 2006-08-31 → 2006-08-08 (-23d) | 2006-09-07 → 2006-08-15 (-23d) |  |  | 51.05d → 38.05d |  |  |
| 105 | Development/Unit Test | 2006-08-31 → 2006-08-08 (-23d) | 2006-09-07 → 2006-08-15 (-23d) |  |  | 51.05d → 38.05d |  |  |
| 106 | **Performance Enhancements** | 2006-07-31 → 2006-07-28 (-3d) | 2006-08-11 → 2006-08-10 (-1d) |  |  | 45.05d → 51.05d |  |  |
| 107 | **Fix Update Methods** | 2006-07-31 → 2006-07-28 (-3d) | 2006-08-03 → 2006-08-02 (-1d) |  |  | 45.05d → 51.05d |  |  |
| 108 | Development/Unit Test | 2006-07-31 → 2006-07-28 (-3d) | 2006-08-03 → 2006-08-02 (-1d) |  |  | 45.05d → 51.05d |  |  |
| 109 | **Add Protection Element Type and Retrieve All Accessible Values by Type Method** | 2006-08-03 → 2006-08-02 (-1d) | 2006-08-11 → 2006-08-10 (-1d) |  |  | 45.05d → 51.05d |  |  |
| 110 | Design | 2006-08-03 → 2006-08-02 (-1d) | 2006-08-07 → 2006-08-04 (-3d) |  |  | 45.05d → 51.05d |  |  |
| 111 | Development | 2006-08-07 → 2006-08-04 (-3d) | 2006-08-11 → 2006-08-10 (-1d) |  |  | 45.05d → 51.05d |  |  |
| 115 | **BMS Code Integration** | 2006-08-11 → 2006-08-15 (+4d) | 2006-08-25 → 2006-08-29 (+4d) |  |  | 45.05d → 38.05d |  |  |
| 116 | Design | 2006-08-11 → 2006-08-15 (+4d) | 2006-08-15 → 2006-08-17 (+2d) |  |  | 45.05d → 38.05d | 111 → 105 | resources Kunal → Orlando |
| 117 | Development | 2006-08-15 → 2006-08-17 (+2d) | 2006-08-25 → 2006-08-29 (+4d) |  |  | 45.05d → 38.05d |  | resources Kunal → Orlando |
| 118 | **Defect Fixes** | 2006-08-25 → 2006-08-29 (+4d) | 2006-09-08 → 2006-09-19 (+11d) | 10d → 15d |  | 45.05d → 38.05d |  |  |
| 119 | Development/Unit Test | 2006-08-25 → 2006-08-29 (+4d) | 2006-09-08 → 2006-09-19 (+11d) | 10d → 15d |  | 45.05d → 38.05d |  | resources Kunal → Orlando |
| 120 | Deploy Components to Dev Server | 2006-09-08 → 2006-09-19 (+11d) | 2006-09-08 → 2006-09-19 (+11d) |  |  | 45.05d → 38.05d |  |  |
| 121 | **Testing** | 2006-08-03 → 2006-07-31 (-3d) | 2006-09-15 → 2006-09-26 (+11d) | 31.5d → 41.5d |  | 45.05d → 38.05d |  |  |
| 122 | Load & Component Test Development | 2006-08-03 → 2006-07-31 (-3d) | 2006-08-24 → 2006-08-21 (-3d) |  |  | 45.55d → 48.55d |  |  |
| 123 | Execute Load Tests/Load Test Report | 2006-08-24 → 2006-08-21 (-3d) | 2006-09-05 → 2006-08-31 (-5d) |  |  | 45.55d → 48.55d |  |  |
| 124 | QA Test Components | 2006-09-05 → 2006-08-31 (-5d) | 2006-09-15 → 2006-09-12 (-3d) |  |  | 45.55d → 48.55d |  | was named QA Test Components on Dev |
| 125 | Test Support | 2006-09-08 → 2006-09-19 (+11d) | 2006-09-15 → 2006-09-26 (+11d) |  |  | 45.05d → 38.05d |  |  |

## Version 4 (saved 2006-05-30)

Note of the change: *** empty log message ***

Last finish stays 2006-11-20. Complete tasks 16 → 22.

Added:

| ID | Task | Duration | Start | Finish | Predecessors | Resources |
| --- | --- | --- | --- | --- | --- | --- |
| 115 | **Secure SDK interfaces** | 10d | 2006-09-07 | 2006-09-21 |  |  |
| 116 | Design | 2d | 2006-09-07 | 2006-09-11 | 114 | Kunal |
| 117 | Development | 8d | 2006-09-11 | 2006-09-21 | 116 | Kunal |
| 123 | Development/Unit Test | 5d | 2006-09-21 | 2006-09-28 | 117 | Kunal |

Removed: 123 Execute Load Tests/Load Test Report

Changed:

| ID | Task | Start | Finish | Duration | Complete | Total float | Predecessors |
| --- | --- | --- | --- | --- | --- | --- | --- |
| 1 | **CSM 3.2** |  |  |  | 8% → 13% |  |  |
| 2 | **Elaboration** |  |  |  | 20% → 33% |  |  |
| 3 | **Iteration 1** |  |  |  | 40% → 68% |  |  |
| 11 | **Project Scope** |  |  |  | 46% → 88% | 124d → 25.05d |  |
| 15 | Create/Update Scope Document | 2006-05-08 A | 2006-05-26 A |  | 0% → 100% | 124d → none |  |
| 16 | Obtain Changes/Fixes from BMS and map to current scope | 2006-05-15 A | 2006-05-18 A |  | 0% → 100% | 119.5d → none |  |
| 17 | **LOE/Requirements Gathering** |  |  |  | 69% → 77% | 38.05d → 26.05d |  |
| 23 | Estimate Tying User to Application | 2006-05-15 A | 2006-05-16 A |  | 0% → 100% | 57.8d → none |  |
| 29 | Estimate BMS Webservice Integration |  | 2006-05-19 A |  | 80% → 100% | 59.25d → none |  |
| 30 | Estimate BMS Integration Work |  | 2006-05-25 A |  | 80% → 100% | 56.05d → none |  |
| 33 | User Feedback Sessions Complete | 2006-05-26 A | 2006-05-26 A |  | 0% → 100% | 125d → none |  |
| 51 | **CSM APIs** | 2006-06-06 → 2006-05-31 (-6d) | 2006-06-12 → 2006-06-09 (-3d) | 4d → 7d |  | 111.05d → 112.05d |  |
| 52 | Write | 2006-06-06 → 2006-05-31 (-6d) | 2006-06-09 → 2006-06-08 (-1d) | 3d → 6d |  | 111.05d → 112.05d | 43 → 32 |
| 53 | Review | 2006-06-09 → 2006-06-08 (-1d) | 2006-06-12 → 2006-06-09 (-3d) |  |  | 111.05d → 112.05d |  |
| 54 | Update per Review | 2006-06-12 → 2006-06-09 (-3d) | 2006-06-12 → 2006-06-09 (-3d) |  |  | 111.05d → 112.05d |  |
| 62 | Update CSM Model | 2006-06-12 → 2006-06-09 (-3d) | 2006-06-14 → 2006-06-13 (-1d) |  |  | 112.05d → 113.05d | 37 → 51 |
| 100 | **Iteration 2** |  | 2006-09-26 → 2006-10-12 (+16d) | 42d → 54d |  | 38.05d → 26.05d |  |
| 118 | **BMS Code Integration** |  | 2006-08-29 → 2006-09-05 (+7d) | 10d → 15d |  | 38.05d → 28.05d |  |
| 120 | Development |  | 2006-08-29 → 2006-09-05 (+7d) | 8d → 13d |  | 38.05d → 28.05d |  |
| 121 | **Defect Fixes** | 2006-08-29 → 2006-09-05 (+7d) | 2006-09-19 → 2006-09-28 (+9d) | 15d → 17d |  | 38.05d → 26.05d |  |
| 122 | Development/Unit Test | 2006-08-29 → 2006-09-05 (+7d) | 2006-09-19 → 2006-09-26 (+7d) |  |  | 38.05d → 28.05d |  |
| 124 | Deploy Components to Dev Server | 2006-09-19 → 2006-09-28 (+9d) | 2006-09-19 → 2006-09-28 (+9d) |  |  | 38.05d → 36.05d | 122, 103 → 122, 123 |
| 125 | **Testing** | 2006-07-31 → 2006-08-10 (+10d) | 2006-09-26 → 2006-10-12 (+16d) | 41.5d → 45d |  | 38.05d → 26.05d |  |
| 126 | Load & Component Test Development | 2006-07-31 → 2006-08-10 (+10d) | 2006-08-21 → 2006-08-31 (+10d) |  |  | 48.55d → 46.05d | 98 → 111 |
| 127 | QA Test Components | 2006-08-31 → 2006-09-28 (+28d) | 2006-09-12 → 2006-10-12 (+30d) | 8d → 10d |  | 48.55d → 26.05d | Execute Load Tests/Load Test Report → 126, 121 |
| 128 | Test Support | 2006-09-19 → 2006-09-28 (+9d) | 2006-09-26 → 2006-10-12 (+16d) | 5d → 10d |  | 38.05d → 26.05d | 124 → 121 |

## Version 5 (saved 2006-06-02)

Note of the change: *** empty log message ***

Last finish stays 2006-11-20.

Added:

| ID | Task | Duration | Start | Finish | Predecessors | Resources |
| --- | --- | --- | --- | --- | --- | --- |
| 41 | Write Internal Review 60 % | 1.5d | 2006-05-22 | 2006-05-23 | 40 | Steven |
| 42 | Write Final Complete 100% | 2d | 2006-05-24 | 2006-05-25 | 41 | Steven |
| 47 | Write Final Complete 100% | 1d | 2006-06-05 | 2006-06-06 | 46 | Kunal |
| 52 | Write Internal Review 60 % | 2d | 2006-06-05 | 2006-06-07 | 51 | Orlando |
| 53 | Write Final Complete 100% | 2d | 2006-06-07 | 2006-06-09 | 52 | Orlando |
| 58 | Write Final Complete 100% | 1d | 2006-06-09 | 2006-06-12 | 57 | Kunal |
| 73 | Test Plan Development 80% Completion | 6d | 2006-06-21 | 2006-06-29 | 72 | Steven |
| 74 | Test Plan Development Internal Review 100% Completion | 2d | 2006-06-29 | 2006-07-03 | 73 | Steven |
| 75 | Test Plan Development Rework | 2d | 2006-07-03 | 2006-07-05 | 74 | Steven |
| 78 | Auth Caching - Review and Baselining | 1d | 2006-06-19 | 2006-06-20 | 77 | Kunal |
| 80 | Open/Active Directory LDAP - Code Review and Baselining | 1d | 2006-06-15 | 2006-06-15 | 79 | Orlando |
| 82 | Schema Support for SQL Server - Code Review and Baselining | 1d | 2006-06-22 | 2006-06-22 | 81 | Orlando |
| 84 | Performance Design Internal Review | 0.5d | 2006-06-26 | 2006-06-26 | 83 | Kunal |
| 85 | Performance Design Rework | 1d | 2006-06-26 | 2006-06-27 | 84 | Kunal |
| 87 | CSM & CLM Design docs Internal Review | 1d | 2006-06-30 | 2006-06-30 | 86 | Orlando; Kunal |
| 88 | CSM & CLM Design docs Rework | 1d | 2006-07-03 | 2006-07-03 | 87 | Orlando |

Removed: 43 CLM; 44 Write; 45 Review; 46 Update per Review; 129 QA Cycling/Integration Testing Complete (QA)

Changed:

| ID | Task | Start | Finish | Duration | Total float | Predecessors | Other |
| --- | --- | --- | --- | --- | --- | --- | --- |
| 37 | **Detail Requirements** |  | 2006-06-12 → 2006-06-13 (+1d) | 15.95d → 16.95d | 63.5d → 33d |  |  |
| 38 | **Define Use Cases** |  | 2006-06-12 → 2006-06-13 (+1d) | 15.95d → 16.95d | 63.5d → 33d |  |  |
| 39 | **UPT** |  | 2006-06-02 → 2006-06-05 (+3d) | 9.5d → 10.5d | 117.5d → 116.5d |  |  |
| 40 | Write Initial Draft 30% |  | 2006-05-25 → 2006-05-22 (-3d) | 5d → 1.5d |  |  | was named Write |
| 43 | Review |  |  |  |  | 40 → 42 |  |
| 44 | Update per Review |  | 2006-06-02 → 2006-06-05 (+3d) | 2d → 3d | 117.5d → 116.5d |  |  |
| 45 | **Web Service** |  | 2006-06-06 → 2006-06-07 (+1d) | 4d → 5d | 55.55d → 25.05d |  |  |
| 46 | Write Internal Review 60% |  |  |  | 56.05d → 25.05d |  | was named Write |
| 48 | Review | 2006-06-05 → 2006-06-06 (+1d) | 2006-06-06 → 2006-06-07 (+1d) |  | 56.05d → 25.05d | 46 → 47 |  |
| 49 | Update per Review | 2006-06-06 → 2006-06-07 (+1d) | 2006-06-06 → 2006-06-07 (+1d) |  | 56.05d → 25.05d |  |  |
| 50 | **CSM APIs** |  | 2006-06-09 → 2006-06-12 (+3d) | 7d → 7.5d | 112.05d → 111.55d |  |  |
| 51 | Write Initial Draft 30% |  | 2006-06-08 → 2006-06-05 (-3d) | 6d → 2.5d | 112.05d → 111.55d |  | was named Write |
| 54 | Review | 2006-06-08 → 2006-06-09 (+1d) |  |  | 112.05d → 111.55d | 51 → 53 |  |
| 55 | Update per Review |  | 2006-06-09 → 2006-06-12 (+3d) |  | 112.05d → 111.55d |  |  |
| 56 | **- Performance Enhancements** | 2006-06-06 → 2006-06-07 (+1d) | 2006-06-12 → 2006-06-13 (+1d) |  | 55.55d → 25.05d |  |  |
| 57 | Write Internal Review 60% | 2006-06-06 → 2006-06-07 (+1d) |  | 3d → 2d | 55.55d → 25.05d |  | was named Write |
| 59 | Review | 2006-06-09 → 2006-06-12 (+3d) | 2006-06-12 → 2006-06-13 (+1d) |  | 55.55d → 25.05d | 57 → 58 |  |
| 60 | Update per Review | 2006-06-12 → 2006-06-13 (+1d) | 2006-06-12 → 2006-06-13 (+1d) |  | 55.55d → 25.05d |  |  |
| 62 | Revise Scope Document | 2006-06-12 → 2006-06-13 (+1d) | 2006-06-13 → 2006-06-14 (+1d) |  | 111.05d → 110.05d |  |  |
| 64 | Update CSM Model | 2006-06-09 → 2006-06-12 (+3d) | 2006-06-13 → 2006-06-14 (+1d) |  | 113.05d → 112.55d |  |  |
| 66 | Revise Task Plan | 2006-06-13 → 2006-06-14 (+1d) | 2006-06-15 → 2006-06-16 (+1d) |  | 111.05d → 110.05d |  |  |
| 71 | Review Testability of Requirements | 2006-06-12 → 2006-06-13 (+1d) | 2006-06-16 → 2006-06-19 (+3d) |  | 55.55d → 94.55d |  |  |
| 72 | Test Plan Development Intial Template Draft | 2006-06-16 → 2006-06-19 (+3d) | 2006-07-04 → 2006-06-21 (-13d) | 12d → 2d | 55.55d → 94.55d |  | was named Test Plan Development |
| 77 | Auth Caching | 2006-06-12 → 2006-06-13 (+1d) |  | 5d → 4d | 104.05d → 25.05d |  |  |
| 79 | Open/Active Directory LDAP |  | 2006-06-15 → 2006-06-14 (-1d) | 5d → 4d | 93d → 99d |  |  |
| 81 | Schema Support for SQL Server |  | 2006-06-22 → 2006-06-21 (-1d) | 5d → 4d | 93d → 99d | 79 → 80 |  |
| 83 | Performance Design Peparation | 2006-06-19 → 2006-06-20 (+1d) |  | 5d → 3.5d | 104.05d → 25.05d | 77 → 78 | was named Performance Design |
| 86 | CSM & CLM Design docs Preparation |  | 2006-07-03 → 2006-06-29 (-4d) | 7d → 5d | 93d → 99d | 81 → 82 | was named CSM & CLM Design docs |
| 89 | CSM SAD | 2006-06-26 → 2006-06-27 (+1d) | 2006-06-29 → 2006-06-30 (+1d) |  | 38.05d → 25.05d | 83 → 85 |  |
| 90 | Design Reviews | 2006-06-29 → 2006-06-30 (+1d) | 2006-07-04 → 2006-07-05 (+1d) |  | 38.05d → 25.05d |  |  |
| 92 | **Construction** | 2006-07-04 → 2006-06-21 (-13d) |  | 85.05d → 94.05d |  |  |  |
| 94 | **Iteration 1** | 2006-07-04 → 2006-06-21 (-13d) |  | 18.5d → 28d | 26.05d → 35.05d |  |  |
| 95 | **Hibernate 3.1 Upgrade/JDK Backwards Compatibility/MySQL Upgrade Test** | 2006-07-04 → 2006-07-05 (+1d) | 2006-07-12 → 2006-07-13 (+1d) |  | 82.05d → 81.05d |  |  |
| 96 | Development | 2006-07-04 → 2006-07-05 (+1d) | 2006-07-11 → 2006-07-12 (+1d) |  | 82.05d → 81.05d |  |  |
| 97 | Regression Testing | 2006-07-11 → 2006-07-12 (+1d) | 2006-07-12 → 2006-07-13 (+1d) |  | 82.05d → 81.05d |  |  |
| 98 | **Open LDAP/Active Directory Authorization** | 2006-07-12 → 2006-07-13 (+1d) | 2006-07-18 → 2006-07-19 (+1d) |  | 82.05d → 81.05d |  |  |
| 99 | Design | 2006-07-12 → 2006-07-13 (+1d) | 2006-07-13 → 2006-07-14 (+1d) |  | 82.05d → 81.05d |  |  |
| 100 | Development/Unit Test | 2006-07-13 → 2006-07-14 (+1d) | 2006-07-18 → 2006-07-19 (+1d) |  | 82.05d → 81.05d |  |  |
| 101 | **Auth Policy Caching** | 2006-07-04 → 2006-07-05 (+1d) | 2006-07-24 → 2006-07-25 (+1d) |  | 26.05d → 25.05d |  |  |
| 102 | Design | 2006-07-04 → 2006-07-05 (+1d) | 2006-07-05 → 2006-07-06 (+1d) |  | 38.05d → 25.05d |  |  |
| 103 | Development/Unit Testing | 2006-07-05 → 2006-07-06 (+1d) | 2006-07-24 → 2006-07-25 (+1d) |  | 38.05d → 25.05d |  |  |
| 104 | **BMS Web Service Integration** | 2006-07-18 → 2006-07-19 (+1d) | 2006-07-26 → 2006-07-27 (+1d) |  | 82.05d → 81.05d |  |  |
| 105 | Design | 2006-07-18 → 2006-07-19 (+1d) | 2006-07-19 → 2006-07-20 (+1d) |  | 82.05d → 81.05d |  |  |
| 106 | Development/Unit Test | 2006-07-19 → 2006-07-20 (+1d) | 2006-07-26 → 2006-07-27 (+1d) |  | 82.05d → 81.05d |  |  |
| 107 | Components Deployed on Dev Server | 2006-07-26 → 2006-07-27 (+1d) | 2006-07-26 → 2006-07-27 (+1d) |  | 82.05d → 81.05d |  |  |
| 108 | **Regression Test Complete Code Coverage** | 2006-07-04 → 2006-06-21 (-13d) | 2006-07-21 → 2006-06-30 (-21d) | 12.5d → 6.5d | 79.55d → 94.55d |  |  |
| 109 | Implementation | 2006-07-04 → 2006-06-21 (-13d) | 2006-07-21 → 2006-06-30 (-21d) |  | 48.55d → 94.55d |  |  |
| 110 | QA Test | 2006-07-21 → 2006-06-30 (-21d) | 2006-07-31 → 2006-07-18 (-13d) |  | 48.55d → 88.55d |  |  |
| 111 | Testing Support | 2006-07-24 → 2006-07-25 (+1d) | 2006-07-28 → 2006-07-31 (+3d) |  | 38.05d → 25.05d |  |  |
| 112 | **Iteration 2** | 2006-07-28 → 2006-07-31 (+3d) | 2006-10-12 → 2006-10-13 (+1d) |  | 26.05d → 25.05d |  |  |
| 113 | **Application Specific UPT and APIs** | 2006-07-28 → 2006-07-31 (+3d) | 2006-08-08 → 2006-08-09 (+1d) |  | 28.05d → 27.05d |  |  |
| 114 | Design | 2006-07-28 → 2006-07-31 (+3d) | 2006-08-01 → 2006-08-02 (+1d) |  | 38.05d → 27.05d |  |  |
| 115 | Development/Unit Test | 2006-08-01 → 2006-08-02 (+1d) | 2006-08-08 → 2006-08-09 (+1d) |  | 38.05d → 27.05d |  |  |
| 116 | **Improve Exception Handling** | 2006-08-08 → 2006-08-09 (+1d) | 2006-08-15 → 2006-08-16 (+1d) |  | 28.05d → 27.05d |  |  |
| 117 | Development/Unit Test | 2006-08-08 → 2006-08-09 (+1d) | 2006-08-15 → 2006-08-16 (+1d) |  | 38.05d → 27.05d |  |  |
| 118 | **Performance Enhancements** | 2006-07-28 → 2006-07-31 (+3d) | 2006-08-10 → 2006-08-11 (+1d) |  | 26.05d → 25.05d |  |  |
| 119 | **Fix Update Methods** | 2006-07-28 → 2006-07-31 (+3d) | 2006-08-02 → 2006-08-03 (+1d) |  | 26.05d → 25.05d |  |  |
| 120 | Development/Unit Test | 2006-07-28 → 2006-07-31 (+3d) | 2006-08-02 → 2006-08-03 (+1d) |  | 51.05d → 25.05d |  |  |
| 121 | **Add Protection Element Type and Retrieve All Accessible Values by Type Method** | 2006-08-02 → 2006-08-03 (+1d) | 2006-08-10 → 2006-08-11 (+1d) |  | 26.05d → 25.05d |  |  |
| 122 | Design | 2006-08-02 → 2006-08-03 (+1d) | 2006-08-04 → 2006-08-07 (+3d) |  | 51.05d → 25.05d |  |  |
| 123 | Development | 2006-08-04 → 2006-08-07 (+3d) | 2006-08-10 → 2006-08-11 (+1d) |  | 51.05d → 25.05d |  |  |
| 124 | **Grid SAML Assertion Support** | 2006-08-10 → 2006-08-11 (+1d) | 2006-09-07 → 2006-09-08 (+1d) |  | 26.05d → 25.05d |  |  |
| 125 | Design | 2006-08-10 → 2006-08-11 (+1d) | 2006-08-17 → 2006-08-18 (+1d) |  | 51.05d → 25.05d |  |  |
| 126 | Development | 2006-08-17 → 2006-08-18 (+1d) | 2006-09-07 → 2006-09-08 (+1d) |  | 51.05d → 25.05d |  |  |
| 127 | **Secure SDK interfaces** | 2006-09-07 → 2006-09-08 (+1d) | 2006-09-21 → 2006-09-22 (+1d) |  | 26.05d → 25.05d |  |  |
| 128 | Design | 2006-09-07 → 2006-09-08 (+1d) | 2006-09-11 → 2006-09-12 (+1d) |  | 26.05d → 25.05d |  |  |
| 129 | Development | 2006-09-11 → 2006-09-12 (+1d) | 2006-09-21 → 2006-09-22 (+1d) |  | 26.05d → 25.05d |  |  |
| 130 | **BMS Code Integration** | 2006-08-15 → 2006-08-16 (+1d) | 2006-09-05 → 2006-09-06 (+1d) |  | 28.05d → 27.05d |  |  |
| 131 | Design | 2006-08-15 → 2006-08-16 (+1d) | 2006-08-17 → 2006-08-18 (+1d) |  | 28.05d → 27.05d |  |  |
| 132 | Development | 2006-08-17 → 2006-08-18 (+1d) | 2006-09-05 → 2006-09-06 (+1d) |  | 28.05d → 27.05d |  |  |

| ID | Task | Start | Finish | Total float |
| --- | --- | --- | --- | --- |
| 133 | **Defect Fixes** | 2006-09-05 → 2006-09-06 (+1d) | 2006-09-28 → 2006-09-29 (+1d) | 26.05d → 25.05d |
| 134 | Development/Unit Test | 2006-09-05 → 2006-09-06 (+1d) | 2006-09-26 → 2006-09-27 (+1d) | 28.05d → 27.05d |
| 135 | Development/Unit Test | 2006-09-21 → 2006-09-22 (+1d) | 2006-09-28 → 2006-09-29 (+1d) | 26.05d → 25.05d |
| 136 | Deploy Components to Dev Server | 2006-09-28 → 2006-09-29 (+1d) | 2006-09-28 → 2006-09-29 (+1d) | 36.05d → 35.05d |
| 137 | **Testing** | 2006-08-10 → 2006-08-11 (+1d) | 2006-10-12 → 2006-10-13 (+1d) | 26.05d → 25.05d |
| 138 | Load & Component Test Development | 2006-08-10 → 2006-08-11 (+1d) | 2006-08-31 → 2006-09-01 (+1d) | 46.05d → 45.05d |
| 139 | QA Test Components | 2006-09-28 → 2006-09-29 (+1d) | 2006-10-12 → 2006-10-13 (+1d) | 26.05d → 25.05d |
| 140 | Test Support | 2006-09-28 → 2006-09-29 (+1d) | 2006-10-12 → 2006-10-13 (+1d) | 26.05d → 25.05d |

## Version 6 (saved 2006-06-06)

Note of the change: Partially Updated with New Published Milestones

Last finish 2006-11-20 → 2006-12-22 (+32d).

Added:

| ID | Task | Duration | Start | Finish | Predecessors | Constraint | Resources |
| --- | --- | --- | --- | --- | --- | --- | --- |
| 141 | Integration System Testing Comple (QA) | 0d | 2006-10-12 | 2006-10-12 |  | start no earlier than 2006-10-12 |  |
| 142 | **Iteration 3** | 33.05d | 2006-10-12 | 2006-11-28 |  |  |  |
| 143 | **Internal System** | 14d | 2006-10-12 | 2006-11-01 |  |  |  |
| 144 | Execution | 14d | 2006-10-12 | 2006-11-01 | 137 |  | QA |
| 145 | Test Support | 14d | 2006-10-12 | 2006-11-01 | 137 |  | Orlando [50%]; Kunal [50%] |
| 147 | Push Candidate to Staging | 2d | 2006-11-01 | 2006-11-03 | 145 |  | Kunal; Orlando |
| 149 | **Regression/UAT Testing** | 18d | 2006-11-03 | 2006-11-28 |  |  |  |
| 150 | Execution | 18d | 2006-11-03 | 2006-11-28 | 148 |  | QA |
| 151 | Test Support | 18d | 2006-11-03 | 2006-11-28 | 148 |  | Orlando [50%]; Kunal [50%] |
| 154 | **Documentation** | 55d? | 2006-09-29 | 2006-12-15 |  |  |  |
| 155 | Write Draft Documentation/ Update User Guide | 9d | 2006-09-29 | 2006-10-12 | 133 |  | Orlando [50%]; Kunal [50%] |
| 156 | Draft Documentation/User Documentation Completed | 0d | 2006-10-12 | 2006-10-12 |  | start no earlier than 2006-10-12 |  |
| 157 | Review Technical/User Docs | 21d | 2006-10-12 | 2006-11-10 | 155 |  | Tech Writing NCICB |
| 158 | Review Technical/User Docs Complete | 0d | 2006-11-10 | 2006-11-10 |  | start no earlier than 2006-11-10 |  |
| 159 | Incorporate Comments to User Docs | 1d? | 2006-11-10 | 2006-11-13 | 157 |  | Orlando [50%]; Kunal [50%] |
| 160 | Incorporate Comments to User Docs Complete | 0d | 2006-11-28 | 2006-11-28 |  | start no earlier than 2006-11-28 |  |
| 161 | Finalize Documents | 24d | 2006-11-13 | 2006-12-15 | 159 |  | Tech Writing NCICB |
| 162 | Final Version of User Documents Complete | 0d | 2006-12-15 | 2006-12-15 |  | start no earlier than 2006-12-15 |  |
| 163 | Staging | 15d | 2006-11-29 | 2006-12-19 | 151 |  | Orlando; Kunal |
| 166 | Go Live | 0d | 2006-12-22 | 2006-12-22 |  | start no earlier than 2006-12-22 |  |

Removed: 145 Final Release Ready

Changed:

| ID | Task | Start | Finish | Duration | Complete | Total float | Other |
| --- | --- | --- | --- | --- | --- | --- | --- |
| 1 | **CSM 3.2** |  | 2006-11-20 → 2006-12-22 (+32d) | 151d? → 175d? | 13% → 10% |  |  |
| 92 | **Construction** |  | 2006-10-31 → 2006-11-28 (+28d) | 94.05d → 114.05d |  | 13d → 14.05d |  |
| 112 | **Iteration 2** |  | 2006-10-13 → 2006-10-12 (-1d) | 54d → 53d |  | 25.05d → 4.05d |  |
| 137 | **Testing** |  | 2006-10-13 → 2006-10-12 (-1d) | 45d → 44d |  | 25.05d → 34.05d |  |
| 139 | QA Test Components |  | 2006-10-13 → 2006-10-12 (-1d) | 10d → 9d |  | 25.05d → 13.05d | resources Steven → QA |
| 140 | Test Support |  | 2006-10-13 → 2006-10-12 (-1d) | 10d → 9d |  | 25.05d → 26.05d | resources Orlando; Kunal → Orlando [50%]; Kunal [50%] |
| 146 | Internal System Testing Complete (QA Tier) | 2006-10-16 → 2006-11-01 (+16d) | 2006-10-16 → 2006-11-01 (+16d) |  |  | 25d → 37d | constraint start no earlier than 2006-10-16 → start no earlier than 2006-11-01 |
| 148 | Release Candidate pushed to Stage Tier | 2006-10-17 → 2006-11-03 (+17d) | 2006-10-17 → 2006-11-03 (+17d) |  |  | 24d → 2d | was named Release Candidate pushed to Staget Tier; constraint start no earlier than 2006-10-17 → start no earlier than 2006-11-03 |
| 152 | UAT Complete | 2006-10-25 → 2006-11-28 (+34d) | 2006-10-25 → 2006-11-28 (+34d) |  |  |  | was named UAT Complete (Stage Tier); constraint start no earlier than 2006-10-25 → start no earlier than 2006-11-28 |
| 153 | **Transition** | 2006-11-09 → 2006-09-29 (-41d) | 2006-11-20 → 2006-12-22 (+32d) | 7d → 59.05d? |  |  |  |
| 164 | Internal Staging Complete | 2006-11-17 → 2006-12-19 (+32d) | 2006-11-17 → 2006-12-19 (+32d) |  |  | 1d → 3d | was named Internal Staging Regression Testing Complete; constraint start no earlier than 2006-11-17 → start no earlier than 2006-12-19 |
| 165 | Push to Production | 2006-11-20 → 2006-12-21 (+31d) | 2006-11-20 → 2006-12-21 (+31d) |  |  | 0d → 1d | was named Final Release; constraint start no earlier than 2006-11-20 → start no earlier than 2006-12-21 |

## Version 7 (saved 2006-06-07)

Note of the change: Updated with new milestones

Last finish stays 2006-12-22. Complete tasks 22 → 28.

Added:

| ID | Task | Duration | Start | Finish | Predecessors | Constraint | Resources |
| --- | --- | --- | --- | --- | --- | --- | --- |
| 65 | **Test Plan** | 16d | 2006-06-15 | 2006-07-07 |  |  |  |
| 71 | **Design** | 12.55d | 2006-06-12 | 2006-06-28 |  |  |  |
| 72 | **Create General Design Document** | 5d | 2006-06-12 | 2006-06-19 | 49 |  |  |
| 73 | Review Draft at 50% | 2.5d | 2006-06-12 | 2006-06-14 |  |  | Orlando |
| 74 | Complete Draft/Final Review | 2.5d | 2006-06-14 | 2006-06-19 | 73 |  |  |
| 75 | General Design Doc Posted for Review | 0d | 2006-06-19 | 2006-06-19 |  | start no earlier than 2006-06-19 | Orlando; Steve; Kunal |
| 76 | **Performance** | 5d | 2006-06-19 | 2006-06-23 | 75 |  |  |
| 81 | **UML Model** | 8.55d | 2006-06-19 | 2006-06-30 |  |  |  |
| 83 | Submit For Approval | 0.2d | 2006-06-21 | 2006-06-21 | 82 |  | Orlando |
| 92 | Finalize Scope/Project Plan | 5d | 2006-06-19 | 2006-06-23 | 63 |  | Charles [10%] |
| 93 | Final 3.2 Scope/Project Plan to Gforge | 0d | 2006-06-26 | 2006-06-26 |  | start no earlier than 2006-06-26 |  |

Removed: 34 Final Scope Document Complete; 61 General Requirements Phase Complete; 68 Product Manager Project Plan Complete; 69 caCore Project Plan Complete; 86 CSM & CLM Design docs Preparation; 87 CSM & CLM Design docs Internal Review; 88 CSM & CLM Design docs Rework; 90 Design Reviews; 91 Design Documents Posted/Review Completed

Changed:

| ID | Task | Start | Finish | Duration | Complete | Total float | Predecessors | Other |
| --- | --- | --- | --- | --- | --- | --- | --- | --- |
| 1 | **CSM 3.2** |  |  |  | 10% → 12% |  |  |  |
| 2 | **Elaboration** |  | 2006-07-11 → 2006-07-07 (-4d) | 57d? → 55.95d? | 33% → 40% | 118d → 119.05d |  |  |
| 3 | **Iteration 1** |  |  |  | 68% → 75% |  |  |  |
| 32 | Update Scope | 2006-05-26 A | 2006-05-31 A |  | 0% → 100% | 4.05d → none |  |  |
| 34 | Revise Task Plan | 2006-05-30 → 2006-05-31 A (+1d) | 2006-05-31 → 2006-06-02 A (+2d) |  | 0% → 100% | 122d → none | Final Scope Document Complete → 32 |  |
| 35 | **Iteration 2** | 2006-05-19 A |  | 22d → 22.95d | 0% → 25% | 12d → 131.05d |  |  |
| 36 | **Detail Requirements** | 2006-05-19 A | 2006-06-13 → 2006-06-15 (+2d) | 16.95d → 18.95d | 0% → 29% | 12d → 131.05d |  |  |
| 37 | **Define Use Cases** | 2006-05-19 A | 2006-06-13 → 2006-06-15 (+2d) | 16.95d → 18.95d | 0% → 29% | 12d → 131.05d |  |  |
| 38 | **UPT** | 2006-05-19 A |  |  | 0% → 83% | 140.5d → 139.5d |  |  |
| 39 | Write Initial Draft 30% | 2006-05-19 A | 2006-05-22 A |  | 0% → 100% | 119.5d → none |  |  |
| 40 | Write Internal Review 60 % | 2006-05-22 A | 2006-05-23 A |  | 0% → 100% | 119.5d → none |  |  |
| 41 | Write Final Complete 100% | 2006-05-24 A | 2006-05-25 A |  | 0% → 100% | 119.5d → none |  |  |
| 42 | Review | 2006-05-26 A | 2006-05-31 A |  | 0% → 100% | 117.5d → none |  |  |
| 43 | Update per Review | 2006-05-31 A |  |  | 0% → 50% | 116.5d → 139.5d |  |  |
| 44 | **Web Service** |  | 2006-06-07 → 2006-06-09 (+2d) | 5d → 7d |  | 4.05d → 5.05d |  |  |
| 45 | Write Internal Review 60% |  | 2006-06-05 → 2006-06-07 (+2d) | 3d → 5d |  | 4.05d → 2.05d |  |  |
| 46 | Write Final Complete 100% | 2006-06-05 → 2006-06-07 (+2d) | 2006-06-06 → 2006-06-08 (+2d) |  |  | 4.05d → 2.05d |  |  |
| 47 | Review | 2006-06-06 → 2006-06-08 (+2d) | 2006-06-07 → 2006-06-09 (+2d) |  |  | 4.05d → 5.05d |  |  |
| 48 | Update per Review | 2006-06-07 → 2006-06-09 (+2d) | 2006-06-07 → 2006-06-09 (+2d) |  |  | 4.05d → 2.05d |  |  |
| 49 | **CSM APIs** | 2006-05-31 A |  |  | 0% → 7% | 135.55d → 105.35d |  |  |
| 50 | Write Initial Draft 30% | 2006-05-31 A |  |  | 0% → 20% | 111.55d → 133.55d |  |  |
| 55 | **- Performance Enhancements** | 2006-06-07 → 2006-06-09 (+2d) | 2006-06-13 → 2006-06-15 (+2d) |  |  | 4.05d → 5.05d |  |  |
| 56 | Write Internal Review 60% | 2006-06-07 → 2006-06-09 (+2d) | 2006-06-09 → 2006-06-13 (+4d) |  |  | 4.05d → 2.05d |  |  |
| 57 | Write Final Complete 100% | 2006-06-09 → 2006-06-13 (+4d) | 2006-06-12 → 2006-06-14 (+2d) |  |  | 4.05d → 2.05d |  |  |
| 58 | Review | 2006-06-12 → 2006-06-14 (+2d) | 2006-06-13 → 2006-06-15 (+2d) |  |  | 4.05d → 5.05d |  |  |
| 59 | Update per Review | 2006-06-13 → 2006-06-15 (+2d) | 2006-06-13 → 2006-06-15 (+2d) |  |  | 4.05d → 2.05d |  |  |
| 60 | Revise Scope Document | 2006-06-13 → 2006-06-14 (+1d) | 2006-06-14 → 2006-06-15 (+1d) |  |  | 110.05d → 131.05d | 36 → 36FS-1d |  |
| 61 | Revised Scope Document Complete | 2006-06-08 → 2006-06-13 (+5d) | 2006-06-08 → 2006-06-13 (+5d) |  |  | 117d → 138d |  | constraint start no earlier than 2006-06-08 → start no earlier than 2006-06-13 |
| 62 | Revise Task Plan | 2006-06-14 → 2006-06-15 (+1d) | 2006-06-16 → 2006-06-21 (+5d) | 2d → 4d |  | 110.05d → 131.05d |  |  |
| 63 | Revised PM Project Plan Submitted | 2006-06-12 → 2006-06-19 (+7d) | 2006-06-12 → 2006-06-19 (+7d) |  |  | 115d → 129d |  | was named Project Manager Project Plan Complete; constraint start no earlier than 2006-06-12 → start no earlier than 2006-06-19 |
| 64 | **Iteration 3** | 2006-06-09 → 2006-06-12 (+3d) | 2006-07-11 → 2006-07-07 (-4d) | 22d → 19.5d |  | 7d → 8.55d |  |  |
| 66 | Review Testability of Requirements | 2006-06-13 → 2006-06-15 (+2d) | 2006-06-19 → 2006-06-21 (+2d) |  |  | 94.55d → 116.55d |  |  |
| 67 | Test Plan Development Intial Template Draft | 2006-06-19 → 2006-06-21 (+2d) | 2006-06-21 → 2006-06-23 (+2d) |  |  | 94.55d → 116.55d |  |  |
| 68 | Test Plan Development 80% Completion | 2006-06-21 → 2006-06-23 (+2d) | 2006-06-29 → 2006-07-03 (+4d) |  |  | 97.05d → 119.05d |  |  |
| 69 | Test Plan Development Internal Review 100% Completion | 2006-06-29 → 2006-07-03 (+4d) | 2006-07-03 → 2006-07-05 (+2d) |  |  | 97.05d → 119.05d |  |  |
| 70 | Test Plan Development Rework | 2006-07-03 → 2006-07-05 (+2d) | 2006-07-05 → 2006-07-07 (+2d) |  |  | 97.05d → 119.05d |  |  |
| 77 | Performance Design Peparation | 2006-06-20 → 2006-06-19 (-1d) | 2006-06-26 → 2006-06-22 (-4d) |  |  | 4.05d → 4d | 87 → 55 |  |
| 78 | Performance Design Internal Review | 2006-06-26 → 2006-06-22 (-4d) | 2006-06-26 → 2006-06-22 (-4d) |  |  | 4.05d → 4d |  |  |
| 79 | Performance Design Rework | 2006-06-26 → 2006-06-23 (-3d) | 2006-06-27 → 2006-06-23 (-4d) |  |  | 4.05d → 4d |  |  |
| 80 | CSM SAD | 2006-06-27 → 2006-06-26 (-1d) | 2006-06-30 → 2006-06-28 (-2d) |  |  | 4.05d → 4d |  |  |
| 82 | Update CSM Model | 2006-06-12 → 2006-06-19 (+7d) | 2006-06-14 → 2006-06-21 (+7d) |  |  | 112.55d → 105.35d | 49 → 74 |  |
| 84 | UML Model Changes Approved | 2006-06-09 → 2006-06-30 (+21d) | 2006-06-09 → 2006-06-30 (+21d) |  |  | 99d → 125d |  | constraint start no earlier than 2006-06-09 → start no earlier than 2006-06-30; resources Orlando → none |
| 85 | **Prototype** | 2006-06-09 → 2006-06-21 (+12d) | 2006-06-22 → 2006-07-05 (+13d) | 10d → 10.35d |  | 7d → 9.35d |  |  |
| 86 | Auth Caching | 2006-06-13 → 2006-06-29 (+16d) | 2006-06-19 → 2006-07-04 (+15d) |  |  | 4.05d → 4d | 55 → 80 |  |
| 87 | Auth Caching - Review and Baselining | 2006-06-19 → 2006-07-05 (+16d) | 2006-06-20 → 2006-07-05 (+15d) |  |  | 4.05d → 4d |  |  |
| 88 | Open/Active Directory LDAP | 2006-06-09 → 2006-06-21 (+12d) | 2006-06-14 → 2006-06-27 (+13d) |  |  | 99d → 105.35d | 84 → 83 |  |
| 89 | Open/Active Directory LDAP - Code Review and Baselining | 2006-06-15 → 2006-06-27 (+12d) | 2006-06-15 → 2006-06-28 (+13d) |  |  | 99d → 105.35d |  |  |
| 90 | Schema Support for SQL Server | 2006-06-16 → 2006-06-28 (+12d) | 2006-06-21 → 2006-07-04 (+13d) |  |  | 99d → 105.35d |  |  |
| 91 | Schema Support for SQL Server - Code Review and Baselining | 2006-06-22 → 2006-07-04 (+12d) | 2006-06-22 → 2006-07-05 (+13d) |  |  | 99d → 105.35d |  |  |
| 94 | **Construction** | 2006-06-21 → 2006-06-23 (+2d) |  | 114.05d → 112.05d |  | 14.05d → 12.05d |  |  |
| 95 | Production Support |  |  |  |  | 13d → 37d | Design Documents Posted/Review Completed → none |  |
| 96 | **Iteration 1** | 2006-06-21 → 2006-06-23 (+2d) |  | 28d → 26.05d |  | 14.05d → 12.05d |  |  |
| 98 | Development |  |  |  |  | 81.05d → 105.35d | Design Reviews → 91 |  |
| 103 | **Auth Policy Caching** | 2006-07-05 → 2006-07-06 (+1d) |  |  |  | 4.05d → 4d |  |  |
| 104 | Design | 2006-07-05 → 2006-07-06 (+1d) |  |  |  | 4.05d → 4d | Design Reviews → 87 |  |
| 105 | Development/Unit Testing | 2006-07-06 → 2006-07-07 (+1d) |  |  |  | 4.05d → 4d |  |  |
| 110 | **Regression Test Complete Code Coverage** | 2006-06-21 → 2006-06-23 (+2d) | 2006-06-30 → 2006-07-04 (+4d) |  |  | 118.55d → 116.55d |  |  |
| 111 | Implementation | 2006-06-21 → 2006-06-23 (+2d) | 2006-06-30 → 2006-07-04 (+4d) |  |  | 94.55d → 116.55d |  |  |
| 112 | QA Test | 2006-06-30 → 2006-07-04 (+4d) | 2006-07-18 → 2006-07-20 (+2d) |  |  | 88.55d → 110.55d |  |  |
| 113 | Testing Support | 2006-07-25 → 2006-07-26 (+1d) |  |  |  | 4.05d → 4d |  |  |
| 114 | **Iteration 2** | 2006-07-31 → 2006-08-01 (+1d) |  |  |  | 4.05d → 4d |  |  |
| 115 | **Application Specific UPT and APIs** | 2006-07-31 → 2006-08-01 (+1d) |  |  |  | 6.05d → 6d |  |  |
| 116 | Design | 2006-07-31 → 2006-08-01 (+1d) |  |  |  | 27.05d → 6d |  |  |
| 117 | Development/Unit Test | 2006-08-02 → 2006-08-03 (+1d) |  |  |  | 27.05d → 6d |  |  |
| 118 | **Improve Exception Handling** | 2006-08-09 → 2006-08-10 (+1d) |  |  |  | 6.05d → 6d |  |  |
| 119 | Development/Unit Test | 2006-08-09 → 2006-08-10 (+1d) |  |  |  | 27.05d → 6d |  |  |
| 120 | **Performance Enhancements** | 2006-07-31 → 2006-08-01 (+1d) |  |  |  | 4.05d → 4d |  |  |
| 121 | **Fix Update Methods** | 2006-07-31 → 2006-08-01 (+1d) |  |  |  | 4.05d → 4d |  |  |
| 122 | Development/Unit Test | 2006-07-31 → 2006-08-01 (+1d) |  |  |  | 4.05d → 4d |  |  |
| 123 | **Add Protection Element Type and Retrieve All Accessible Values by Type Method** | 2006-08-03 → 2006-08-04 (+1d) |  |  |  | 4.05d → 4d |  |  |

| ID | Task | Start | Duration | Total float |
| --- | --- | --- | --- | --- |
| 124 | Design | 2006-08-03 → 2006-08-04 (+1d) |  | 4.05d → 4d |
| 125 | Development | 2006-08-07 → 2006-08-08 (+1d) |  | 4.05d → 4d |
| 126 | **Grid SAML Assertion Support** | 2006-08-11 → 2006-08-14 (+3d) |  | 4.05d → 4d |
| 127 | Design | 2006-08-11 → 2006-08-14 (+3d) |  | 4.05d → 4d |
| 128 | Development | 2006-08-18 → 2006-08-21 (+3d) |  | 4.05d → 4d |
| 129 | **Secure SDK interfaces** | 2006-09-08 → 2006-09-11 (+3d) |  | 4.05d → 4d |
| 130 | Design | 2006-09-08 → 2006-09-11 (+3d) |  | 4.05d → 4d |
| 131 | Development | 2006-09-12 → 2006-09-13 (+1d) |  | 4.05d → 4d |
| 132 | **BMS Code Integration** | 2006-08-16 → 2006-08-17 (+1d) |  | 6.05d → 6d |
| 133 | Design | 2006-08-16 → 2006-08-17 (+1d) |  | 27.05d → 6d |
| 134 | Development | 2006-08-18 → 2006-08-21 (+3d) |  | 27.05d → 6d |
| 135 | **Defect Fixes** | 2006-09-06 → 2006-09-07 (+1d) |  | 4.05d → 4d |
| 136 | Development/Unit Test | 2006-09-06 → 2006-09-07 (+1d) |  | 27.05d → 6d |
| 137 | Development/Unit Test | 2006-09-22 → 2006-09-25 (+3d) |  | 4.05d → 4d |
| 139 | **Testing** | 2006-08-11 → 2006-08-14 (+3d) |  | 34.05d → 34d |
| 140 | Load & Component Test Development | 2006-08-11 → 2006-08-14 (+3d) |  | 33.05d → 54d |
| 141 | QA Test Components | 2006-09-29 → 2006-10-02 (+3d) |  | 13.05d → 34d |
| 142 | Test Support | 2006-09-29 → 2006-10-02 (+3d) |  | 26.05d → 34d |
| 144 | **Iteration 3** | 2006-10-12 → 2006-10-13 (+1d) | 33.05d → 33d |  |
| 145 | **Internal System** | 2006-10-12 → 2006-10-13 (+1d) |  | 34.05d → 34d |
| 146 | Execution | 2006-10-12 → 2006-10-13 (+1d) |  | 36.05d → 36d |
| 147 | Test Support | 2006-10-12 → 2006-10-13 (+1d) |  | 34.05d → 34d |
| 149 | Push Candidate to Staging | 2006-11-01 → 2006-11-02 (+1d) |  | 34.05d → 34d |
| 155 | **Transition** | 2006-09-29 → 2006-10-02 (+3d) | 59.05d? → 59d? |  |
| 156 | **Documentation** | 2006-09-29 → 2006-10-02 (+3d) |  | 4.05d → 4d |
| 157 | Write Draft Documentation/ Update User Guide | 2006-09-29 → 2006-10-02 (+3d) |  | 4.05d → 4d |
| 159 | Review Technical/User Docs | 2006-10-12 → 2006-10-13 (+1d) |  | 4.05d → 4d |
| 161 | Incorporate Comments to User Docs | 2006-11-10 → 2006-11-13 (+3d) |  | 4.05d → 4d |
| 163 | Finalize Documents | 2006-11-13 → 2006-11-14 (+1d) |  | 4.05d → 4d |
