# NCICBSecurityService_phase3

How a schedule from MS Project changed from version to version. A marks actual dates.

## Version 1 (saved 2005-04-20)

Note of the change: New Project Plan

| ID | WBS | Task | Duration | Start | Finish | Predecessors | Complete | Total float | Constraint |
| --- | --- | --- | --- | --- | --- | --- | --- | --- | --- |
| 1 | 1 | **Security Module (Release four)** | 308d? | 2004-09-27 A | 2005-11-30 |  | 3% | 0d |  |
| 2 |  | Application Integration and Support | 1d? | 2004-09-27 | 2004-09-27 |  |  | 307d |  |
| 3 | 1.2 | **Inception** | 25d? | 2005-04-01 A | 2005-05-05 |  | 29% | 149d |  |
| 4 |  | Phase 3 Evaluation | 5.25d | 2005-04-04 A | 2005-04-11 |  | 67% | 164.75d | start no earlier than 2004-08-02 |
| 5 |  | RI Fixing | 3d | 2005-04-11 | 2005-04-14 | 4 |  | 164.75d |  |
| 6 |  | RI documentation | 7d | 2005-04-01 A | 2005-04-11 A |  | 100% |  | finish no earlier than 2005-04-11 |
| 7 |  | Ri Testing and release | 4d | 2005-04-12 A | 2005-04-15 | 6 | 5% | 163d | finish no earlier than 2005-04-15 |
| 8 |  | caBIG Annual Meeting | 2d | 2005-04-12 A | 2005-04-13 A | 7 | 100% |  |  |
| 9 |  | Research & Analysis | 5d | 2005-04-14 | 2005-04-20 | 8 |  | 155d |  |
| 10 |  | CM configuration | 2d | 2005-04-21 | 2005-04-22 | 9 |  | 155d | start no earlier than 2005-04-20 |
| 11 |  | Overall Scope and Vision Document | 5d | 2005-04-11 A | 2005-04-21 |  | 20% | 22d | finish no earlier than 2005-04-21 |
| 12 |  | Supplentary Specifications | 3d | 2005-04-25 | 2005-04-27 | 10 |  | 155d | start no earlier than 2004-09-01 |
| 13 |  | SWG Meeting | 1d? | 2005-04-27 | 2005-04-27 |  |  | 155d | start no earlier than 2005-04-27 |
| 14 |  | Fuctional Specifications | 7d | 2005-04-22 | 2005-05-02 | 11 |  | 22d |  |
| 15 |  | Identify Risk List | 2d | 2005-05-03 | 2005-05-04 | 14 |  | 149d |  |
| 16 |  | Update Detail task plan | 1d | 2005-05-05 | 2005-05-05 | 15 |  | 149d | start no earlier than 2005-04-11 |
| 17 | 1.3 | **3.1 Release** | 10d | 2005-05-03 | 2005-05-16 | 14 |  | 22d |  |
| 18 |  | Scope Document | 1d | 2005-05-03 | 2005-05-03 |  |  | 22d |  |
| 19 |  | API Changes & Bug Fixes | 2d | 2005-05-04 | 2005-05-05 | 18 |  | 22d |  |
| 20 |  | UPT Changes & Bug Fixes | 2d | 2005-05-04 | 2005-05-05 | 18 |  | 147d |  |
| 21 |  | Test API and UPT Changes | 2d | 2005-05-06 | 2005-05-09 | 19, 20 |  | 147d |  |
| 22 |  | Incorporate in RI | 2d | 2005-05-06 | 2005-05-09 | 19 |  | 22d |  |
| 23 |  | Test RI | 2d | 2005-05-10 | 2005-05-11 | 22 |  | 6.5d |  |
| 24 |  | Update Documentations | 2d | 2005-05-12 | 2005-05-13 | 23 |  | 22d |  |
| 25 |  | Releasing and Baselining | 1d | 2005-05-16 | 2005-05-16 | 24 |  | 22d |  |
| 26 | 1.4 | **Elaboration** | 26d | 2005-05-17 | 2005-06-21 |  |  | 16d |  |
| 27 | 1.4.1 | **Iteration I** | 20d | 2005-05-17 | 2005-06-13 |  |  | 22d |  |
| 28 |  | Detailed Iteration Release Plan | 1d | 2005-05-17 | 2005-05-17 | 25 |  | 40d | start no earlier than 2005-05-17 |
| 29 |  | Research Prototype Development | 20d | 2005-05-17 | 2005-06-13 | 25 |  | 22d | start no earlier than 2005-04-26 |
| 30 |  | Level 1 - 2 Use Cases | 5d | 2005-05-17 | 2005-05-23 | 25 |  | 37d | start no earlier than 2005-05-17 |
| 31 |  | Peer Review of Use Cases | 1d | 2005-05-24 | 2005-05-24 |  |  | 36d | start no earlier than 2005-05-24 |
| 32 |  | Risk List Priority | 1d | 2005-05-18 | 2005-05-18 | 28 |  | 40d |  |
| 33 | 1.4.1.6 | **Finalize Requirements** | 2d | 2005-05-26 | 2005-05-27 |  |  | 16d |  |
| 34 |  | User Working Group Review | 1d | 2005-05-26 | 2005-05-26 |  |  | 16d | start no earlier than 2005-05-26 |
| 35 |  | Stakeholder Sign Off | 1d | 2005-05-27 | 2005-05-27 | 34 |  | 16d | start no earlier than 2004-10-01 |
| 36 | 1.4.2 | **Iteration II** | 16d | 2005-05-30 | 2005-06-20 |  |  | 16d |  |
| 37 |  | Develop Architecture Prototype | 8d | 2005-05-30 | 2005-06-08 | 35 |  | 16d | finish no earlier than 2005-06-03 |
| 38 |  | Software Architecture Document | 7d | 2005-06-08 | 2005-06-17 | 37 |  | 16d | start no earlier than 2005-06-02 |
| 39 |  | Architecture Peer Review | 1d | 2005-06-07 | 2005-06-07 |  |  | 25d | start no earlier than 2005-06-07 |
| 40 |  | Prioritize Risk List | 1d | 2005-06-20 | 2005-06-20 | 38 |  | 16d | start no earlier than 2004-10-26 |
| 41 |  | Phase Review | 1d | 2005-06-21 | 2005-06-21 | 36 |  | 0.5d |  |
| 42 | 1.5 | **Construction** | 93d | 2005-06-22 | 2005-10-28 |  |  | 0d |  |
| 43 | 1.5.1 | **Iteration - SSO** | 32d | 2005-06-22 | 2005-08-05 |  |  | 15.5d |  |
| 44 |  | Detailed Iteration Plan | 1d | 2005-06-22 | 2005-06-22 | 26 |  | 16d | start no earlier than 2004-10-26 |
| 45 | 1.5.1.2 | **Design** | 5d | 2005-06-23 | 2005-06-29 |  |  | 16d |  |
| 46 |  | Level 3 - 4 Use Cases | 1d | 2005-06-23 | 2005-06-23 | 44 |  | 16d | start no earlier than 2004-10-27 |
| 47 |  | Use Case Model | 1d | 2005-06-24 | 2005-06-24 | 46 |  | 16d | start no earlier than 2004-10-27 |
| 48 |  | UML Sequence Diagram | 1d | 2005-06-27 | 2005-06-27 | 47 |  | 41.5d |  |
| 49 |  | UML Class Diagram | 2d | 2005-06-28 | 2005-06-29 | 48 |  | 41.5d |  |
| 50 |  | UML Activity Diagram | 1d | 2005-06-27 | 2005-06-27 | 47 |  | 16d | start no earlier than 2004-10-29 |
| 51 |  | Design Review | 1d | 2005-06-28 | 2005-06-28 | 50 |  | 42.5d |  |
| 52 |  | Test Case Development | 3d | 2005-06-27 | 2005-06-29 | 47 |  | 26d |  |
| 53 | 1.5.1.3 | **Implementation** | 27d | 2005-06-28 | 2005-08-03 |  |  | 16d |  |
| 54 |  | Environment Setup | 1d | 2005-06-28 | 2005-06-28 | 50 |  | 16d | start no earlier than 2004-11-01 |
| 55 |  | Code Development | 20d | 2005-06-29 | 2005-07-26 | 54 |  | 16d | start no earlier than 2004-11-08 |
| 56 |  | Junit Test Development | 3d | 2005-07-15 | 2005-07-19 |  |  | 27.5d | start no earlier than 2005-07-15 |
| 57 |  | Code Reviews | 1.5d | 2005-07-27 | 2005-07-28 | 55 |  | 0.5d | finish no earlier than 2004-11-15 |
| 58 |  | Bug Fixes | 2d | 2005-08-02 | 2005-08-03 | 57 |  | 16.5d | finish no earlier than 2005-08-03 |
| 59 | 1.5.1.4 | **Unit Testing** | 3d | 2005-07-22 | 2005-07-26 |  |  | 22.5d |  |
| 60 |  | Perform Testing | 3d | 2005-07-22 | 2005-07-26 |  |  | 22.5d | finish no earlier than 2005-07-26 |
| 61 | 1.5.1.5 | **Integration Testing** | 5d | 2005-07-28 | 2005-08-04 |  |  | 16d |  |
| 62 |  | QA Testing | 4d | 2005-07-28 | 2005-08-03 | 57 |  | 0.5d |  |
| 63 |  | Evaluate Results | 1d | 2005-08-03 | 2005-08-04 | 62 |  | 16d | start no earlier than 2004-11-16 |
| 64 |  | User Working Group Review (SAD, Design Models) | 1d | 2005-08-04 | 2005-08-04 |  |  | 15.5d | start no earlier than 2005-08-04 |
| 65 |  | Iteration Complete | 0d | 2005-08-05 | 2005-08-05 |  |  | 15.5d | start no earlier than 2005-08-05 |
| 66 | 1.5.2 | **Iteration - Auth Policy Caching** | 20.5d | 2005-06-22 | 2005-07-20 |  |  | 0.5d |  |
| 67 |  | Detailed Iteration Plan | 1d | 2005-06-22 | 2005-06-22 |  |  | 0.5d | start no earlier than 2005-06-22 |
| 68 | 1.5.2.2 | **Design** | 4d | 2005-06-23 | 2005-06-28 |  |  | 0.5d |  |
| 69 |  | Level 3 - 4 Use Cases | 1d | 2005-06-23 | 2005-06-23 | 67 |  | 0.5d | start no earlier than 2004-10-27 |
| 70 |  | Use Case Model | 1d | 2005-06-24 | 2005-06-24 | 69 |  | 0.5d | start no earlier than 2004-10-27 |

| ID | WBS | Task | Duration | Start | Finish | Predecessors | Total float | Constraint |
| --- | --- | --- | --- | --- | --- | --- | --- | --- |
| 71 |  | UML Sequence Diagram | 1d | 2005-06-27 | 2005-06-27 | 70 | 16d |  |
| 72 |  | UML Class Diagram | 1d | 2005-06-28 | 2005-06-28 | 71 | 16d |  |
| 73 |  | UML Activity Diagram | 1d | 2005-06-27 | 2005-06-27 | 70 | 0.5d | start no earlier than 2004-10-29 |
| 74 |  | Design Review | 1d | 2005-06-28 | 2005-06-28 | 73 | 16d |  |
| 75 |  | Test Case Development | 1d | 2005-06-27 | 2005-06-27 | 70 | 42d |  |
| 76 | 1.5.2.3 | **Implementation** | 15.5d | 2005-06-28 | 2005-07-19 |  | 0.5d |  |
| 77 |  | Environment Setup | 2d | 2005-06-28 | 2005-06-29 | 73 | 0.5d | start no earlier than 2004-11-01 |
| 78 |  | Code Development | 10d | 2005-06-30 | 2005-07-13 | 77 | 0.5d | start no earlier than 2004-11-08 |
| 79 |  | Junit Test Development | 1d | 2005-07-15 | 2005-07-15 |  | 3d | start no earlier than 2005-07-15 |
| 80 |  | Code Reviews | 1.5d | 2005-07-14 | 2005-07-15 | 78 | 25.5d | finish no earlier than 2004-11-15 |
| 81 |  | Bug Fixes | 2d | 2005-07-15 | 2005-07-19 | 80 | 1.5d | finish no earlier than 2005-07-18 |
| 82 | 1.5.2.4 | **Unit Testing** | 3d | 2005-07-08 | 2005-07-12 |  | 6d |  |
| 83 |  | Perform Testing | 3d | 2005-07-08 | 2005-07-12 |  | 6d | finish no earlier than 2005-07-12 |
| 84 | 1.5.2.5 | **Integration Testing** | 3d | 2005-07-15 | 2005-07-20 |  | 0.5d |  |
| 85 |  | QA Testing | 2d | 2005-07-15 | 2005-07-19 | 80 | 25.5d |  |
| 86 |  | Evaluate Results | 1d | 2005-07-19 | 2005-07-20 | 85 | 0.5d | start no earlier than 2004-11-16 |
| 87 |  | Iteration Complete | 0d | 2005-07-20 | 2005-07-20 |  | 1d | start no earlier than 2005-07-20 |
| 88 | 1.5.3 | **Iteration - Authentication Web Service** | 14d | 2005-08-05 | 2005-08-24 | 43 | 15.5d |  |
| 89 |  | Detailed Iteration Plan | 1d | 2005-08-05 | 2005-08-05 |  | 15.5d | start no earlier than 2004-10-26 |
| 90 | 1.5.3.2 | **Design** | 5d | 2005-08-08 | 2005-08-12 |  | 15.5d |  |
| 91 |  | Level 3 - 4 Use Cases | 1d | 2005-08-08 | 2005-08-08 | 89 | 15.5d | start no earlier than 2004-10-27 |
| 92 |  | Use Case Model | 2d | 2005-08-09 | 2005-08-10 | 91 | 15.5d | start no earlier than 2004-10-27 |
| 93 |  | UML Sequence Diagram | 1d | 2005-08-11 | 2005-08-11 | 92 | 23.5d |  |
| 94 |  | UML Class Diagram | 1d | 2005-08-12 | 2005-08-12 | 93 | 23.5d |  |
| 95 |  | UML Activity Diagram | 1d | 2005-08-11 | 2005-08-11 | 92 | 15.5d | start no earlier than 2004-10-29 |
| 96 |  | Design Review | 1d | 2005-08-12 | 2005-08-12 | 95 | 23.5d |  |
| 97 |  | Test Case Development | 1d | 2005-08-11 | 2005-08-11 | 92 | 9d |  |
| 98 | 1.5.3.3 | **Implementation** | 7d | 2005-08-12 | 2005-08-22 |  | 15.5d |  |
| 99 |  | Environment Setup | 1d | 2005-08-12 | 2005-08-12 | 95 | 15.5d | start no earlier than 2004-11-01 |
| 100 |  | Code Development | 4d | 2005-08-15 | 2005-08-18 | 99 | 15.5d | start no earlier than 2004-11-08 |
| 101 |  | Junit Test Development | 1d | 2005-08-17 | 2005-08-17 |  | 20.5d | start no earlier than 2005-08-17 |
| 102 |  | Code Reviews | 1d | 2005-08-19 | 2005-08-19 | 100 | 15.5d | finish no earlier than 2004-11-15 |
| 103 |  | Bug Fixes | 1d | 2005-08-22 | 2005-08-22 | 102 | 17.5d | finish no earlier than 2005-08-03 |
| 104 | 1.5.3.4 | **Unit Testing** | 2d | 2005-08-18 | 2005-08-19 |  | 18.5d |  |
| 105 |  | Perform Testing | 2d | 2005-08-18 | 2005-08-19 |  | 18.5d | finish no earlier than 2005-08-19 |
| 106 | 1.5.3.5 | **Integration Testing** | 3d | 2005-08-22 | 2005-08-24 |  | 15.5d |  |
| 107 |  | QA Testing | 2d | 2005-08-22 | 2005-08-23 | 102 | 15.5d | start no earlier than 2005-08-22 |
| 108 |  | Evaluate Results | 1d | 2005-08-24 | 2005-08-24 | 107 | 15.5d | start no earlier than 2004-11-16 |
| 109 |  | Iteration Complete | 0d | 2005-08-05 | 2005-08-05 |  | 29.5d | start no earlier than 2005-08-05 |
| 110 | 1.5.4 | **Iteration - Policy Adapters** | 20.5d | 2005-07-20 | 2005-08-18 | 66 | 0d |  |
| 111 |  | Detailed Iteration Plan | 1d | 2005-07-20 | 2005-07-21 |  | 0.5d | start no earlier than 2004-10-26 |
| 112 | 1.5.4.2 | **Design** | 4d | 2005-07-21 | 2005-07-27 |  | 0.5d |  |
| 113 |  | Level 3 - 4 Use Cases | 1d | 2005-07-21 | 2005-07-22 | 111 | 0.5d | start no earlier than 2004-10-27 |
| 114 |  | Use Case Model | 1d | 2005-07-22 | 2005-07-25 | 113 | 0.5d | start no earlier than 2004-10-27 |
| 115 |  | UML Sequence Diagram | 1d | 2005-07-25 | 2005-07-26 | 114 | 15.5d |  |
| 116 |  | UML Class Diagram | 1d | 2005-07-26 | 2005-07-27 | 115 | 15.5d |  |
| 117 |  | UML Activity Diagram | 1d | 2005-07-25 | 2005-07-26 | 114 | 0.5d | start no earlier than 2004-10-29 |
| 118 |  | Design Review | 1d | 2005-07-26 | 2005-07-27 | 117 | 15.5d |  |
| 119 |  | Test Case Development | 2d | 2005-07-25 | 2005-07-27 | 114 | 52d |  |
| 120 | 1.5.4.3 | **Implementation** | 14d | 2005-07-26 | 2005-08-15 |  | 0.5d |  |
| 121 |  | Environment Setup | 1d | 2005-07-26 | 2005-07-27 | 117 | 0.5d | start no earlier than 2004-11-01 |
| 122 |  | Code Development | 10d | 2005-07-27 | 2005-08-10 | 121 | 0.5d | start no earlier than 2004-11-08 |
| 123 |  | Junit Test Development | 2d | 2005-08-01 | 2005-08-02 |  | 11d | start no earlier than 2005-08-01 |
| 124 |  | Code Reviews | 1d | 2005-08-10 | 2005-08-11 | 122 | 37d | finish no earlier than 2004-11-15 |
| 125 |  | Bug Fixes | 2d | 2005-08-11 | 2005-08-15 | 124 | 2.5d | finish no earlier than 2005-08-03 |
| 126 | 1.5.4.4 | **Unit Testing** | 3d | 2005-08-08 | 2005-08-10 |  | 5d |  |
| 127 |  | Perform Testing | 3d | 2005-08-08 | 2005-08-10 |  | 5d | finish no earlier than 2005-08-10 |
| 128 | 1.5.4.5 | **Integration Testing** | 4d | 2005-08-11 | 2005-08-17 |  | 0.5d |  |
| 129 |  | QA Testing | 3d | 2005-08-11 | 2005-08-16 | 124 | 37d |  |
| 130 |  | Evaluate Results | 1d | 2005-08-16 | 2005-08-17 | 129 | 0.5d | start no earlier than 2004-11-16 |
| 131 |  | Iteration Complete | 0d | 2005-08-18 | 2005-08-18 |  | 0d | start no earlier than 2005-08-18 |
| 132 | 1.5.5 | **Iteration - UPT Enhancements** | 31.5d | 2005-08-25 | 2005-10-07 | 88 | 15.5d |  |
| 133 |  | Detailed Iteration Plan | 1d | 2005-08-25 | 2005-08-25 |  | 15.5d | start no earlier than 2004-10-26 |
| 134 | 1.5.5.2 | **Design** | 5d | 2005-08-26 | 2005-09-01 |  | 15.5d |  |
| 135 |  | Level 3 - 4 Use Cases | 1d | 2005-08-26 | 2005-08-26 | 133 | 15.5d | start no earlier than 2004-10-27 |
| 136 |  | Use Case Model | 1d | 2005-08-29 | 2005-08-29 | 135 | 15.5d | start no earlier than 2004-10-27 |
| 137 |  | UML Sequence Diagram | 1d | 2005-08-30 | 2005-08-30 | 136 | 41d |  |
| 138 |  | UML Class Diagram | 2d | 2005-08-31 | 2005-09-01 | 137 | 41d |  |
| 139 |  | UML Activity Diagram | 1d | 2005-08-30 | 2005-08-30 | 136 | 15.5d | start no earlier than 2004-10-29 |
| 140 |  | Design Review | 1d | 2005-08-31 | 2005-08-31 | 139 | 42d |  |

| ID | WBS | Task | Duration | Start | Finish | Predecessors | Total float | Constraint |
| --- | --- | --- | --- | --- | --- | --- | --- | --- |
| 141 |  | Test Case Development | 3d | 2005-08-30 | 2005-09-01 | 136 | 25.5d |  |
| 142 | 1.5.5.3 | **Implementation** | 27d | 2005-08-31 | 2005-10-06 |  | 15.5d |  |
| 143 |  | Environment Setup | 1d | 2005-08-31 | 2005-08-31 | 139 | 15.5d | start no earlier than 2004-11-01 |
| 144 |  | Code Development | 20d | 2005-09-01 | 2005-09-28 | 143 | 15.5d | start no earlier than 2004-11-08 |
| 145 |  | Junit Test Development | 3d | 2005-09-26 | 2005-09-28 |  | 22d | finish no earlier than 2005-09-28 |
| 146 |  | Code Reviews | 1.5d | 2005-09-29 | 2005-09-30 | 144 | 15.5d | finish no earlier than 2004-11-15 |
| 147 |  | Bug Fixes | 4d | 2005-10-03 | 2005-10-06 | 146 | 16d | start no earlier than 2005-10-03 |
| 148 | 1.5.5.4 | **Unit Testing** | 3d | 2005-08-25 | 2005-08-29 |  | 44d |  |
| 149 |  | Perform Testing | 3d | 2005-08-25 | 2005-08-29 |  | 44d | finish no earlier than 2005-07-26 |
| 150 | 1.5.5.5 | **Integration Testing** | 5d | 2005-09-30 | 2005-10-07 |  | 15.5d |  |
| 151 |  | QA Testing | 4d | 2005-09-30 | 2005-10-06 | 146 | 15.5d |  |
| 152 |  | Evaluate Results | 1d | 2005-10-06 | 2005-10-07 | 151 | 15.5d | start no earlier than 2004-11-16 |
| 153 |  | Iteration Complete | 0d | 2005-10-07 | 2005-10-07 |  | 16d | start no earlier than 2005-10-07 |
| 154 | 1.5.6 | **Iteration - AOP Integration** | 31.5d | 2005-08-18 | 2005-09-30 | 110 | 0d |  |
| 155 |  | Detailed Iteration Plan | 1d | 2005-08-18 | 2005-08-18 |  | 0d | start no earlier than 2004-10-26 |
| 156 | 1.5.6.2 | **Design** | 5d | 2005-08-19 | 2005-08-25 |  | 0d |  |
| 157 |  | Level 3 - 4 Use Cases | 1d | 2005-08-19 | 2005-08-19 | 155 | 0d | start no earlier than 2004-10-27 |
| 158 |  | Use Case Model | 1d | 2005-08-22 | 2005-08-22 | 157 | 0d | start no earlier than 2004-10-27 |
| 159 |  | UML Sequence Diagram | 1d | 2005-08-23 | 2005-08-23 | 158 | 25.5d |  |
| 160 |  | UML Class Diagram | 2d | 2005-08-24 | 2005-08-25 | 159 | 25.5d |  |
| 161 |  | UML Activity Diagram | 1d | 2005-08-23 | 2005-08-23 | 158 | 0d | start no earlier than 2004-10-29 |
| 162 |  | Design Review | 1d | 2005-08-24 | 2005-08-24 | 161 | 26.5d |  |
| 163 |  | Test Case Development | 3d | 2005-08-23 | 2005-08-25 | 158 | 25.5d |  |
| 164 | 1.5.6.3 | **Implementation** | 28.5d | 2005-08-18 | 2005-09-27 |  | 3d |  |
| 165 |  | Environment Setup | 1d | 2005-08-24 | 2005-08-24 | 161 | 0d | start no earlier than 2004-11-01 |
| 166 |  | Code Development | 20d | 2005-08-25 | 2005-09-21 | 165 | 0d | start no earlier than 2004-11-08 |
| 167 |  | Junit Test Development | 3d | 2005-08-18 | 2005-08-22 |  | 28.5d | start no earlier than 2005-07-15 |
| 168 |  | Code Reviews | 1.5d | 2005-09-22 | 2005-09-23 | 166 | 0d | finish no earlier than 2004-11-15 |
| 169 |  | Bug Fixes | 2d | 2005-09-23 | 2005-09-27 | 168 | 3d | finish no earlier than 2005-08-03 |
| 170 | 1.5.6.4 | **Unit Testing** | 3d | 2005-08-18 | 2005-08-22 |  | 28.5d |  |
| 171 |  | Perform Testing | 3d | 2005-08-18 | 2005-08-22 |  | 28.5d | finish no earlier than 2005-07-26 |
| 172 | 1.5.6.5 | **Integration Testing** | 5d | 2005-09-23 | 2005-09-30 |  | 0d |  |
| 173 |  | QA Testing | 4d | 2005-09-23 | 2005-09-29 | 168 | 0d |  |
| 174 |  | Evaluate Results | 1d | 2005-09-29 | 2005-09-30 | 173 | 0d | start no earlier than 2004-11-16 |
| 175 |  | User Working Group Review (SAD, Design Models) | 1d | 2005-08-18 | 2005-08-18 |  | 30.5d | start no earlier than 2005-08-04 |
| 176 |  | Iteration Complete | 0d | 2005-08-18 | 2005-08-18 |  | 31.5d | start no earlier than 2005-08-05 |
| 177 | 1.5.7 | **Iteration - Message Level Security** | 20.5d | 2005-09-30 | 2005-10-28 | 154 | 0d |  |
| 178 |  | Detailed Iteration Plan | 1d | 2005-09-30 | 2005-10-03 |  | 0d | start no earlier than 2005-06-22 |
| 179 | 1.5.7.2 | **Design** | 4d | 2005-10-03 | 2005-10-07 |  | 0d |  |
| 180 |  | Level 3 - 4 Use Cases | 1d | 2005-10-03 | 2005-10-04 | 178 | 0d | start no earlier than 2004-10-27 |
| 181 |  | Use Case Model | 1d | 2005-10-04 | 2005-10-05 | 180 | 0d | start no earlier than 2004-10-27 |
| 182 |  | UML Sequence Diagram | 1d | 2005-10-05 | 2005-10-06 | 181 | 15.5d |  |
| 183 |  | UML Class Diagram | 1d | 2005-10-06 | 2005-10-07 | 182 | 15.5d |  |
| 184 |  | UML Activity Diagram | 1d | 2005-10-05 | 2005-10-06 | 181 | 0d | start no earlier than 2004-10-29 |
| 185 |  | Design Review | 1d | 2005-10-06 | 2005-10-07 | 184 | 15.5d |  |
| 186 |  | Test Case Development | 1d | 2005-10-05 | 2005-10-06 | 181 | 16.5d |  |
| 187 | 1.5.7.3 | **Implementation** | 19.5d | 2005-09-30 | 2005-10-27 |  | 1d |  |
| 188 |  | Environment Setup | 2d | 2005-10-06 | 2005-10-10 | 184 | 0d | start no earlier than 2004-11-01 |
| 189 |  | Code Development | 10d | 2005-10-10 | 2005-10-24 | 188 | 0d | start no earlier than 2004-11-08 |
| 190 |  | Junit Test Development | 1d | 2005-09-30 | 2005-10-03 |  | 19.5d | start no earlier than 2005-07-15 |
| 191 |  | Code Reviews | 1.5d | 2005-10-24 | 2005-10-25 | 189 | 0d | finish no earlier than 2004-11-15 |
| 192 |  | Bug Fixes | 2d | 2005-10-26 | 2005-10-27 | 191 | 1d | finish no earlier than 2005-07-18 |
| 193 | 1.5.7.4 | **Unit Testing** | 3d | 2005-09-30 | 2005-10-05 |  | 17.5d |  |
| 194 |  | Perform Testing | 3d | 2005-09-30 | 2005-10-05 |  | 17.5d | finish no earlier than 2005-07-12 |
| 195 | 1.5.7.5 | **Integration Testing** | 3d | 2005-10-26 | 2005-10-28 |  | 0d |  |
| 196 |  | QA Testing | 2d | 2005-10-26 | 2005-10-27 | 191 | 0d |  |
| 197 |  | Evaluate Results | 1d | 2005-10-28 | 2005-10-28 | 196 | 0d | start no earlier than 2004-11-16 |
| 198 |  | Iteration Complete | 0d | 2005-10-28 | 2005-10-28 |  | 1d | start no earlier than 2005-10-28 |
| 199 | 1.6 | **Transition** | 23d | 2005-10-28 | 2005-11-30 | 42 | 0d |  |
| 200 | 1.6.1 | **Iteration I** | 18d | 2005-10-28 | 2005-11-23 |  | 0d |  |
| 201 | 1.6.1.1 | **QA Testing** | 12d | 2005-10-31 | 2005-11-15 |  | 6d |  |
| 202 |  | Setup of Environment | 2d | 2005-10-31 | 2005-11-01 |  | 6d |  |
| 203 |  | Regression Testing | 10d | 2005-11-02 | 2005-11-15 | 202 | 6d |  |
| 204 |  | Bug Fixes | 3d | 2005-11-11 | 2005-11-15 |  | 6d | finish no earlier than 2005-11-15 |
| 205 | 1.6.1.2 | **Documentation** | 18d | 2005-10-31 | 2005-11-23 |  | 0d |  |
| 206 |  | Application Developers Guide Document | 15d | 2005-10-31 | 2005-11-18 |  | 0d | finish no earlier than 2005-02-04 |
| 207 |  | Java Docs | 4d | 2005-10-31 | 2005-11-03 | 42 | 14d | start no earlier than 2005-01-24 |
| 208 |  | UPT User Guide Updation | 10d | 2005-10-31 | 2005-11-11 | 42 | 8d | start no earlier than 2005-02-07 |
| 209 |  | caCore Technical Guide Modifications | 2d | 2005-11-21 | 2005-11-22 | 206 | 0d | finish no earlier than 2005-02-14 |
| 210 |  | Release Notes | 1d | 2005-11-23 | 2005-11-23 | 209 | 0d |  |

| ID | WBS | Task | Duration | Start | Finish | Predecessors | Total float | Constraint |
| --- | --- | --- | --- | --- | --- | --- | --- | --- |
| 211 |  | Iteration I Complete | 0d | 2005-10-28 | 2005-10-28 |  | 0d | start no earlier than 2005-02-15 |
| 212 | 1.6.2 | **Iteration II** | 4d | 2005-11-23 | 2005-11-29 | 200 | 0d |  |
| 213 | 1.6.2.1 | **Staging Environment Testing** | 4d | 2005-11-24 | 2005-11-29 |  | 0d |  |
| 214 |  | Setup of Environment | 1d | 2005-11-24 | 2005-11-24 |  | 0d |  |
| 215 |  | Regression Testing | 3d | 2005-11-25 | 2005-11-29 | 214 | 0d |  |
| 216 |  | Bug Fixes | 1d | 2005-11-24 | 2005-11-24 |  | 3d | finish no earlier than 2005-11-15 |
| 217 |  | Iteration II Complete | 0d | 2005-11-23 | 2005-11-23 |  | 0d | start no earlier than 2005-02-28 |
| 218 | 1.6.3 | **Release** | 1d | 2005-11-30 | 2005-11-30 | 212 | 0d |  |
| 219 |  | Tag into the CVS & Release | 1d | 2005-11-30 | 2005-11-30 |  | 0d | start no earlier than 2005-03-07 |

## Version 2 (saved 2005-04-28)

Note of the change: Semi Updated Copy, Will have to sit with charles to update it further

Last finish stays 2005-11-30. Complete tasks 2 → 7.

Added:

| ID | Task | Duration | Start | Finish | Predecessors | Constraint | Resources |
| --- | --- | --- | --- | --- | --- | --- | --- |
| 12 | SDK Research & Analysis | 2d | 2005-04-26 | 2005-04-27 |  | start no earlier than 2005-04-26 | Vinay |
| 13 | SDK Scope/Vision Document | 2d | 2005-04-27 | 2005-04-28 | 12FS-1d | start no earlier than 2005-04-27 | Vinay |
| 14 | Scope Vision Review & Discussion | 1d | 2005-04-29 | 2005-04-29 | 13 |  |  |
| 16 | Review Supplementart Specs | 1d | 2005-05-09 | 2005-05-09 | 15 |  | Eric |
| 23 | **Iteration I** | 16d | 2005-04-28 | 2005-05-19 | 22 |  |  |
| 25 | Modify API for Negative Privileges | 2d | 2005-05-02 | 2005-05-03 | 14 | start no earlier than 2005-05-02 | Vinay [10%]; Kunal |
| 26 | Modify API for Primitive Data Types | 2d | 2005-05-03 | 2005-05-04 | 25FS-1d |  | Vinay [10%]; Kunal |
| 27 | Cross Database Compatibility | 7d | 2005-05-04 | 2005-05-12 | 25 |  | Vinay [20%]; Kunal |
| 29 | UI Bug Fixes | 3d | 2005-04-28 | 2005-05-02 | 22 |  | Eric |
| 30 | Modify Association Screen | 4d | 2005-05-02 | 2005-05-05 | 29FS-1d |  | Kunal; Eric |
| 31 | Cross Browser Compatibility | 7d | 2005-05-03 | 2005-05-11 | 29 |  | Eric; Kunal |
| 33 | Bug Fix | 1d | 2005-05-17 | 2005-05-17 | 24, 28 | finish no earlier than 2005-05-17 | Kunal; Eric |
| 36 | **Iteration II** | 42d | 2005-04-28 | 2005-06-24 |  |  |  |
| 37 | **Open Source Initiative** | 11d | 2005-04-28 | 2005-05-12 |  |  |  |
| 38 | Modify nightly build script | 3d | 2005-04-28 | 2005-05-02 | 22 |  | Brian [25%] |
| 39 | Update Junit Test cases | 5d | 2005-05-03 | 2005-05-09 | 38 |  | Brian [25%] |
| 40 | Clean up Code base | 3d | 2005-05-10 | 2005-05-12 | 39 | start no earlier than 2005-05-10 | Brian [25%] |
| 41 | **API Changes & Bug Fixes** | 11d | 2005-05-20 | 2005-06-03 |  |  |  |
| 42 | Standardize Privileges | 1d | 2005-05-23 | 2005-05-23 | 23 | start no earlier than 2005-05-20 | Vinay [25%] |
| 43 | Configurable Queries | 4d | 2005-05-20 | 2005-05-25 | 23 |  | XYZ |
| 44 | **Provide new Methods for Reporting & Changes for Caching** | 11d | 2005-05-20 | 2005-06-03 | 23 |  |  |
| 45 | Design | 4d | 2005-05-20 | 2005-05-25 |  |  | Kunal; Vinay [10%] |
| 46 | Implementation | 7d | 2005-05-26 | 2005-06-03 | 45 |  | XYZ |
| 47 | **UPT Changes & Bug Fixes** | 13d | 2005-05-26 | 2005-06-13 |  |  |  |
| 48 | Modify UPT for Standard Privileges | 2d | 2005-05-26 | 2005-05-27 | 45 |  | Kunal |
| 49 | Provide Reporting Functionality | 6d | 2005-06-06 | 2005-06-13 | 44 |  | XYZ |
| 50 | **RI Changes & Bug Fixes** | 3d | 2005-05-30 | 2005-06-01 |  |  |  |
| 51 | Modify RI to use new APIs | 3d | 2005-05-30 | 2005-06-01 | 48 |  | Kunal |
| 53 | RI Guide | 2d | 2005-06-02 | 2005-06-03 | 51 | start no earlier than 2005-06-02 | Kunal |
| 54 | UPT Guide Changes | 2d | 2005-06-14 | 2005-06-15 | 49 |  | XYZ |
| 55 | Developers Guide | 2d | 2005-06-06 | 2005-06-07 | 46, 57 |  | Eric |
| 56 | **Testing** | 25d | 2005-05-20 | 2005-06-23 |  |  |  |
| 57 | Developing Test Cases | 4d | 2005-05-20 | 2005-05-25 | 23 |  | Eric |
| 58 | Integration Test - API and UPT Changes | 4d | 2005-06-14 | 2005-06-17 | 49 |  | Eric |
| 59 | Bug Fix | 4d | 2005-06-14 | 2005-06-17 | 49 | finish no earlier than 2005-05-17 | Kunal; XYZ |
| 60 | Test on QA | 2d | 2005-06-20 | 2005-06-21 | 58 |  | Eric; Kunal; XYZ |
| 61 | Stage Testing | 2d | 2005-06-22 | 2005-06-23 | 60 |  | Kunal; XYZ; Eric |
| 63 | Identify & Publish Requirements for out sourced components | 0d | 2005-06-24 | 2005-06-24 | 62 |  |  |
| 64 | SDK Release | 34d | 2005-05-02 | 2005-06-21 | 14 |  | Vinay [75%] |

Changed:

| ID | Task | Start | Finish | Duration | Complete | Total float | Predecessors | Other |
| --- | --- | --- | --- | --- | --- | --- | --- | --- |
| 1 | **Security Module (Release four)** | 2004-09-27 A → 2005-04-01 A (+186d) |  | 308d? → 174d? | 3% → 4% |  |  |  |
| 2 | Application Integration and Support | 2004-09-27 → 2005-04-01 (+186d) | 2004-09-27 → 2005-11-30 (+429d) | 1d? → 174d? |  | 307d → 0d |  | constraint none → start no earlier than 2005-04-01; resources none → Kunal [25%]; Vinay [5%] |
| 3 | **Inception** |  | 2005-05-05 → 2005-05-18 (+13d) | 25d? → 34d? | 29% → 52% | 149d → 140d |  |  |
| 5 | RI Fixing | 2005-04-11 A | 2005-04-14 A |  | 0% → 100% | 164.75d → none |  |  |
| 7 | Ri Testing and release |  | 2005-04-15 A |  | 5% → 100% | 163d → none |  |  |
| 10 | CM configuration | 2005-04-21 A | 2005-04-22 A |  | 0% → 100% | 155d → none |  | resources Vinay; Kunal → Eric; Kunal |
| 11 | Overall Scope and Vision Document |  | 2005-04-21 A |  | 20% → 100% | 22d → none |  |  |
| 15 | Supplentary Specifications | 2005-04-25 → 2005-05-04 (+9d) | 2005-04-27 → 2005-05-06 (+9d) |  |  | 155d → 140d | 10 → 25 | resources Vinay; Kunal → Vinay; Kunal [15%] |
| 17 | SWG Meeting | 2005-04-27 → 2005-05-05 (+8d) | 2005-04-27 → 2005-05-05 (+8d) | 1d? → 0.75d? |  | 155d → 149.25d |  | constraint start no earlier than 2005-04-27 → start no earlier than 2005-05-05; resources Vinay; Kunal; Eric → Vinay; Kunal; Eric; Charles |
| 18 | Fuctional Specifications | 2005-04-22 → 2005-05-09 (+17d) | 2005-05-02 → 2005-05-17 (+15d) |  |  | 22d → 140d | 11 → 15 |  |
| 19 | Identify Risk List | 2005-05-03 → 2005-05-17 (+14d) | 2005-05-04 → 2005-05-18 (+14d) | 2d → 0.5d |  | 149d → 140d |  | resources Kalpesh; Vinay → Charles; Vinay |
| 20 | Update Detail task plan | 2005-05-05 → 2005-05-18 (+13d) | 2005-05-05 → 2005-05-18 (+13d) | 1d → 0.5d |  | 149d → 140d |  |  |
| 21 | **3.0.1 Release** | 2005-05-03 → 2005-04-25 A (-8d) | 2005-05-16 → 2005-06-24 (+39d) | 10d → 45d | 0% → 3% | 22d → 0d | 18 → none | was named 3.1 Release |
| 22 | Scope Document | 2005-05-03 → 2005-04-25 A (-8d) | 2005-05-03 → 2005-04-27 A (-6d) | 1d → 3d | 0% → 100% | 22d → none |  | constraint none → start no earlier than 2005-04-22 |
| 24 | **API Changes & Bug Fixes** | 2005-05-04 → 2005-05-02 (-2d) | 2005-05-05 → 2005-05-12 (+7d) | 2d → 9d |  | 22d → 1d | 22 → none | resources Vinay → none |
| 28 | **UPT Changes & Bug Fixes** | 2005-05-04 → 2005-04-28 (-6d) | 2005-05-05 → 2005-05-11 (+6d) | 2d → 10d |  | 147d → 2d | 22 → none | resources Kunal → none |
| 32 | Integration Test - API and UPT Changes | 2005-05-06 → 2005-05-13 (+7d) | 2005-05-09 → 2005-05-17 (+8d) | 2d → 3d |  | 147d → 1d |  | was named Test API and UPT Changes; resources Vinay; Eric → Kunal; Eric |
| 34 | Test on QA | 2005-05-06 → 2005-05-18 (+12d) | 2005-05-09 → 2005-05-18 (+9d) | 2d → 1d |  | 22d → 1d | 24 → 32 | was named Incorporate in RI; resources Kunal → Eric; Kunal |
| 35 | Release for FCCC only UPT.war | 2005-05-10 → 2005-05-19 (+9d) | 2005-05-11 → 2005-05-19 (+8d) | 2d → 1d |  | 6.5d → 1d |  | was named Test RI; resources Eric → Kunal |
| 52 | **Update Documentations** | 2005-05-12 → 2005-06-02 (+21d) | 2005-05-13 → 2005-06-15 (+33d) | 2d → 10d |  | 22d → 7d | 35 → none |  |
| 62 | Releasing and Baselining | 2005-05-16 → 2005-06-24 (+39d) | 2005-05-16 → 2005-06-24 (+39d) |  |  | 22d → 0d | 52 → 61 | resources none → Kunal |
| 65 | **Elaboration** | 2005-05-17 → 2005-06-27 (+41d) | 2005-06-21 → 2005-07-22 (+31d) | 26d → 20d |  | 16d → 0d | none → 21 |  |
| 66 | **Iteration I** | 2005-05-17 → 2005-06-27 (+41d) | 2005-06-13 → 2005-07-22 (+39d) |  |  | 22d → 0d |  |  |
| 67 | Detailed Iteration Release Plan | 2005-05-17 → 2005-06-27 (+41d) | 2005-05-17 → 2005-06-27 (+41d) |  |  | 40d → 18d | 62 → none |  |
| 68 | Research Prototype Development | 2005-05-17 → 2005-06-27 (+41d) | 2005-06-13 → 2005-07-22 (+39d) |  |  | 22d → 0d | 62 → none |  |
| 69 | Level 1 - 2 Use Cases | 2005-05-17 → 2005-06-27 (+41d) | 2005-05-23 → 2005-07-01 (+39d) |  |  | 37d → 15d | 62 → none |  |
| 70 | Peer Review of Use Cases | 2005-05-24 → 2005-06-27 (+34d) | 2005-05-24 → 2005-06-27 (+34d) |  |  | 36d → 19d |  | resources none → Eric |
| 71 | Risk List Priority | 2005-05-18 → 2005-06-28 (+41d) | 2005-05-18 → 2005-06-28 (+41d) |  |  | 40d → 18d |  |  |
| 72 | **Finalize Requirements** | 2005-05-26 → 2005-06-27 (+32d) | 2005-05-27 → 2005-06-28 (+32d) |  |  | 16d → 0.44d |  |  |
| 73 | User Working Group Review | 2005-05-26 → 2005-06-27 (+32d) | 2005-05-26 → 2005-06-27 (+32d) |  |  | 16d → 0.44d |  | resources none → XYZ; Vinay; Kunal; Eric; Charles |
| 74 | Stakeholder Sign Off | 2005-05-27 → 2005-06-28 (+32d) | 2005-05-27 → 2005-06-28 (+32d) |  |  | 16d → 0.44d |  |  |
| 75 | **Iteration II** | 2005-05-30 → 2005-06-27 (+28d) | 2005-06-20 → 2005-07-21 (+31d) | 16d → 18.56d |  | 16d → 0.44d |  |  |
| 76 | Develop Architecture Prototype / Framework | 2005-05-30 → 2005-06-29 (+30d) | 2005-06-08 → 2005-07-06 (+28d) | 8d → 6d |  | 16d → 0.44d |  | was named Develop Architecture Prototype |
| 77 | Software Architecture Document | 2005-06-08 → 2005-07-07 (+29d) | 2005-06-17 → 2005-07-20 (+33d) | 7d → 8d |  | 16d → 0.44d |  | resources Vinay; Kunal; Eric → Vinay; Kunal; Eric; XYZ |
| 78 | Architecture Peer Review | 2005-06-07 → 2005-06-27 (+20d) | 2005-06-07 → 2005-06-27 (+20d) |  |  | 25d → 18d |  | resources Kunal; Vinay; Eric → Kunal; Vinay; Eric; XYZ |
| 79 | Prioritize Risk List | 2005-06-20 → 2005-07-20 (+30d) | 2005-06-20 → 2005-07-21 (+31d) |  |  | 16d → 0.44d |  |  |
| 80 | Phase Review | 2005-06-21 → 2005-07-21 (+30d) | 2005-06-21 → 2005-07-22 (+31d) |  |  | 0.5d → 0.44d |  | resources Eric; Kalpesh → Eric; Charles |
| 81 | **Construction** | 2005-06-22 → 2005-07-25 (+33d) | 2005-10-28 → 2005-10-20 (-8d) | 93d → 64d |  |  | none → 65 |  |
| 82 | **Iteration - SSO** | 2005-06-22 → 2005-07-25 (+33d) | 2005-08-05 → 2005-10-05 (+61d) | 32d → 53d |  | 15.5d → 3d |  |  |
| 83 | Detailed Iteration Plan | 2005-06-22 → 2005-07-25 (+33d) | 2005-06-22 → 2005-07-25 (+33d) |  |  | 16d → 3d | 65 → none |  |
| 84 | **Design** | 2005-06-23 → 2005-07-26 (+33d) | 2005-06-29 → 2005-08-05 (+37d) | 5d → 9d |  | 16d → 3d |  |  |
| 85 | Level 3 - 4 Use Cases | 2005-06-23 → 2005-07-26 (+33d) | 2005-06-23 → 2005-07-28 (+35d) | 1d → 3d |  | 16d → 3d |  |  |
| 86 | Use Case Model | 2005-06-24 → 2005-07-29 (+35d) | 2005-06-24 → 2005-07-29 (+35d) |  |  | 16d → 3d |  |  |
| 87 | UML Sequence Diagram | 2005-06-27 → 2005-08-01 (+35d) | 2005-06-27 → 2005-08-01 (+35d) |  |  | 41.5d → 3d |  |  |
| 88 | UML Class Diagram | 2005-06-28 → 2005-08-02 (+35d) | 2005-06-29 → 2005-08-04 (+36d) | 2d → 3d |  | 41.5d → 3d |  |  |
| 89 | UML Activity Diagram | 2005-06-27 → 2005-08-01 (+35d) | 2005-06-27 → 2005-08-01 (+35d) |  |  | 16d → 7d |  |  |
| 90 | Design Review | 2005-06-28 → 2005-08-05 (+38d) | 2005-06-28 → 2005-08-05 (+38d) |  |  | 42.5d → 3d | 89 → 88 |  |
| 91 | Test Case Development | 2005-06-27 → 2005-08-01 (+35d) | 2005-06-29 → 2005-08-03 (+35d) |  |  | 26d → 5d |  |  |
| 92 | **Implementation** | 2005-06-28 → 2005-07-25 (+27d) | 2005-08-03 → 2005-09-30 (+58d) | 27d → 50d |  | 16d → 14d |  |  |
| 93 | Environment Setup | 2005-06-28 → 2005-08-08 (+41d) | 2005-06-28 → 2005-08-09 (+42d) | 1d → 2d |  | 16d → 11d | 89 → 90 |  |
| 94 | Code Development | 2005-06-29 → 2005-08-10 (+42d) | 2005-07-26 → 2005-09-20 (+56d) | 20d → 30d |  | 16d → 11d |  | resources Vinay → Kunal; Vinay |
| 95 | Junit Test Development | 2005-07-15 → 2005-07-25 (+10d) | 2005-07-19 → 2005-07-28 (+9d) | 3d → 4d |  | 27.5d → 60d |  | resources none → Kunal |
| 96 | Code Reviews | 2005-07-27 → 2005-09-21 (+56d) | 2005-07-28 → 2005-09-28 (+62d) | 1.5d → 6d |  | 0.5d → 11d |  | resources Kalpesh; Charles → Charles |
| 97 | Bug Fixes | 2005-08-02 → 2005-09-29 (+58d) | 2005-08-03 → 2005-09-30 (+58d) |  |  | 16.5d → 14d |  |  |
| 98 | **Unit Testing** | 2005-07-22 → 2005-07-25 (+3d) | 2005-07-26 → 2005-07-27 (+1d) |  |  | 22.5d → 61d |  |  |
| 99 | Perform Testing | 2005-07-22 → 2005-07-25 (+3d) | 2005-07-26 → 2005-07-27 (+1d) |  |  | 22.5d → 61d |  |  |
| 100 | **Integration Testing** | 2005-07-28 → 2005-09-29 (+63d) | 2005-08-04 → 2005-10-05 (+62d) |  |  | 16d → 11d |  |  |
| 101 | QA Testing | 2005-07-28 → 2005-09-29 (+63d) | 2005-08-03 → 2005-10-04 (+62d) |  |  | 0.5d → 11d |  |  |
| 102 | Evaluate Results | 2005-08-03 → 2005-10-05 (+63d) | 2005-08-04 → 2005-10-05 (+62d) |  |  | 16d → 11d |  |  |
| 105 | **Iteration - Auth Policy Caching** | 2005-06-22 → 2005-08-29 (+68d) | 2005-07-20 → 2005-10-20 (+92d) | 20.5d → 38d |  | 0.5d → 0d | none → 127 |  |
| 106 | Detailed Iteration Plan | 2005-06-22 → 2005-08-30 (+69d) | 2005-06-22 → 2005-08-30 (+69d) |  |  | 0.5d → 0d |  |  |
| 107 | **Design** | 2005-06-23 → 2005-08-31 (+69d) | 2005-06-28 → 2005-09-15 (+79d) | 4d → 12d |  | 0.5d → 0d |  |  |
| 108 | Level 3 - 4 Use Cases | 2005-06-23 → 2005-08-31 (+69d) | 2005-06-23 → 2005-09-07 (+76d) | 1d → 6d |  | 0.5d → 0d |  | resources Kunal; Vinay → Vinay |
| 109 | Use Case Model | 2005-06-24 → 2005-09-08 (+76d) | 2005-06-24 → 2005-09-08 (+76d) |  |  | 0.5d → 0d |  | resources Vinay; Kunal → Vinay; XYZ |
| 110 | UML Class Diagram | 2005-06-28 → 2005-09-09 (+73d) | 2005-06-28 → 2005-09-13 (+77d) | 1d → 3d |  | 16d → 0d | 111 → 109 |  |
| 111 | UML Sequence Diagram | 2005-06-27 → 2005-09-14 (+79d) | 2005-06-27 → 2005-09-14 (+79d) |  |  | 16d → 0d | 109 → 110 | resources Kunal → Vinay |
| 112 | UML Activity Diagram | 2005-06-27 → 2005-09-09 (+74d) | 2005-06-27 → 2005-09-09 (+74d) |  |  | 0.5d → 29d |  |  |
| 113 | Design Review | 2005-06-28 → 2005-09-15 (+79d) | 2005-06-28 → 2005-09-15 (+79d) |  |  | 16d → 0d | 112 → 111 |  |
| 114 | Test Case Development | 2005-06-27 → 2005-09-09 (+74d) | 2005-06-27 → 2005-09-09 (+74d) |  |  | 42d → 29d |  |  |
| 115 | **Implementation** | 2005-06-28 → 2005-08-30 (+63d) | 2005-07-19 → 2005-10-19 (+92d) | 15.5d → 37d |  | 0.5d → 1d |  |  |

| ID | Task | Start | Finish | Duration | Total float | Predecessors | Other |
| --- | --- | --- | --- | --- | --- | --- | --- |
| 116 | Environment Setup | 2005-06-28 → 2005-09-16 (+80d) | 2005-06-29 → 2005-09-19 (+82d) |  | 0.5d → 0d | 112 → 113 | resources Vinay → XYZ |
| 117 | Code Development | 2005-06-30 → 2005-09-20 (+82d) | 2005-07-13 → 2005-10-10 (+89d) | 10d → 15d | 0.5d → 0d |  | resources Vinay → XYZ |
| 118 | Junit Test Development | 2005-07-15 → 2005-08-30 (+46d) | 2005-07-15 → 2005-09-01 (+48d) | 1d → 3d | 3d → 35d |  | resources none → XYZ |
| 119 | Code Reviews | 2005-07-14 → 2005-10-11 (+89d) | 2005-07-15 → 2005-10-14 (+91d) | 1.5d → 4d | 25.5d → 0d |  | resources Kalpesh; Charles → Charles |
| 120 | Bug Fixes | 2005-07-15 → 2005-10-17 (+94d) | 2005-07-19 → 2005-10-19 (+92d) | 2d → 3d | 1.5d → 1d |  |  |
| 121 | **Unit Testing** | 2005-07-08 → 2005-08-30 (+53d) | 2005-07-12 → 2005-09-01 (+51d) |  | 6d → 35d |  |  |
| 122 | Perform Testing | 2005-07-08 → 2005-08-30 (+53d) | 2005-07-12 → 2005-09-01 (+51d) |  | 6d → 35d |  |  |
| 123 | **Integration Testing** | 2005-07-15 → 2005-10-17 (+94d) | 2005-07-20 → 2005-10-20 (+92d) | 3d → 4d | 0.5d → 0d |  |  |
| 124 | QA Testing | 2005-07-15 → 2005-10-17 (+94d) | 2005-07-19 → 2005-10-19 (+92d) | 2d → 3d | 25.5d → 0d |  |  |
| 125 | Evaluate Results | 2005-07-19 → 2005-10-20 (+93d) | 2005-07-20 → 2005-10-20 (+92d) |  | 0.5d → 0d |  |  |
| 126 | Iteration Complete | 2005-07-20 → 2005-08-29 (+40d) | 2005-07-20 → 2005-08-29 (+40d) |  | 1d → 38d |  |  |
| 127 | **Iteration - Authentication Web Service** | 2005-08-05 → 2005-07-25 (-11d) | 2005-08-24 → 2005-08-29 (+5d) | 14d → 26d | 15.5d → 0d | 82 → none |  |
| 128 | Detailed Iteration Plan | 2005-08-05 → 2005-07-25 (-11d) | 2005-08-05 → 2005-07-26 (-10d) | 1d → 2d | 15.5d → 0d |  | resources Vinay; Kunal → Kunal |
| 129 | **Design** | 2005-08-08 → 2005-07-27 (-12d) | 2005-08-12 → 2005-08-04 (-8d) | 5d → 7d | 15.5d → 0d |  |  |
| 130 | Level 3 - 4 Use Cases | 2005-08-08 → 2005-07-27 (-12d) | 2005-08-08 → 2005-07-28 (-11d) | 1d → 2d | 15.5d → 0d |  |  |
| 131 | Use Case Model | 2005-08-09 → 2005-07-29 (-11d) | 2005-08-10 → 2005-07-29 (-12d) | 2d → 1d | 15.5d → 0d |  |  |
| 132 | UML Sequence Diagram | 2005-08-11 → 2005-08-01 (-10d) | 2005-08-11 → 2005-08-01 (-10d) |  | 23.5d → 0d |  |  |
| 133 | UML Class Diagram | 2005-08-12 → 2005-08-02 (-10d) | 2005-08-12 → 2005-08-03 (-9d) | 1d → 2d | 23.5d → 0d |  |  |
| 134 | UML Activity Diagram | 2005-08-11 → 2005-08-01 (-10d) | 2005-08-11 → 2005-08-01 (-10d) |  | 15.5d → 20d |  |  |
| 135 | Design Review | 2005-08-12 → 2005-08-04 (-8d) | 2005-08-12 → 2005-08-04 (-8d) |  | 23.5d → 0d | 134 → 133 |  |
| 136 | Test Case Development | 2005-08-11 → 2005-08-01 (-10d) | 2005-08-11 → 2005-08-01 (-10d) |  | 9d → 20d |  |  |
| 137 | **Implementation** | 2005-08-12 → 2005-08-05 (-7d) | 2005-08-22 → 2005-08-25 (+3d) | 7d → 15d | 15.5d → 0d |  |  |
| 138 | Environment Setup | 2005-08-12 → 2005-08-05 (-7d) | 2005-08-12 → 2005-08-05 (-7d) |  | 15.5d → 0d | 134 → 135 | resources Kunal → XYZ |
| 139 | Code Development | 2005-08-15 → 2005-08-08 (-7d) | 2005-08-18 → 2005-08-19 (+1d) | 4d → 10d | 15.5d → 0d |  | resources Kunal → XYZ |
| 140 | Junit Test Development |  | 2005-08-17 → 2005-08-18 (+1d) | 1d → 2d | 20.5d → 7d |  | resources none → XYZ |
| 141 | Code Reviews | 2005-08-19 → 2005-08-22 (+3d) | 2005-08-19 → 2005-08-23 (+4d) | 1d → 2d | 15.5d → 0d |  | resources Kalpesh; Charles → Charles |
| 142 | Bug Fixes | 2005-08-22 → 2005-08-24 (+2d) | 2005-08-22 → 2005-08-25 (+3d) | 1d → 2d | 17.5d → 2d |  | resources none → XYZ |
| 145 | **Integration Testing** | 2005-08-22 → 2005-08-24 (+2d) | 2005-08-24 → 2005-08-29 (+5d) | 3d → 4d | 15.5d → 0d |  |  |
| 146 | QA Testing | 2005-08-22 → 2005-08-24 (+2d) | 2005-08-23 → 2005-08-26 (+3d) | 2d → 3d | 15.5d → 0d |  |  |
| 147 | Evaluate Results | 2005-08-24 → 2005-08-29 (+5d) | 2005-08-24 → 2005-08-29 (+5d) |  | 15.5d → 0d |  | resources Eric; Vinay; Kunal → Eric; XYZ; Kunal |
| 149 | **Iteration - Policy Adapters** | 2005-07-20 → 2005-07-25 (+5d) | 2005-08-18 → 2005-09-07 (+20d) | 20.5d → 33d | 0d → 31d | 105 → none |  |
| 150 | Detailed Iteration Plan | 2005-07-20 → 2005-07-25 (+5d) | 2005-07-21 → 2005-07-25 (+4d) |  | 0.5d → 31d |  |  |
| 151 | **Design** | 2005-07-21 → 2005-07-26 (+5d) | 2005-07-27 → 2005-08-04 (+8d) | 4d → 8d | 0.5d → 31d |  |  |
| 152 | Level 3 - 4 Use Cases | 2005-07-21 → 2005-07-26 (+5d) | 2005-07-22 → 2005-07-28 (+6d) | 1d → 3d | 0.5d → 31d |  |  |
| 153 | Use Case Model | 2005-07-22 → 2005-07-29 (+7d) | 2005-07-25 → 2005-07-29 (+4d) |  | 0.5d → 31d |  |  |
| 154 | UML Sequence Diagram | 2005-07-25 → 2005-08-01 (+7d) | 2005-07-26 → 2005-08-01 (+6d) |  | 15.5d → 55d |  |  |
| 155 | UML Class Diagram | 2005-07-26 → 2005-08-02 (+7d) | 2005-07-27 → 2005-08-04 (+8d) | 1d → 3d | 15.5d → 55d |  |  |
| 156 | UML Activity Diagram | 2005-07-25 → 2005-08-01 (+7d) | 2005-07-26 → 2005-08-01 (+6d) |  | 0.5d → 31d |  |  |
| 157 | Design Review | 2005-07-26 → 2005-08-02 (+7d) | 2005-07-27 → 2005-08-02 (+6d) |  | 15.5d → 57d |  |  |
| 158 | Test Case Development | 2005-07-25 → 2005-08-01 (+7d) | 2005-07-27 → 2005-08-02 (+6d) |  | 52d → 57d |  |  |
| 159 | **Implementation** | 2005-07-26 → 2005-08-01 (+6d) | 2005-08-15 → 2005-09-05 (+21d) | 14d → 26d | 0.5d → 32d |  |  |
| 160 | Environment Setup | 2005-07-26 → 2005-08-02 (+7d) | 2005-07-27 → 2005-08-02 (+6d) |  | 0.5d → 31d |  |  |
| 161 | Code Development | 2005-07-27 → 2005-08-03 (+7d) | 2005-08-10 → 2005-08-30 (+20d) | 10d → 20d | 0.5d → 31d |  |  |
| 162 | Junit Test Development |  | 2005-08-02 → 2005-08-04 (+2d) | 2d → 4d | 11d → 55d |  |  |
| 163 | Code Reviews | 2005-08-10 → 2005-08-31 (+21d) | 2005-08-11 → 2005-08-31 (+20d) |  | 37d → 31d |  |  |
| 164 | Bug Fixes | 2005-08-11 → 2005-09-01 (+21d) | 2005-08-15 → 2005-09-05 (+21d) | 2d → 3d | 2.5d → 33d |  |  |
| 167 | **Integration Testing** | 2005-08-11 → 2005-09-01 (+21d) | 2005-08-17 → 2005-09-07 (+21d) | 4d → 5d | 0.5d → 31d |  |  |
| 168 | QA Testing | 2005-08-11 → 2005-09-01 (+21d) | 2005-08-16 → 2005-09-06 (+21d) | 3d → 4d | 37d → 31d |  |  |
| 169 | Evaluate Results | 2005-08-16 → 2005-09-07 (+22d) | 2005-08-17 → 2005-09-07 (+21d) |  | 0.5d → 31d |  |  |
| 170 | Iteration Complete | 2005-08-18 → 2005-09-07 (+20d) | 2005-08-18 → 2005-09-07 (+20d) |  | 0d → 31d | none → 169 |  |
| 171 | **Iteration - UPT Enhancements** | 2005-08-25 → 2005-07-25 (-31d) |  | 31.5d → 54d | 15.5d → 10d | 127 → none |  |
| 172 | Detailed Iteration Plan | 2005-08-25 → 2005-07-25 (-31d) | 2005-08-25 → 2005-07-25 (-31d) |  | 15.5d → 15d |  |  |
| 173 | **Design** | 2005-08-26 → 2005-07-26 (-31d) | 2005-09-01 → 2005-08-04 (-28d) | 5d → 8d | 15.5d → 15d |  |  |
| 174 | Level 3 - 4 Use Cases | 2005-08-26 → 2005-07-26 (-31d) | 2005-08-26 → 2005-07-28 (-29d) | 1d → 3d | 15.5d → 46d |  |  |
| 175 | Use Case Model | 2005-08-29 → 2005-07-29 (-31d) | 2005-08-29 → 2005-07-29 (-31d) |  | 15.5d → 46d |  |  |
| 176 | UML Sequence Diagram | 2005-08-30 → 2005-08-01 (-29d) | 2005-08-30 → 2005-08-01 (-29d) |  | 41d → 87d |  |  |
| 177 | UML Class Diagram | 2005-08-31 → 2005-08-02 (-29d) | 2005-09-01 → 2005-08-03 (-29d) |  | 41d → 87d |  |  |
| 178 | UML Activity Diagram | 2005-08-30 → 2005-08-01 (-29d) | 2005-08-30 → 2005-08-03 (-27d) | 1d → 3d | 15.5d → 46d |  |  |
| 179 | Design Review | 2005-08-31 → 2005-08-04 (-27d) | 2005-08-31 → 2005-08-04 (-27d) |  | 42d → 86d |  |  |
| 180 | Test Case Development | 2005-08-30 → 2005-08-01 (-29d) | 2005-09-01 → 2005-08-03 (-29d) |  | 25.5d → 87d |  |  |
| 181 | **Implementation** | 2005-08-31 → 2005-08-04 (-27d) |  | 27d → 46d | 15.5d → 10d |  |  |
| 182 | Environment Setup | 2005-08-31 → 2005-08-04 (-27d) | 2005-08-31 → 2005-08-04 (-27d) |  | 15.5d → 46d |  |  |
| 183 | Code Development | 2005-09-01 → 2005-08-05 (-27d) | 2005-09-28 → 2005-09-15 (-13d) | 20d → 30d | 15.5d → 46d |  |  |
| 185 | Code Reviews | 2005-09-29 → 2005-09-16 (-13d) | 2005-09-30 → 2005-09-19 (-11d) | 1.5d → 2d | 15.5d → 46d |  |  |
| 187 | **Unit Testing** | 2005-08-25 → 2005-07-25 (-31d) | 2005-08-29 → 2005-07-27 (-33d) |  | 44d → 61d |  |  |
| 188 | Perform Testing | 2005-08-25 → 2005-07-25 (-31d) | 2005-08-29 → 2005-07-27 (-33d) |  | 44d → 92d |  |  |
| 189 | **Integration Testing** | 2005-09-30 → 2005-09-20 (-10d) | 2005-10-07 → 2005-09-29 (-8d) | 5d → 8d | 15.5d → 15d |  |  |
| 190 | QA Testing | 2005-09-30 → 2005-09-20 (-10d) | 2005-10-06 → 2005-09-28 (-8d) | 4d → 7d | 15.5d → 46d |  |  |
| 191 | Evaluate Results | 2005-10-06 → 2005-09-29 (-7d) | 2005-10-07 → 2005-09-29 (-8d) |  | 15.5d → 46d |  |  |
| 192 | Iteration Complete |  |  |  | 16d → 10d | none → 191 |  |

| ID | Task | Start | Finish | Duration | Total float | Predecessors | Other |
| --- | --- | --- | --- | --- | --- | --- | --- |
| 193 | **Iteration - AOP Integration** | 2005-08-18 → 2005-08-08 (-10d) | 2005-09-30 → 2005-10-17 (+17d) | 31.5d → 51d | 0d → 3d | 149 → 84 |  |
| 194 | Detailed Iteration Plan | 2005-08-18 → 2005-08-08 (-10d) | 2005-08-18 → 2005-08-08 (-10d) |  | 0d → 3d |  |  |
| 195 | **Design** | 2005-08-19 → 2005-08-09 (-10d) | 2005-08-25 → 2005-08-22 (-3d) | 5d → 10d | 0d → 3d |  |  |
| 196 | Level 3 - 4 Use Cases | 2005-08-19 → 2005-08-09 (-10d) | 2005-08-19 → 2005-08-11 (-8d) | 1d → 3d | 0d → 3d |  |  |
| 197 | Use Case Model | 2005-08-22 → 2005-08-12 (-10d) | 2005-08-22 → 2005-08-12 (-10d) |  | 0d → 3d |  |  |
| 198 | UML Sequence Diagram | 2005-08-23 → 2005-08-15 (-8d) | 2005-08-23 → 2005-08-15 (-8d) |  | 25.5d → 3d |  |  |
| 199 | UML Class Diagram | 2005-08-24 → 2005-08-16 (-8d) | 2005-08-25 → 2005-08-19 (-6d) | 2d → 4d | 25.5d → 3d |  |  |
| 200 | UML Activity Diagram | 2005-08-23 → 2005-08-15 (-8d) | 2005-08-23 → 2005-08-15 (-8d) |  | 0d → 48d |  |  |
| 201 | Design Review | 2005-08-24 → 2005-08-22 (-2d) | 2005-08-24 → 2005-08-22 (-2d) |  | 26.5d → 3d | 200 → 199 |  |
| 202 | Test Case Development | 2005-08-23 → 2005-08-15 (-8d) | 2005-08-25 → 2005-08-17 (-8d) |  | 25.5d → 46d |  |  |
| 203 | **Implementation** | 2005-08-18 → 2005-08-08 (-10d) | 2005-09-27 → 2005-10-12 (+15d) | 28.5d → 48d | 3d → 6d |  |  |
| 204 | Environment Setup | 2005-08-24 → 2005-08-22 (-2d) | 2005-08-24 → 2005-08-23 (-1d) | 1d → 2d | 0d → 3d | 200 → 199 | resources Vinay; Kunal → XYZ; Kunal |
| 205 | Code Development | 2005-08-25 → 2005-08-24 (-1d) | 2005-09-21 → 2005-10-04 (+13d) | 20d → 30d | 0d → 3d |  |  |
| 206 | Junit Test Development | 2005-08-18 → 2005-08-08 (-10d) | 2005-08-22 → 2005-08-11 (-11d) | 3d → 4d | 28.5d → 50d |  |  |
| 207 | Code Reviews | 2005-09-22 → 2005-10-05 (+13d) | 2005-09-23 → 2005-10-06 (+13d) | 1.5d → 2d | 0d → 3d |  |  |
| 208 | Bug Fixes | 2005-09-23 → 2005-10-07 (+14d) | 2005-09-27 → 2005-10-12 (+15d) | 2d → 4d | 3d → 6d |  |  |
| 209 | **Unit Testing** | 2005-08-18 → 2005-08-08 (-10d) | 2005-08-22 → 2005-08-10 (-12d) |  | 28.5d → 51d |  |  |
| 210 | Perform Testing | 2005-08-18 → 2005-08-08 (-10d) | 2005-08-22 → 2005-08-10 (-12d) |  | 28.5d → 50d |  |  |
| 211 | **Integration Testing** | 2005-09-23 → 2005-10-07 (+14d) | 2005-09-30 → 2005-10-17 (+17d) | 5d → 7d | 0d → 3d |  |  |
| 212 | QA Testing | 2005-09-23 → 2005-10-07 (+14d) | 2005-09-29 → 2005-10-14 (+15d) | 4d → 6d | 0d → 2d |  |  |
| 213 | Evaluate Results | 2005-09-29 → 2005-10-17 (+18d) | 2005-09-30 → 2005-10-17 (+17d) |  | 0d → 2d |  |  |
| 214 | User Working Group Review (SAD, Design Models) | 2005-08-18 → 2005-08-08 (-10d) | 2005-08-18 → 2005-08-08 (-10d) |  | 30.5d → 53d |  |  |
| 215 | Iteration Complete | 2005-08-18 → 2005-10-17 (+60d) | 2005-08-18 → 2005-10-17 (+60d) |  | 31.5d → 3d | none → 213 |  |
| 216 | **Iteration - Message Level Security** | 2005-09-30 → 2005-08-23 (-38d) | 2005-10-28 → 2005-10-17 (-11d) | 20.5d → 40d | 0d → 3d | 193 → 201 |  |
| 217 | Detailed Iteration Plan | 2005-09-30 → 2005-08-23 (-38d) | 2005-10-03 → 2005-08-23 (-41d) |  | 0d → 3d |  |  |
| 218 | **Design** | 2005-10-03 → 2005-08-24 (-40d) | 2005-10-07 → 2005-09-05 (-32d) | 4d → 9d | 0d → 3d |  |  |
| 219 | Level 3 - 4 Use Cases | 2005-10-03 → 2005-08-24 (-40d) | 2005-10-04 → 2005-08-26 (-39d) | 1d → 3d | 0d → 3d |  |  |
| 220 | Use Case Model | 2005-10-04 → 2005-08-29 (-36d) | 2005-10-05 → 2005-08-29 (-37d) |  | 0d → 3d |  |  |
| 221 | UML Sequence Diagram | 2005-10-05 → 2005-08-30 (-36d) | 2005-10-06 → 2005-08-30 (-37d) |  | 15.5d → 3d |  |  |
| 222 | UML Class Diagram | 2005-10-06 → 2005-08-31 (-36d) | 2005-10-07 → 2005-09-02 (-35d) | 1d → 3d | 15.5d → 3d |  |  |
| 223 | UML Activity Diagram | 2005-10-05 → 2005-08-30 (-36d) | 2005-10-06 → 2005-08-30 (-37d) |  | 0d → 37d |  |  |
| 224 | Design Review | 2005-10-06 → 2005-09-05 (-31d) | 2005-10-07 → 2005-09-05 (-32d) |  | 15.5d → 3d | 223 → 222 |  |
| 225 | Test Case Development | 2005-10-05 → 2005-08-30 (-36d) | 2005-10-06 → 2005-08-30 (-37d) |  | 16.5d → 37d |  |  |
| 226 | **Implementation** | 2005-09-30 → 2005-09-06 (-24d) | 2005-10-27 → 2005-10-14 (-13d) | 19.5d → 29d | 1d → 3d |  |  |
| 227 | Environment Setup | 2005-10-06 → 2005-09-06 (-30d) | 2005-10-10 → 2005-09-07 (-33d) |  | 0d → 3d | 223 → 224 |  |
| 228 | Code Development | 2005-10-10 → 2005-09-08 (-32d) | 2005-10-24 → 2005-10-05 (-19d) | 10d → 20d | 0d → 3d |  |  |
| 229 | Junit Test Development | 2005-09-30 → 2005-09-08 (-22d) | 2005-10-03 → 2005-09-12 (-21d) | 1d → 3d | 19.5d → 28d | none → 227 | resources none → Vinay |
| 230 | Code Reviews | 2005-10-24 → 2005-10-06 (-18d) | 2005-10-25 → 2005-10-11 (-14d) | 1.5d → 4d | 0d → 3d |  | resources Kalpesh; Charles → Charles |
| 231 | Bug Fixes | 2005-10-26 → 2005-10-12 (-14d) | 2005-10-27 → 2005-10-14 (-13d) | 2d → 3d | 1d → 4d |  |  |
| 232 | **Unit Testing** | 2005-09-30 → 2005-09-08 (-22d) | 2005-10-05 → 2005-09-12 (-23d) |  | 17.5d → 28d |  |  |
| 233 | Perform Testing | 2005-09-30 → 2005-09-08 (-22d) | 2005-10-05 → 2005-09-12 (-23d) |  | 17.5d → 28d | none → 227 |  |
| 234 | **Integration Testing** | 2005-10-26 → 2005-10-12 (-14d) | 2005-10-28 → 2005-10-17 (-11d) | 3d → 4d | 0d → 3d |  |  |
| 235 | QA Testing | 2005-10-26 → 2005-10-12 (-14d) | 2005-10-27 → 2005-10-14 (-13d) | 2d → 3d | 0d → 3d |  |  |
| 236 | Evaluate Results | 2005-10-28 → 2005-10-17 (-11d) | 2005-10-28 → 2005-10-17 (-11d) |  | 0d → 3d |  |  |
| 237 | Iteration Complete | 2005-10-28 → 2005-10-17 (-11d) | 2005-10-28 → 2005-10-17 (-11d) |  | 1d → 3d | none → 236 | constraint start no earlier than 2005-10-28 → start no earlier than 2005-09-15 |
| 238 | **Transition** | 2005-10-28 → 2005-10-20 (-8d) | 2005-11-30 → 2005-11-22 (-8d) |  |  |  |  |
| 239 | **Iteration I** | 2005-10-28 → 2005-10-20 (-8d) | 2005-11-23 → 2005-11-15 (-8d) |  |  |  |  |
| 240 | **QA Testing** | 2005-10-31 → 2005-10-21 (-10d) |  | 12d → 18d | 6d → 0d |  |  |
| 241 | Setup of Environment | 2005-10-31 → 2005-10-21 (-10d) | 2005-11-01 → 2005-10-24 (-8d) |  |  |  |  |
| 242 | Regression Testing | 2005-11-02 → 2005-10-25 (-8d) | 2005-11-15 → 2005-11-07 (-8d) |  |  |  |  |
| 244 | **Documentation** | 2005-10-31 → 2005-10-21 (-10d) | 2005-11-23 → 2005-11-15 (-8d) |  |  |  |  |
| 245 | Application Developers Guide Document | 2005-10-31 → 2005-10-21 (-10d) | 2005-11-18 → 2005-11-10 (-8d) |  |  |  |  |
| 246 | Java Docs | 2005-10-31 → 2005-10-21 (-10d) | 2005-11-03 → 2005-10-26 (-8d) |  |  |  |  |
| 247 | UPT User Guide Updation | 2005-10-31 → 2005-10-21 (-10d) | 2005-11-11 → 2005-11-03 (-8d) |  |  |  |  |
| 248 | caCore Technical Guide Modifications | 2005-11-21 → 2005-11-11 (-10d) | 2005-11-22 → 2005-11-14 (-8d) |  |  |  |  |
| 249 | Release Notes | 2005-11-23 → 2005-11-15 (-8d) | 2005-11-23 → 2005-11-15 (-8d) |  |  |  |  |
| 250 | Iteration I Complete | 2005-10-28 → 2005-10-20 (-8d) | 2005-10-28 → 2005-10-20 (-8d) |  |  |  |  |
| 251 | **Iteration II** | 2005-11-23 → 2005-11-15 (-8d) | 2005-11-29 → 2005-11-21 (-8d) |  |  |  |  |
| 252 | **Staging Environment Testing** | 2005-11-24 → 2005-11-16 (-8d) | 2005-11-29 → 2005-11-21 (-8d) |  | 0d → 6d |  |  |
| 253 | Setup of Environment | 2005-11-24 → 2005-11-16 (-8d) | 2005-11-24 → 2005-11-16 (-8d) |  | 0d → 6d |  |  |
| 254 | Regression Testing | 2005-11-25 → 2005-11-17 (-8d) | 2005-11-29 → 2005-11-21 (-8d) |  | 0d → 6d |  |  |
| 255 | Bug Fixes | 2005-11-24 → 2005-11-16 (-8d) | 2005-11-24 → 2005-11-16 (-8d) |  | 3d → 9d |  |  |
| 256 | Iteration II Complete | 2005-11-23 → 2005-11-15 (-8d) | 2005-11-23 → 2005-11-15 (-8d) |  |  |  |  |
| 257 | **Release** | 2005-11-30 → 2005-11-22 (-8d) | 2005-11-30 → 2005-11-22 (-8d) |  | 0d → 6d |  |  |
| 258 | Tag into the CVS & Release | 2005-11-30 → 2005-11-22 (-8d) | 2005-11-30 → 2005-11-22 (-8d) |  | 0d → 6d |  |  |

## Version 3 (saved 2005-05-04)

Note of the change: Still the resource allocation is left

Last finish stays 2005-11-30. Complete tasks 7 → 10.

Added:

| ID | Task | Duration | Start | Finish | Predecessors | Constraint | Resources |
| --- | --- | --- | --- | --- | --- | --- | --- |
| 97 | Promote to QA | 0d | 2005-09-27 | 2005-09-27 | 96 |  |  |
| 116 | Code Development + Unit Testing | 13d | 2005-08-08 | 2005-08-24 | 115 | start no earlier than 2004-11-08 | Kunal; Vinay [10%] |
| 118 | Promote to QA | 0d | 2005-08-24 | 2005-08-24 | 117 |  |  |
| 122 | Evaluate Results & Consolidate Documents/ Design | 1d | 2005-08-30 | 2005-08-30 | 121 | start no earlier than 2004-11-16 | Eric; Vinay; Kunal |
| 137 | Code Development + Unit Testing | 12d | 2005-08-05 | 2005-08-22 | 136 | start no earlier than 2004-11-08 | Kunal; Vinay [10%] |
| 139 | Promote to QA | 0d | 2005-08-22 | 2005-08-22 | 138 |  |  |
| 143 | Evaluate Results & Consolidate Documents/ Design | 1d | 2005-08-26 | 2005-08-26 | 142 | start no earlier than 2004-11-16 | Eric; Vinay; Kunal |
| 158 | Code Development + Unit Testing | 23d | 2005-08-10 | 2005-09-09 | 157 | start no earlier than 2004-11-08 | Kunal; Vinay [10%] |
| 160 | Promote to QA | 0d | 2005-09-09 | 2005-09-09 | 159 |  |  |
| 164 | Evaluate Results & Consolidate Documents/ Design | 1d | 2005-09-16 | 2005-09-16 | 163 | start no earlier than 2004-11-16 | Eric; Vinay; Kunal |
| 179 | Code Development + Unit Testing | 33d | 2005-08-09 | 2005-09-22 | 178 | start no earlier than 2004-11-08 | Kunal; Vinay [10%] |
| 181 | Promote to QA | 0d | 2005-09-22 | 2005-09-22 | 180 |  |  |
| 185 | Evaluate Results & Consolidate Documents/ Design | 1d | 2005-10-03 | 2005-10-03 | 184 | start no earlier than 2004-11-16 | Eric; Vinay; Kunal |
| 200 | Code Development + Unit Testing | 23d | 2005-08-10 | 2005-09-09 | 199 | start no earlier than 2004-11-08 | Kunal; Vinay [10%] |
| 202 | Promote to QA | 0d | 2005-09-09 | 2005-09-09 | 201 |  |  |
| 206 | Evaluate Results & Consolidate Documents/ Design | 1d | 2005-09-20 | 2005-09-20 | 205 | start no earlier than 2004-11-16 | Eric; Vinay; Kunal |
| 221 | Code Development + Unit Testing | 23d | 2005-08-09 | 2005-09-08 | 220 | start no earlier than 2004-11-08 | Kunal; Vinay [10%] |
| 223 | Promote to QA | 0d | 2005-09-08 | 2005-09-08 | 222 |  |  |
| 227 | Evaluate Results & Consolidate Documents/ Design | 1d | 2005-09-15 | 2005-09-15 | 226 | start no earlier than 2004-11-16 | Eric; Vinay; Kunal |

Removed: 98 Unit Testing; 99 Perform Testing; 103 User Working Group Review (SAD, Design Models); 117 Code Development; 121 Unit Testing; 122 Perform Testing; 125 Evaluate Results; 139 Code Development; 143 Unit Testing; 144 Perform Testing; 147 Evaluate Results; 161 Code Development; 165 Unit Testing; 166 Perform Testing; 169 Evaluate Results; 183 Code Development; 187 Unit Testing; 188 Perform Testing; 191 Evaluate Results; 205 Code Development; 209 Unit Testing; 210 Perform Testing; 213 Evaluate Results; 214 User Working Group Review (SAD, Design Models); 228 Code Development; 232 Unit Testing; 233 Perform Testing; 236 Evaluate Results

Changed:

| ID | Task | Start | Finish | Duration | Complete | Total float | Predecessors | Other |
| --- | --- | --- | --- | --- | --- | --- | --- | --- |
| 1 | **Security Module (Release four)** |  |  |  | 4% → 5% |  |  |  |
| 3 | **Inception** |  |  |  | 52% → 60% |  |  |  |
| 12 | SDK Research & Analysis | 2005-04-26 A | 2005-04-27 A |  | 0% → 100% | 1d → none |  |  |
| 13 | SDK Scope/Vision Document | 2005-04-27 A | 2005-04-28 A |  | 0% → 100% | 1d → none |  |  |
| 21 | **3.0.1 Release** |  |  |  | 3% → 8% |  |  |  |
| 23 | **Iteration I** | 2005-04-28 A |  |  | 0% → 17% |  |  |  |
| 24 | **API Changes & Bug Fixes** | 2005-05-02 A |  |  | 0% → 17% |  |  |  |
| 25 | Modify API for Negative Privileges | 2005-05-02 A |  |  | 0% → 35% | 1d → 2.05d |  |  |
| 26 | Modify API for Primitive Data Types | 2005-05-03 A |  |  | 0% → 5% |  |  |  |
| 27 | Cross Database Compatibility | 2005-05-04 A |  |  | 0% → 15% |  |  |  |
| 28 | **UPT Changes & Bug Fixes** | 2005-04-28 A |  |  | 0% → 24% |  |  |  |
| 29 | UI Bug Fixes | 2005-04-28 A | 2005-05-02 A |  | 0% → 100% | 2d → none |  |  |
| 31 | Cross Browser Compatibility | 2005-05-03 A |  |  | 0% → 5% |  |  |  |
| 37 | **Open Source Initiative** |  | 2005-05-12 → 2005-05-30 (+18d) | 11d → 23d |  | 31d → 19d |  |  |
| 38 | Modify nightly build script |  | 2005-05-02 → 2005-05-03 (+1d) | 3d → 4d |  | 31d → 23d |  |  |
| 39 | Clean up Code base |  | 2005-05-12 → 2005-05-23 (+11d) | 3d → 10d |  | 31d → 19d | 40 → 38 |  |
| 40 | Update Junit Test cases | 2005-05-03 → 2005-05-24 (+21d) | 2005-05-09 → 2005-05-30 (+21d) |  |  | 31d → 19d | 38 → 39 |  |
| 81 | **Construction** |  | 2005-10-20 → 2005-10-04 (-16d) | 64d → 52d |  |  |  |  |
| 82 | **Iteration - SSO** |  | 2005-10-05 → 2005-10-04 (-1d) | 53d → 52d |  | 3d → 0d |  |  |
| 89 | UML Class Diagram |  |  |  |  | 3d → 42d | 87 → 88 |  |
| 90 | Design Review |  |  |  |  | 3d → 42d |  | resources none → Charles |
| 91 | Test Case Development |  | 2005-08-03 → 2005-08-05 (+2d) | 3d → 5d |  | 5d → 42d |  |  |
| 92 | **Implementation** | 2005-07-25 → 2005-08-02 (+8d) | 2005-09-30 → 2005-09-27 (-3d) | 50d → 41d |  | 14d → 0d |  |  |
| 93 | Environment Setup | 2005-08-08 → 2005-08-02 (-6d) | 2005-08-09 → 2005-08-05 (-4d) | 2d → 4d |  | 11d → 0d | 90 → 87 | resources Vinay; Kunal → Kunal |
| 94 | Junit Test Development | 2005-07-25 → 2005-08-08 (+14d) | 2005-07-28 → 2005-08-11 (+14d) |  |  | 60d → 0d | none → 93 |  |
| 95 | Code Development + Unit Testing | 2005-08-10 → 2005-08-12 (+2d) | 2005-09-20 → 2005-09-27 (+7d) | 30d → 33d |  | 11d → 0d | 93 → 94 | was named Code Development; resources Kunal; Vinay → Kunal; Vinay [10%] |
| 96 | Code Reviews | 2005-09-21 → 2005-09-26 (+5d) | 2005-09-28 → 2005-09-27 (-1d) | 6d → 2d |  | 11d → 0d | 95 → 95FS-2d |  |
| 98 | **Integration Testing** | 2005-09-29 → 2005-09-28 (-1d) | 2005-10-05 → 2005-10-04 (-1d) |  |  | 11d → 0d |  |  |
| 99 | QA Testing | 2005-09-29 → 2005-09-28 (-1d) | 2005-10-04 → 2005-10-03 (-1d) |  |  | 11d → 1d | 96 → 92 |  |
| 100 | Bug Fixes | 2005-09-29 → 2005-09-28 (-1d) | 2005-09-30 → 2005-10-03 (+3d) | 2d → 4d |  | 14d → 0d | 96 → 92 | constraint finish no earlier than 2005-08-03 → none; resources none → Kunal |
| 101 | Evaluate Results & Consolidate Documents/ Design | 2005-10-05 → 2005-10-04 (-1d) | 2005-10-05 → 2005-10-04 (-1d) |  |  | 11d → 0d | 99 → 100 | was named Evaluate Results |
| 102 | Iteration Complete | 2005-08-05 → 2005-10-04 (+60d) | 2005-08-05 → 2005-10-04 (+60d) |  |  | 55d → 0d | none → 98 |  |
| 103 | **Iteration - Auth Policy Caching** | 2005-08-29 → 2005-07-25 (-35d) | 2005-10-20 → 2005-08-30 (-51d) | 38d → 27d |  | 0d → 25d | 124 → none |  |
| 104 | Detailed Iteration Plan | 2005-08-30 → 2005-07-25 (-36d) | 2005-08-30 → 2005-07-25 (-36d) |  |  | 0d → 25d |  | constraint start no earlier than 2005-06-22 → start no earlier than 2004-10-26 |
| 105 | **Design** | 2005-08-31 → 2005-07-26 (-36d) | 2005-09-15 → 2005-08-05 (-41d) | 12d → 9d |  | 0d → 25d |  |  |
| 106 | Level 3 - 4 Use Cases | 2005-08-31 → 2005-07-26 (-36d) | 2005-09-07 → 2005-07-28 (-41d) | 6d → 3d |  | 0d → 25d |  | resources Vinay → Kunal; Vinay |
| 107 | Use Case Model | 2005-09-08 → 2005-07-29 (-41d) | 2005-09-08 → 2005-07-29 (-41d) |  |  | 0d → 25d |  | resources Vinay; XYZ → Vinay; Kunal |
| 108 | UML Sequence Diagram | 2005-09-14 → 2005-08-01 (-44d) | 2005-09-14 → 2005-08-01 (-44d) |  |  | 0d → 25d | 110 → 107 | resources Vinay → Kunal |
| 109 | UML Activity Diagram | 2005-09-09 → 2005-08-01 (-39d) | 2005-09-09 → 2005-08-01 (-39d) |  |  | 29d → 42d |  |  |
| 110 | UML Class Diagram | 2005-09-09 → 2005-08-02 (-38d) | 2005-09-13 → 2005-08-04 (-40d) |  |  | 0d → 42d | 107 → 109 |  |
| 111 | Design Review | 2005-09-15 → 2005-08-05 (-41d) | 2005-09-15 → 2005-08-05 (-41d) |  |  | 0d → 42d | 108 → 110 | resources none → Charles |
| 112 | Test Case Development | 2005-09-09 → 2005-08-01 (-39d) | 2005-09-09 → 2005-08-05 (-35d) | 1d → 5d |  | 29d → 42d |  |  |
| 113 | **Implementation** | 2005-08-30 → 2005-08-02 (-28d) | 2005-10-19 → 2005-08-24 (-56d) | 37d → 17d |  | 1d → 25d |  |  |
| 114 | Environment Setup | 2005-09-16 → 2005-08-02 (-45d) | 2005-09-19 → 2005-08-03 (-47d) |  |  | 0d → 25d | 111 → 108 | resources XYZ → Kunal |
| 115 | Junit Test Development | 2005-08-30 → 2005-08-04 (-26d) | 2005-09-01 → 2005-08-05 (-27d) | 3d → 2d |  | 35d → 25d | none → 114 | resources XYZ → Kunal |
| 117 | Code Reviews | 2005-10-11 → 2005-08-23 (-49d) | 2005-10-14 → 2005-08-24 (-51d) | 4d → 2d |  | 0d → 25d | Code Development → 116FS-2d |  |
| 119 | **Integration Testing** | 2005-10-17 → 2005-08-25 (-53d) | 2005-10-20 → 2005-08-30 (-51d) |  |  | 0d → 25d |  |  |
| 120 | QA Testing | 2005-10-17 → 2005-08-25 (-53d) | 2005-10-19 → 2005-08-29 (-51d) |  |  | 0d → 26d | 117 → 113 |  |
| 121 | Bug Fixes | 2005-10-17 → 2005-08-25 (-53d) | 2005-10-19 → 2005-08-29 (-51d) |  |  | 1d → 25d | 117 → 113 | constraint finish no earlier than 2005-07-18 → none; resources none → Kunal |
| 123 | Iteration Complete | 2005-08-29 → 2005-08-30 (+1d) | 2005-08-29 → 2005-08-30 (+1d) |  |  | 38d → 25d | none → 119 | constraint start no earlier than 2005-07-20 → start no earlier than 2005-08-05 |
| 124 | **Iteration - Authentication Web Service** |  | 2005-08-29 → 2005-08-26 (-3d) | 26d → 25d |  | 0d → 27d |  |  |
| 125 | Detailed Iteration Plan |  | 2005-07-26 → 2005-07-25 (-1d) | 2d → 1d |  | 0d → 27d |  | resources Kunal → Vinay; Kunal |
| 126 | **Design** | 2005-07-27 → 2005-07-26 (-1d) |  | 7d → 8d |  | 0d → 27d |  |  |
| 127 | Level 3 - 4 Use Cases | 2005-07-27 → 2005-07-26 (-1d) | 2005-07-28 → 2005-07-27 (-1d) |  |  | 0d → 27d |  |  |
| 128 | Use Case Model | 2005-07-29 → 2005-07-28 (-1d) | 2005-07-29 → 2005-07-28 (-1d) |  |  | 0d → 27d |  | resources Kunal → Vinay; Kunal |
| 129 | UML Sequence Diagram | 2005-08-01 → 2005-07-29 (-3d) | 2005-08-01 → 2005-07-29 (-3d) |  |  | 0d → 27d |  |  |
| 130 | UML Activity Diagram | 2005-08-01 → 2005-07-29 (-3d) | 2005-08-01 → 2005-07-29 (-3d) |  |  | 20d → 44d |  | resources Kunal → Vinay |
| 131 | UML Class Diagram | 2005-08-02 → 2005-08-01 (-1d) | 2005-08-03 → 2005-08-02 (-1d) |  |  | 0d → 44d | 129 → 130 | resources Kunal → Vinay |
| 132 | Design Review | 2005-08-04 → 2005-08-03 (-1d) | 2005-08-04 → 2005-08-03 (-1d) |  |  | 0d → 44d |  | resources none → Charles |
| 133 | Test Case Development | 2005-08-01 → 2005-07-29 (-3d) | 2005-08-01 → 2005-08-04 (+3d) | 1d → 5d |  | 20d → 43d |  |  |
| 134 | **Implementation** | 2005-08-05 → 2005-08-01 (-4d) | 2005-08-25 → 2005-08-22 (-3d) | 15d → 16d |  | 0d → 27d |  |  |
| 135 | Environment Setup | 2005-08-05 → 2005-08-01 (-4d) | 2005-08-05 → 2005-08-02 (-3d) | 1d → 2d |  | 0d → 27d | 132 → 129 | resources XYZ → Kunal |
| 136 | Junit Test Development | 2005-08-17 → 2005-08-03 (-14d) | 2005-08-18 → 2005-08-04 (-14d) |  |  | 7d → 27d | none → 135 | constraint start no earlier than 2005-08-17 → start no earlier than 2005-07-15; resources XYZ → Kunal |
| 138 | Code Reviews | 2005-08-22 → 2005-08-19 (-3d) | 2005-08-23 → 2005-08-22 (-1d) |  |  | 0d → 27d | Code Development → 137FS-2d |  |
| 140 | **Integration Testing** | 2005-08-24 → 2005-08-23 (-1d) | 2005-08-29 → 2005-08-26 (-3d) |  |  | 0d → 27d |  |  |
| 141 | QA Testing | 2005-08-24 → 2005-08-23 (-1d) | 2005-08-26 → 2005-08-25 (-1d) |  |  | 0d → 28d | 138 → 134 | constraint start no earlier than 2005-08-22 → none |
| 142 | Bug Fixes | 2005-08-24 → 2005-08-23 (-1d) |  | 2d → 3d |  | 2d → 27d | 138 → 134 | constraint finish no earlier than 2005-08-03 → none; resources XYZ → Kunal |
| 144 | Iteration Complete | 2005-08-05 → 2005-08-26 (+21d) | 2005-08-05 → 2005-08-26 (+21d) |  |  | 17d → 27d | none → 140 |  |
| 145 | **Iteration - Policy Adapters** |  | 2005-09-07 → 2005-09-16 (+9d) | 33d → 40d |  | 31d → 12d |  |  |
| 147 | **Design** |  | 2005-08-04 → 2005-08-05 (+1d) | 8d → 9d |  | 31d → 12d |  |  |

| ID | Task | Start | Finish | Duration | Total float | Predecessors | Other |
| --- | --- | --- | --- | --- | --- | --- | --- |
| 152 | UML Class Diagram |  |  |  | 55d → 42d | 150 → 151 |  |
| 153 | Design Review | 2005-08-02 → 2005-08-05 (+3d) | 2005-08-02 → 2005-08-05 (+3d) |  | 57d → 42d | 151 → 152 | resources none → Charles |
| 154 | Test Case Development |  | 2005-08-02 → 2005-08-05 (+3d) | 2d → 5d | 57d → 42d |  |  |
| 155 | **Implementation** | 2005-08-01 → 2005-08-02 (+1d) | 2005-09-05 → 2005-09-09 (+4d) | 26d → 29d | 32d → 12d |  |  |
| 156 | Environment Setup |  | 2005-08-02 → 2005-08-03 (+1d) | 1d → 2d | 31d → 12d | 151 → 150 | resources Vinay; Kunal → Kunal |
| 157 | Junit Test Development | 2005-08-01 → 2005-08-04 (+3d) | 2005-08-04 → 2005-08-09 (+5d) |  | 55d → 12d | none → 156 | constraint start no earlier than 2005-08-01 → start no earlier than 2005-07-15; resources none → Kunal |
| 159 | Code Reviews | 2005-08-31 → 2005-09-08 (+8d) | 2005-08-31 → 2005-09-09 (+9d) | 1d → 2d | 31d → 12d | Code Development → 158FS-2d | resources Kalpesh; Charles → Charles |
| 161 | **Integration Testing** | 2005-09-01 → 2005-09-12 (+11d) | 2005-09-07 → 2005-09-16 (+9d) |  | 31d → 12d |  |  |
| 162 | QA Testing | 2005-09-01 → 2005-09-12 (+11d) | 2005-09-06 → 2005-09-15 (+9d) |  | 31d → 13d | 159 → 155 |  |
| 163 | Bug Fixes | 2005-09-01 → 2005-09-12 (+11d) | 2005-09-05 → 2005-09-15 (+10d) | 3d → 4d | 33d → 12d | 159 → 155 | constraint finish no earlier than 2005-08-03 → none; resources none → Kunal |
| 165 | Iteration Complete | 2005-09-07 → 2005-09-16 (+9d) | 2005-09-07 → 2005-09-16 (+9d) |  | 31d → 12d | Evaluate Results → 161 | constraint start no earlier than 2005-08-18 → start no earlier than 2005-08-05 |
| 166 | **Iteration - UPT Enhancements** |  | 2005-10-07 → 2005-10-03 (-4d) | 54d → 51d | 10d → 1d |  |  |
| 168 | **Design** |  | 2005-08-04 → 2005-08-08 (+4d) | 8d → 10d | 15d → 1d |  |  |
| 173 | UML Class Diagram | 2005-08-02 → 2005-08-04 (+2d) | 2005-08-03 → 2005-08-05 (+2d) |  | 87d → 41d | 171 → 172 |  |
| 174 | Design Review | 2005-08-04 → 2005-08-08 (+4d) | 2005-08-04 → 2005-08-08 (+4d) |  | 86d → 41d | 172 → 173 | resources none → Charles |
| 175 | Test Case Development |  | 2005-08-03 → 2005-08-05 (+2d) | 3d → 5d | 87d → 42d |  |  |
| 176 | **Implementation** | 2005-08-04 → 2005-08-02 (-2d) | 2005-10-06 → 2005-09-22 (-14d) | 46d → 38d | 10d → 1d |  |  |
| 177 | Environment Setup | 2005-08-04 → 2005-08-02 (-2d) | 2005-08-04 → 2005-08-03 (-1d) | 1d → 2d | 46d → 1d | 172 → 171 | resources Vinay; Kunal → Kunal |
| 178 | Junit Test Development | 2005-09-26 → 2005-08-04 (-53d) | 2005-09-28 → 2005-08-08 (-51d) |  | 47d → 1d | none → 177 | constraint finish no earlier than 2005-09-28 → start no earlier than 2005-07-15; resources none → Kunal |
| 180 | Code Reviews | 2005-09-16 → 2005-09-21 (+5d) | 2005-09-19 → 2005-09-22 (+3d) |  | 46d → 1d | Code Development → 179FS-2d | resources Kalpesh; Charles → Charles |
| 182 | **Integration Testing** | 2005-09-20 → 2005-09-23 (+3d) | 2005-09-29 → 2005-10-03 (+4d) | 8d → 7d | 15d → 1d |  |  |
| 183 | QA Testing | 2005-09-20 → 2005-09-23 (+3d) | 2005-09-28 → 2005-09-30 (+2d) | 7d → 6d | 46d → 2d | 180 → 176 |  |
| 184 | Bug Fixes | 2005-10-03 → 2005-09-23 (-10d) | 2005-10-06 → 2005-09-30 (-6d) | 4d → 6d | 41d → 1d | 180 → 176 | constraint start no earlier than 2005-10-03 → none; resources none → Kunal |
| 186 | Iteration Complete | 2005-10-07 → 2005-10-03 (-4d) | 2005-10-07 → 2005-10-03 (-4d) |  | 10d → 1d | Evaluate Results → 182 | constraint start no earlier than 2005-10-07 → start no earlier than 2005-08-05 |
| 187 | **Iteration - AOP Integration** | 2005-08-08 → 2005-07-25 (-14d) | 2005-10-17 → 2005-09-20 (-27d) | 51d → 42d | 3d → 10d | 84 → none |  |
| 188 | Detailed Iteration Plan | 2005-08-08 → 2005-07-25 (-14d) | 2005-08-08 → 2005-07-25 (-14d) |  | 3d → 10d |  |  |
| 189 | **Design** | 2005-08-09 → 2005-07-26 (-14d) | 2005-08-22 → 2005-08-08 (-14d) |  | 3d → 10d |  |  |
| 190 | Level 3 - 4 Use Cases | 2005-08-09 → 2005-07-26 (-14d) | 2005-08-11 → 2005-07-28 (-14d) |  | 3d → 10d |  |  |
| 191 | Use Case Model | 2005-08-12 → 2005-07-29 (-14d) | 2005-08-12 → 2005-07-29 (-14d) |  | 3d → 10d |  |  |
| 192 | UML Sequence Diagram | 2005-08-15 → 2005-08-01 (-14d) | 2005-08-15 → 2005-08-01 (-14d) |  | 3d → 10d |  |  |
| 193 | UML Activity Diagram | 2005-08-15 → 2005-08-01 (-14d) | 2005-08-15 → 2005-08-01 (-14d) |  | 48d → 41d |  |  |
| 194 | UML Class Diagram | 2005-08-16 → 2005-08-02 (-14d) | 2005-08-19 → 2005-08-05 (-14d) |  | 3d → 41d | 192 → 193 |  |
| 195 | Design Review | 2005-08-22 → 2005-08-08 (-14d) | 2005-08-22 → 2005-08-08 (-14d) |  | 3d → 41d |  | resources none → Charles |
| 196 | Test Case Development | 2005-08-15 → 2005-08-01 (-14d) | 2005-08-17 → 2005-08-05 (-12d) | 3d → 5d | 46d → 42d |  |  |
| 197 | **Implementation** | 2005-08-08 → 2005-08-02 (-6d) | 2005-10-12 → 2005-09-09 (-33d) | 48d → 29d | 6d → 10d |  |  |
| 198 | Environment Setup | 2005-08-22 → 2005-08-02 (-20d) | 2005-08-23 → 2005-08-03 (-20d) |  | 3d → 10d | 194 → 192 | resources XYZ; Kunal → Kunal |
| 199 | Junit Test Development | 2005-08-08 → 2005-08-04 (-4d) | 2005-08-11 → 2005-08-09 (-2d) |  | 50d → 10d | none → 198 | resources none → Kunal |
| 201 | Code Reviews | 2005-10-05 → 2005-09-08 (-27d) | 2005-10-06 → 2005-09-09 (-27d) |  | 3d → 10d | Code Development → 200FS-2d | resources Kalpesh; Charles → Charles |
| 203 | **Integration Testing** | 2005-10-07 → 2005-09-12 (-25d) | 2005-10-17 → 2005-09-20 (-27d) |  | 3d → 10d |  |  |
| 204 | QA Testing | 2005-10-07 → 2005-09-12 (-25d) | 2005-10-14 → 2005-09-19 (-25d) |  | 2d → 11d | 201 → 197 |  |
| 205 | Bug Fixes | 2005-10-07 → 2005-09-12 (-25d) | 2005-10-12 → 2005-09-19 (-23d) | 4d → 6d | 6d → 10d | 201 → 197 | constraint finish no earlier than 2005-08-03 → none; resources none → Kunal |
| 207 | Iteration Complete | 2005-10-17 → 2005-09-20 (-27d) | 2005-10-17 → 2005-09-20 (-27d) |  | 3d → 10d | Evaluate Results → 203 |  |
| 208 | **Iteration - Message Level Security** | 2005-08-23 → 2005-07-25 (-29d) | 2005-10-17 → 2005-09-15 (-32d) | 40d → 39d | 3d → 13d | 195 → none |  |
| 209 | Detailed Iteration Plan | 2005-08-23 → 2005-07-25 (-29d) | 2005-08-23 → 2005-07-25 (-29d) |  | 3d → 13d |  | constraint start no earlier than 2005-06-22 → start no earlier than 2004-10-26 |
| 210 | **Design** | 2005-08-24 → 2005-07-26 (-29d) | 2005-09-05 → 2005-08-05 (-31d) |  | 3d → 13d |  |  |
| 211 | Level 3 - 4 Use Cases | 2005-08-24 → 2005-07-26 (-29d) | 2005-08-26 → 2005-07-28 (-29d) |  | 3d → 13d |  |  |
| 212 | Use Case Model | 2005-08-29 → 2005-07-29 (-31d) | 2005-08-29 → 2005-07-29 (-31d) |  | 3d → 13d |  |  |
| 213 | UML Sequence Diagram | 2005-08-30 → 2005-08-01 (-29d) | 2005-08-30 → 2005-08-01 (-29d) |  | 3d → 13d |  |  |
| 214 | UML Activity Diagram | 2005-08-30 → 2005-08-01 (-29d) | 2005-08-30 → 2005-08-01 (-29d) |  | 37d → 42d |  |  |
| 215 | UML Class Diagram | 2005-08-31 → 2005-08-02 (-29d) | 2005-09-02 → 2005-08-04 (-29d) |  | 3d → 42d | 213 → 214 |  |
| 216 | Design Review | 2005-09-05 → 2005-08-05 (-31d) | 2005-09-05 → 2005-08-05 (-31d) |  | 3d → 42d |  | resources none → Charles |
| 217 | Test Case Development | 2005-08-30 → 2005-08-01 (-29d) | 2005-08-30 → 2005-08-05 (-25d) | 1d → 5d | 37d → 42d |  |  |
| 218 | **Implementation** | 2005-09-06 → 2005-08-02 (-35d) | 2005-10-14 → 2005-09-08 (-36d) | 29d → 28d | 3d → 13d |  |  |
| 219 | Environment Setup | 2005-09-06 → 2005-08-02 (-35d) | 2005-09-07 → 2005-08-03 (-35d) |  | 3d → 13d | 216 → 213 | resources Vinay → Kunal |
| 220 | Junit Test Development | 2005-09-08 → 2005-08-04 (-35d) | 2005-09-12 → 2005-08-08 (-35d) |  | 28d → 13d |  | resources Vinay → Kunal |
| 222 | Code Reviews | 2005-10-06 → 2005-09-07 (-29d) | 2005-10-11 → 2005-09-08 (-33d) | 4d → 2d | 3d → 13d | Code Development → 221FS-2d |  |
| 224 | **Integration Testing** | 2005-10-12 → 2005-09-09 (-33d) | 2005-10-17 → 2005-09-15 (-32d) | 4d → 5d | 3d → 13d |  |  |
| 225 | QA Testing | 2005-10-12 → 2005-09-09 (-33d) | 2005-10-14 → 2005-09-14 (-30d) | 3d → 4d | 3d → 14d | 222 → 218 |  |
| 226 | Bug Fixes | 2005-10-12 → 2005-09-09 (-33d) | 2005-10-14 → 2005-09-14 (-30d) | 3d → 4d | 4d → 13d | 222 → 218 | constraint finish no earlier than 2005-07-18 → none; resources none → Kunal |
| 228 | Iteration Complete | 2005-10-17 → 2005-09-15 (-32d) | 2005-10-17 → 2005-09-15 (-32d) |  | 3d → 13d | Evaluate Results → 224 | constraint start no earlier than 2005-09-15 → start no earlier than 2005-08-05 |
| 229 | **Transition** | 2005-10-20 → 2005-10-04 (-16d) |  | 23d → 35d |  |  |  |
| 230 | **Iteration I** | 2005-10-20 → 2005-10-04 (-16d) |  | 18d → 30d |  |  |  |
| 231 | **QA Testing** | 2005-10-21 → 2005-10-05 (-16d) |  | 18d → 30d |  |  |  |
| 232 | Setup of Environment | 2005-10-21 → 2005-10-05 (-16d) | 2005-10-24 → 2005-10-06 (-18d) |  | 6d → 18d |  |  |
| 233 | Regression Testing | 2005-10-25 → 2005-10-07 (-18d) | 2005-11-07 → 2005-10-20 (-18d) |  | 6d → 18d |  |  |
| 235 | **Documentation** | 2005-10-21 → 2005-10-05 (-16d) | 2005-11-15 → 2005-10-28 (-18d) |  | 0d → 12d |  |  |
| 236 | Application Developers Guide Document | 2005-10-21 → 2005-10-05 (-16d) | 2005-11-10 → 2005-10-25 (-16d) |  | 0d → 12d |  |  |
| 237 | Java Docs | 2005-10-21 → 2005-10-05 (-16d) | 2005-10-26 → 2005-10-10 (-16d) |  | 14d → 26d |  |  |
| 238 | UPT User Guide Updation | 2005-10-21 → 2005-10-05 (-16d) | 2005-11-03 → 2005-10-18 (-16d) |  | 8d → 20d |  |  |
| 239 | caCore Technical Guide Modifications | 2005-11-11 → 2005-10-26 (-16d) | 2005-11-14 → 2005-10-27 (-18d) |  | 0d → 12d |  |  |

| ID | Task | Start | Finish | Total float |
| --- | --- | --- | --- | --- |
| 240 | Release Notes | 2005-11-15 → 2005-10-28 (-18d) | 2005-11-15 → 2005-10-28 (-18d) | 0d → 12d |
| 241 | Iteration I Complete | 2005-10-20 → 2005-10-04 (-16d) | 2005-10-20 → 2005-10-04 (-16d) |  |

## Version 4 (saved 2005-05-09)

Note of the change: Updated Resource Allocation To be reviewed by Charles

Last finish 2005-11-30 → 2006-01-16 (+47d).

Changed:

| ID | Task | Start | Finish | Duration | Total float | Predecessors | Other |
| --- | --- | --- | --- | --- | --- | --- | --- |
| 1 | **Security Module (Release four)** |  | 2005-11-30 → 2006-01-16 (+47d) | 174d? → 207d? |  |  |  |
| 81 | **Construction** |  | 2005-10-04 → 2005-12-14 (+71d) | 52d → 103d |  |  |  |
| 82 | **Iteration - SSO** |  | 2005-10-04 → 2005-10-10 (+6d) | 52d → 56d |  |  |  |
| 83 | Detailed Iteration Plan |  |  |  |  | none → 65 | resources Vinay; Kunal → Vinay |
| 85 | Level 3 - 4 Use Cases |  |  |  |  |  | resources Kunal; Vinay → Vinay |
| 86 | Use Case Model |  |  |  |  |  | resources Vinay; Kunal → Vinay |
| 87 | UML Sequence Diagram |  |  |  | 0d → 122d |  | resources Kunal → Vinay |
| 92 | **Implementation** | 2005-08-02 → 2005-08-08 (+6d) | 2005-09-27 → 2005-10-03 (+6d) |  | 0d → 72d |  |  |
| 93 | Environment Setup | 2005-08-02 → 2005-08-08 (+6d) | 2005-08-05 → 2005-08-11 (+6d) |  | 0d → 72d | 87 → 90, 111 |  |
| 94 | Junit Test Development | 2005-08-08 → 2005-08-12 (+4d) | 2005-08-11 → 2005-08-17 (+6d) |  | 0d → 72d |  |  |
| 95 | Code Development + Unit Testing | 2005-08-12 → 2005-08-18 (+6d) | 2005-09-27 → 2005-10-03 (+6d) |  | 0d → 72d |  | resources Kunal; Vinay [10%] → Kunal |
| 96 | Code Reviews | 2005-09-26 → 2005-09-30 (+4d) | 2005-09-27 → 2005-10-03 (+6d) |  | 0d → 72d |  |  |
| 97 | Promote to QA | 2005-09-27 → 2005-10-03 (+6d) | 2005-09-27 → 2005-10-03 (+6d) |  | 0d → 72d |  |  |
| 98 | **Integration Testing** | 2005-09-28 → 2005-10-04 (+6d) | 2005-10-04 → 2005-10-10 (+6d) |  | 0d → 72d |  |  |
| 99 | QA Testing | 2005-09-28 → 2005-10-04 (+6d) | 2005-10-03 → 2005-10-07 (+4d) |  | 1d → 73d |  |  |
| 100 | Bug Fixes | 2005-09-28 → 2005-10-04 (+6d) | 2005-10-03 → 2005-10-07 (+4d) |  | 0d → 72d |  |  |
| 101 | Evaluate Results & Consolidate Documents/ Design | 2005-10-04 → 2005-10-10 (+6d) | 2005-10-04 → 2005-10-10 (+6d) |  | 0d → 72d |  |  |
| 102 | Iteration Complete | 2005-10-04 → 2005-10-10 (+6d) | 2005-10-04 → 2005-10-10 (+6d) |  | 0d → 72d |  |  |
| 103 | **Iteration - Auth Policy Caching** |  | 2005-08-30 → 2005-09-23 (+24d) | 27d → 45d | 25d → 18d |  |  |
| 104 | Detailed Iteration Plan |  |  |  | 25d → 18d | none → 65 | resources Vinay; Kunal → Kunal |
| 106 | Level 3 - 4 Use Cases |  |  |  | 25d → 18d |  | resources Kunal; Vinay → Kunal |
| 107 | Use Case Model |  |  |  | 25d → 18d |  | resources Vinay; Kunal → Kunal |
| 109 | UML Activity Diagram |  |  |  | 42d → 39d |  | resources Vinay → Kunal |
| 110 | UML Class Diagram |  |  |  | 42d → 39d |  | resources Vinay → Kunal |
| 113 | **Implementation** | 2005-08-02 → 2005-08-26 (+24d) | 2005-08-24 → 2005-09-19 (+26d) |  | 25d → 8d |  |  |
| 114 | Environment Setup | 2005-08-02 → 2005-08-26 (+24d) | 2005-08-03 → 2005-08-29 (+26d) |  | 25d → 8d | 108 → 108, 142 | resources Kunal → XYZ |
| 115 | Junit Test Development | 2005-08-04 → 2005-08-30 (+26d) | 2005-08-05 → 2005-08-31 (+26d) |  | 25d → 8d |  | resources Kunal → XYZ |
| 116 | Code Development + Unit Testing | 2005-08-08 → 2005-09-01 (+24d) | 2005-08-24 → 2005-09-19 (+26d) |  | 25d → 8d |  | resources Kunal; Vinay [10%] → XYZ |
| 117 | Code Reviews | 2005-08-23 → 2005-09-16 (+24d) | 2005-08-24 → 2005-09-19 (+26d) |  | 25d → 8d |  |  |
| 118 | Promote to QA | 2005-08-24 → 2005-09-19 (+26d) | 2005-08-24 → 2005-09-19 (+26d) |  | 25d → 8d |  |  |
| 119 | **Integration Testing** | 2005-08-25 → 2005-09-20 (+26d) | 2005-08-30 → 2005-09-23 (+24d) |  | 25d → 8d |  |  |
| 120 | QA Testing | 2005-08-25 → 2005-09-20 (+26d) | 2005-08-29 → 2005-09-22 (+24d) |  | 26d → 47d |  |  |
| 121 | Bug Fixes | 2005-08-25 → 2005-09-20 (+26d) | 2005-08-29 → 2005-09-22 (+24d) |  | 25d → 8d |  | resources Kunal → XYZ |
| 122 | Evaluate Results & Consolidate Documents/ Design | 2005-08-30 → 2005-09-23 (+24d) | 2005-08-30 → 2005-09-23 (+24d) |  | 25d → 46d |  | resources Eric; Vinay; Kunal → Eric; Kunal; XYZ |
| 123 | Iteration Complete | 2005-08-30 → 2005-09-23 (+24d) | 2005-08-30 → 2005-09-23 (+24d) |  | 25d → 46d |  |  |
| 125 | Detailed Iteration Plan |  |  |  | 27d → 8d | none → 65 | resources Vinay; Kunal → XYZ |
| 127 | Level 3 - 4 Use Cases |  |  |  | 27d → 8d |  | resources Kunal; Vinay → XYZ |
| 128 | Use Case Model |  |  |  | 27d → 8d |  | resources Vinay; Kunal → XYZ |
| 129 | UML Sequence Diagram |  |  |  | 27d → 8d |  | resources Kunal → XYZ |
| 130 | UML Activity Diagram |  |  |  | 44d → 61d |  | resources Vinay → XYZ |
| 131 | UML Class Diagram |  |  |  | 44d → 61d |  | resources Vinay → XYZ |
| 135 | Environment Setup |  |  |  | 27d → 8d |  | resources Kunal → XYZ |
| 136 | Junit Test Development |  |  |  | 27d → 8d |  | resources Kunal → XYZ |
| 137 | Code Development + Unit Testing |  |  |  | 27d → 8d |  | resources Kunal; Vinay [10%] → XYZ |
| 142 | Bug Fixes |  |  |  | 27d → 8d |  | resources Kunal → XYZ |
| 145 | **Iteration - Policy Adapters** | 2005-07-25 → 2005-08-08 (+14d) | 2005-09-16 → 2005-10-03 (+17d) | 40d → 41d | 12d → 0d |  |  |
| 146 | Detailed Iteration Plan | 2005-07-25 → 2005-08-08 (+14d) | 2005-07-25 → 2005-08-09 (+15d) | 1d → 2d | 12d → 0d | none → 90 | resources Vinay; Kunal → Vinay |
| 147 | **Design** | 2005-07-26 → 2005-08-10 (+15d) | 2005-08-05 → 2005-08-22 (+17d) |  | 12d → 0d |  |  |
| 148 | Level 3 - 4 Use Cases | 2005-07-26 → 2005-08-10 (+15d) | 2005-07-28 → 2005-08-12 (+15d) |  | 12d → 0d |  | resources Kunal; Vinay → Vinay |
| 149 | Use Case Model | 2005-07-29 → 2005-08-15 (+17d) | 2005-07-29 → 2005-08-15 (+17d) |  | 12d → 0d |  | resources Vinay; Kunal → Vinay |
| 150 | UML Sequence Diagram | 2005-08-01 → 2005-08-16 (+15d) | 2005-08-01 → 2005-08-16 (+15d) |  | 12d → 0d |  | resources Kunal → Vinay |
| 151 | UML Activity Diagram | 2005-08-01 → 2005-08-16 (+15d) | 2005-08-01 → 2005-08-16 (+15d) |  | 42d → 17d |  |  |
| 152 | UML Class Diagram | 2005-08-02 → 2005-08-17 (+15d) | 2005-08-04 → 2005-08-19 (+15d) |  | 42d → 17d |  |  |
| 153 | Design Review | 2005-08-05 → 2005-08-22 (+17d) | 2005-08-05 → 2005-08-22 (+17d) |  | 42d → 17d |  |  |
| 154 | Test Case Development | 2005-08-01 → 2005-08-16 (+15d) | 2005-08-05 → 2005-08-22 (+17d) |  | 42d → 48d |  |  |
| 155 | **Implementation** | 2005-08-02 → 2005-08-17 (+15d) | 2005-09-09 → 2005-09-26 (+17d) |  | 12d → 0d |  |  |
| 156 | Environment Setup | 2005-08-02 → 2005-08-17 (+15d) | 2005-08-03 → 2005-08-18 (+15d) |  | 12d → 0d |  | resources Kunal → Vinay |
| 157 | Junit Test Development | 2005-08-04 → 2005-08-19 (+15d) | 2005-08-09 → 2005-08-24 (+15d) |  | 12d → 0d |  | resources Kunal → Vinay |
| 158 | Code Development + Unit Testing | 2005-08-10 → 2005-08-25 (+15d) | 2005-09-09 → 2005-09-26 (+17d) |  | 12d → 0d |  | resources Kunal; Vinay [10%] → Vinay |
| 159 | Code Reviews | 2005-09-08 → 2005-09-23 (+15d) | 2005-09-09 → 2005-09-26 (+17d) |  | 12d → 0d |  |  |
| 160 | Promote to QA | 2005-09-09 → 2005-09-26 (+17d) | 2005-09-09 → 2005-09-26 (+17d) |  | 12d → 0d |  |  |
| 161 | **Integration Testing** | 2005-09-12 → 2005-09-27 (+15d) | 2005-09-16 → 2005-10-03 (+17d) |  | 12d → 0d |  |  |
| 162 | QA Testing | 2005-09-12 → 2005-09-27 (+15d) | 2005-09-15 → 2005-09-30 (+15d) |  | 13d → 19d |  |  |
| 163 | Bug Fixes | 2005-09-12 → 2005-09-27 (+15d) | 2005-09-15 → 2005-09-30 (+15d) |  | 12d → 0d |  | resources Kunal → Vinay |
| 164 | Evaluate Results & Consolidate Documents/ Design | 2005-09-16 → 2005-10-03 (+17d) | 2005-09-16 → 2005-10-03 (+17d) |  | 12d → 77d |  | resources Eric; Vinay; Kunal → Eric; Vinay |
| 165 | Iteration Complete | 2005-09-16 → 2005-10-03 (+17d) | 2005-09-16 → 2005-10-03 (+17d) |  | 12d → 77d |  |  |
| 166 | **Iteration - UPT Enhancements** | 2005-07-25 → 2005-09-23 (+60d) | 2005-10-03 → 2005-12-02 (+60d) |  | 1d → 8d |  |  |
| 167 | Detailed Iteration Plan | 2005-07-25 → 2005-09-23 (+60d) | 2005-07-25 → 2005-09-23 (+60d) |  | 1d → 8d | none → 121 | resources Vinay; Kunal → XYZ |
| 168 | **Design** | 2005-07-26 → 2005-09-26 (+62d) | 2005-08-08 → 2005-10-07 (+60d) |  | 1d → 8d |  |  |
| 169 | Level 3 - 4 Use Cases | 2005-07-26 → 2005-09-26 (+62d) | 2005-07-28 → 2005-09-28 (+62d) |  | 1d → 8d |  | resources Kunal; Vinay → XYZ |

| ID | Task | Start | Finish | Duration | Total float | Predecessors | Other |
| --- | --- | --- | --- | --- | --- | --- | --- |
| 170 | Use Case Model | 2005-07-29 → 2005-09-29 (+62d) | 2005-07-29 → 2005-09-29 (+62d) |  | 1d → 8d |  | resources Vinay; Kunal → XYZ |
| 171 | UML Sequence Diagram | 2005-08-01 → 2005-09-30 (+60d) | 2005-08-01 → 2005-09-30 (+60d) |  | 1d → 8d |  | resources Kunal → XYZ |
| 172 | UML Activity Diagram | 2005-08-01 → 2005-09-30 (+60d) | 2005-08-03 → 2005-10-04 (+62d) |  | 41d → 4d |  | resources Vinay → XYZ |
| 173 | UML Class Diagram | 2005-08-04 → 2005-10-05 (+62d) | 2005-08-05 → 2005-10-06 (+62d) |  | 41d → 4d |  | resources Vinay → XYZ |
| 174 | Design Review | 2005-08-08 → 2005-10-07 (+60d) | 2005-08-08 → 2005-10-07 (+60d) |  | 41d → 4d |  |  |
| 175 | Test Case Development | 2005-08-01 → 2005-09-30 (+60d) | 2005-08-05 → 2005-10-06 (+62d) |  | 42d → 41d |  |  |
| 176 | **Implementation** | 2005-08-02 → 2005-10-03 (+62d) | 2005-09-22 → 2005-11-23 (+62d) |  | 1d → 8d |  |  |
| 177 | Environment Setup | 2005-08-02 → 2005-10-03 (+62d) | 2005-08-03 → 2005-10-04 (+62d) |  | 1d → 8d |  | resources Kunal → XYZ |
| 178 | Junit Test Development | 2005-08-04 → 2005-10-05 (+62d) | 2005-08-08 → 2005-10-07 (+60d) |  | 1d → 8d |  | resources Kunal → XYZ |
| 179 | Code Development + Unit Testing | 2005-08-09 → 2005-10-10 (+62d) | 2005-09-22 → 2005-11-23 (+62d) |  | 1d → 8d |  | resources Kunal; Vinay [10%] → XYZ |
| 180 | Code Reviews | 2005-09-21 → 2005-11-22 (+62d) | 2005-09-22 → 2005-11-23 (+62d) |  | 1d → 8d |  |  |
| 181 | Promote to QA | 2005-09-22 → 2005-11-23 (+62d) | 2005-09-22 → 2005-11-23 (+62d) |  | 1d → 8d |  |  |
| 182 | **Integration Testing** | 2005-09-23 → 2005-11-24 (+62d) | 2005-10-03 → 2005-12-02 (+60d) |  | 1d → 8d |  |  |
| 183 | QA Testing | 2005-09-23 → 2005-11-24 (+62d) | 2005-09-30 → 2005-12-01 (+62d) |  | 2d → 9d |  |  |
| 184 | Bug Fixes | 2005-09-23 → 2005-11-24 (+62d) | 2005-09-30 → 2005-12-01 (+62d) |  | 1d → 8d |  | resources Kunal → XYZ |
| 185 | Evaluate Results & Consolidate Documents/ Design | 2005-10-03 → 2005-12-02 (+60d) | 2005-10-03 → 2005-12-02 (+60d) |  | 1d → 8d |  | resources Eric; Vinay; Kunal → Eric; XYZ; Kunal |
| 186 | Iteration Complete | 2005-10-03 → 2005-12-02 (+60d) | 2005-10-03 → 2005-12-02 (+60d) |  | 1d → 8d |  |  |
| 187 | **Iteration - AOP Integration** | 2005-07-25 → 2005-10-17 (+84d) | 2005-09-20 → 2005-12-14 (+85d) | 42d → 43d | 10d → 0d |  |  |
| 188 | Detailed Iteration Plan | 2005-07-25 → 2005-10-17 (+84d) | 2005-07-25 → 2005-10-18 (+85d) | 1d → 2d | 10d → 0d | none → 216 | resources Vinay; Kunal → Vinay |
| 189 | **Design** | 2005-07-26 → 2005-10-19 (+85d) | 2005-08-08 → 2005-11-01 (+85d) |  | 10d → 0d |  |  |
| 190 | Level 3 - 4 Use Cases | 2005-07-26 → 2005-10-19 (+85d) | 2005-07-28 → 2005-10-21 (+85d) |  | 10d → 0d |  | resources Kunal; Vinay → Vinay |
| 191 | Use Case Model | 2005-07-29 → 2005-10-24 (+87d) | 2005-07-29 → 2005-10-24 (+87d) |  | 10d → 0d |  | resources Vinay; Kunal → Vinay |
| 192 | UML Sequence Diagram | 2005-08-01 → 2005-10-25 (+85d) | 2005-08-01 → 2005-10-25 (+85d) |  | 10d → 0d |  | resources Kunal → Vinay |
| 193 | UML Activity Diagram | 2005-08-01 → 2005-10-25 (+85d) | 2005-08-01 → 2005-10-25 (+85d) |  | 41d → 56d |  |  |
| 194 | UML Class Diagram | 2005-08-02 → 2005-10-26 (+85d) | 2005-08-05 → 2005-10-31 (+87d) |  | 41d → 56d |  |  |
| 195 | Design Review | 2005-08-08 → 2005-11-01 (+85d) | 2005-08-08 → 2005-11-01 (+85d) |  | 41d → 56d |  |  |
| 196 | Test Case Development | 2005-08-01 → 2005-10-25 (+85d) | 2005-08-05 → 2005-10-31 (+87d) |  | 42d → 57d |  |  |
| 197 | **Implementation** | 2005-08-02 → 2005-10-26 (+85d) | 2005-09-09 → 2005-12-05 (+87d) |  | 10d → 0d |  |  |
| 198 | Environment Setup | 2005-08-02 → 2005-10-26 (+85d) | 2005-08-03 → 2005-10-27 (+85d) |  | 10d → 0d |  |  |
| 199 | Junit Test Development | 2005-08-04 → 2005-10-28 (+85d) | 2005-08-09 → 2005-11-02 (+85d) |  | 10d → 0d |  |  |
| 200 | Code Development + Unit Testing | 2005-08-10 → 2005-11-03 (+85d) | 2005-09-09 → 2005-12-05 (+87d) |  | 10d → 0d |  | resources Kunal; Vinay [10%] → Kunal |
| 201 | Code Reviews | 2005-09-08 → 2005-12-02 (+85d) | 2005-09-09 → 2005-12-05 (+87d) |  | 10d → 0d |  |  |
| 202 | Promote to QA | 2005-09-09 → 2005-12-05 (+87d) | 2005-09-09 → 2005-12-05 (+87d) |  | 10d → 0d |  |  |
| 203 | **Integration Testing** | 2005-09-12 → 2005-12-06 (+85d) | 2005-09-20 → 2005-12-14 (+85d) |  | 10d → 0d |  |  |
| 204 | QA Testing | 2005-09-12 → 2005-12-06 (+85d) | 2005-09-19 → 2005-12-13 (+85d) |  | 11d → 26d |  |  |
| 205 | Bug Fixes | 2005-09-12 → 2005-12-06 (+85d) | 2005-09-19 → 2005-12-13 (+85d) |  | 10d → 0d |  |  |
| 206 | Evaluate Results & Consolidate Documents/ Design | 2005-09-20 → 2005-12-14 (+85d) | 2005-09-20 → 2005-12-14 (+85d) |  | 10d → 0d |  |  |
| 207 | Iteration Complete | 2005-09-20 → 2005-12-14 (+85d) | 2005-09-20 → 2005-12-14 (+85d) |  | 10d → 0d |  |  |
| 208 | **Iteration - Message Level Security** | 2005-07-25 → 2005-10-03 (+70d) | 2005-09-15 → 2005-11-25 (+71d) | 39d → 39.5d | 13d → 0d |  |  |
| 209 | Detailed Iteration Plan | 2005-07-25 → 2005-10-03 (+70d) | 2005-07-25 → 2005-10-03 (+70d) |  | 13d → 0d | none → 163 | resources Vinay; Kunal → Vinay |
| 210 | **Design** | 2005-07-26 → 2005-10-04 (+70d) | 2005-08-05 → 2005-10-14 (+70d) |  | 13d → 0d |  |  |
| 211 | Level 3 - 4 Use Cases | 2005-07-26 → 2005-10-04 (+70d) | 2005-07-28 → 2005-10-06 (+70d) |  | 13d → 0d |  | resources Kunal; Vinay → Vinay |
| 212 | Use Case Model | 2005-07-29 → 2005-10-07 (+70d) | 2005-07-29 → 2005-10-07 (+70d) |  | 13d → 0d |  | resources Vinay; Kunal → Vinay |
| 213 | UML Sequence Diagram | 2005-08-01 → 2005-10-10 (+70d) | 2005-08-01 → 2005-10-10 (+70d) |  | 13d → 38.5d |  | resources Kunal → Vinay |
| 214 | UML Activity Diagram | 2005-08-01 → 2005-10-10 (+70d) | 2005-08-01 → 2005-10-10 (+70d) |  | 42d → 0d |  |  |
| 215 | UML Class Diagram | 2005-08-02 → 2005-10-11 (+70d) | 2005-08-04 → 2005-10-13 (+70d) |  | 42d → 0d |  |  |
| 216 | Design Review | 2005-08-05 → 2005-10-14 (+70d) | 2005-08-05 → 2005-10-14 (+70d) |  | 42d → 0d |  |  |
| 217 | Test Case Development | 2005-08-01 → 2005-10-10 (+70d) | 2005-08-05 → 2005-10-14 (+70d) |  | 42d → 68d |  |  |
| 218 | **Implementation** | 2005-08-02 → 2005-10-11 (+70d) | 2005-09-08 → 2005-11-17 (+70d) |  | 13d → 38.5d |  |  |
| 219 | Environment Setup | 2005-08-02 → 2005-10-11 (+70d) | 2005-08-03 → 2005-10-12 (+70d) |  | 13d → 38.5d |  | resources Kunal → Vinay |
| 220 | Junit Test Development | 2005-08-04 → 2005-10-13 (+70d) | 2005-08-08 → 2005-10-17 (+70d) |  | 13d → 38.5d |  | resources Kunal → Vinay |
| 221 | Code Development + Unit Testing | 2005-08-09 → 2005-10-18 (+70d) | 2005-09-08 → 2005-11-17 (+70d) |  | 13d → 38.5d |  | resources Kunal; Vinay [10%] → Vinay |
| 222 | Code Reviews | 2005-09-07 → 2005-11-16 (+70d) | 2005-09-08 → 2005-11-17 (+70d) |  | 13d → 38.5d |  |  |
| 223 | Promote to QA | 2005-09-08 → 2005-11-17 (+70d) | 2005-09-08 → 2005-11-17 (+70d) |  | 13d → 38.5d |  |  |
| 224 | **Integration Testing** | 2005-09-09 → 2005-11-18 (+70d) | 2005-09-15 → 2005-11-25 (+71d) | 5d → 5.5d | 13d → 38.5d |  |  |
| 225 | QA Testing | 2005-09-09 → 2005-11-18 (+70d) | 2005-09-14 → 2005-11-23 (+70d) |  | 14d → 40d |  |  |
| 226 | Bug Fixes | 2005-09-09 → 2005-11-18 (+70d) | 2005-09-14 → 2005-11-23 (+70d) |  | 13d → 38.5d |  | resources Kunal → Vinay |
| 227 | Evaluate Results & Consolidate Documents/ Design | 2005-09-15 → 2005-11-24 (+70d) | 2005-09-15 → 2005-11-25 (+71d) | 1d → 1.5d | 13d → 38.5d |  | resources Eric; Vinay; Kunal → Eric; Vinay |
| 228 | Iteration Complete | 2005-09-15 → 2005-11-25 (+71d) | 2005-09-15 → 2005-11-25 (+71d) |  | 13d → 38.5d |  |  |
| 229 | **Transition** | 2005-10-04 → 2005-12-14 (+71d) | 2005-11-22 → 2006-01-16 (+55d) | 35d → 23d |  |  |  |
| 230 | **Iteration I** | 2005-10-04 → 2005-12-14 (+71d) | 2005-11-15 → 2006-01-09 (+55d) | 30d → 18d |  |  |  |
| 231 | **QA Testing** | 2005-10-05 → 2005-12-15 (+71d) | 2005-11-15 → 2005-12-30 (+45d) | 30d → 12d | 0d → 6d |  |  |
| 232 | Setup of Environment | 2005-10-05 → 2005-12-15 (+71d) | 2005-10-06 → 2005-12-16 (+71d) |  | 18d → 6d |  |  |
| 233 | Regression Testing | 2005-10-07 → 2005-12-19 (+73d) | 2005-10-20 → 2005-12-30 (+71d) |  | 18d → 6d |  |  |
| 234 | Bug Fixes | 2005-11-11 → 2005-12-15 (+34d) | 2005-11-15 → 2005-12-19 (+34d) |  | 0d → 15d |  |  |
| 235 | **Documentation** | 2005-10-05 → 2005-12-15 (+71d) | 2005-10-28 → 2006-01-09 (+73d) |  | 12d → 0d |  |  |
| 236 | Application Developers Guide Document | 2005-10-05 → 2005-12-15 (+71d) | 2005-10-25 → 2006-01-04 (+71d) |  | 12d → 0d |  |  |
| 237 | Java Docs | 2005-10-05 → 2005-12-15 (+71d) | 2005-10-10 → 2005-12-20 (+71d) |  | 26d → 14d |  |  |
| 238 | UPT User Guide Updation | 2005-10-05 → 2005-12-15 (+71d) | 2005-10-18 → 2005-12-28 (+71d) |  | 20d → 8d |  |  |
| 239 | caCore Technical Guide Modifications | 2005-10-26 → 2006-01-05 (+71d) | 2005-10-27 → 2006-01-06 (+71d) |  | 12d → 0d |  |  |

| ID | Task | Start | Finish | Total float |
| --- | --- | --- | --- | --- |
| 240 | Release Notes | 2005-10-28 → 2006-01-09 (+73d) | 2005-10-28 → 2006-01-09 (+73d) | 12d → 0d |
| 241 | Iteration I Complete | 2005-10-04 → 2005-12-14 (+71d) | 2005-10-04 → 2005-12-14 (+71d) |  |
| 242 | **Iteration II** | 2005-11-15 → 2006-01-09 (+55d) | 2005-11-21 → 2006-01-13 (+53d) |  |
| 243 | **Staging Environment Testing** | 2005-11-16 → 2006-01-10 (+55d) | 2005-11-21 → 2006-01-13 (+53d) | 6d → 0d |
| 244 | Setup of Environment | 2005-11-16 → 2006-01-10 (+55d) | 2005-11-16 → 2006-01-10 (+55d) | 6d → 0d |
| 245 | Regression Testing | 2005-11-17 → 2006-01-11 (+55d) | 2005-11-21 → 2006-01-13 (+53d) | 6d → 0d |
| 246 | Bug Fixes | 2005-11-16 → 2006-01-10 (+55d) | 2005-11-16 → 2006-01-10 (+55d) | 9d → 3d |
| 247 | Iteration II Complete | 2005-11-15 → 2006-01-09 (+55d) | 2005-11-15 → 2006-01-09 (+55d) |  |
| 248 | **Release** | 2005-11-22 → 2006-01-16 (+55d) | 2005-11-22 → 2006-01-16 (+55d) | 6d → 0d |
| 249 | Tag into the CVS & Release | 2005-11-22 → 2006-01-16 (+55d) | 2005-11-22 → 2006-01-16 (+55d) | 6d → 0d |

## Version 5 (saved 2005-05-09)

Note of the change: Updated Effort and Resource Allocation To be reviewed by Charles

Last finish stays 2006-01-16. Complete tasks 10 → 12.

Changed:

| ID | Task | Start | Finish | Duration | Complete | Total float |
| --- | --- | --- | --- | --- | --- | --- |
| 1 | **Security Module (Release four)** |  |  |  | 5% → 6% | 0d → 2d |
| 21 | **3.0.1 Release** |  |  |  | 8% → 16% |  |
| 23 | **Iteration I** |  |  |  | 17% → 37% |  |
| 24 | **API Changes & Bug Fixes** |  |  |  | 17% → 29% |  |
| 25 | Modify API for Negative Privileges |  | 2005-05-03 A |  | 35% → 100% | 2.05d → none |
| 28 | **UPT Changes & Bug Fixes** |  |  |  | 24% → 60% |  |
| 30 | Modify Association Screen | 2005-05-02 A | 2005-05-05 A |  | 0% → 100% | 6d → none |
| 31 | Cross Browser Compatibility |  |  |  | 5% → 20% |  |
| 36 | **Iteration II** | 2005-04-28 A |  |  | 0% → 3% |  |
| 37 | **Open Source Initiative** | 2005-04-28 A |  |  | 0% → 11% |  |
| 38 | Modify nightly build script | 2005-04-28 A |  |  | 0% → 50% |  |
| 208 | **Iteration - Message Level Security** |  | 2005-11-25 → 2005-11-24 (-1d) | 39.5d → 39d |  |  |
| 224 | **Integration Testing** |  | 2005-11-25 → 2005-11-24 (-1d) | 5.5d → 5d |  | 38.5d → 14d |
| 227 | Evaluate Results & Consolidate Documents/ Design |  | 2005-11-25 → 2005-11-24 (-1d) | 1.5d → 1d |  | 38.5d → 14d |
| 228 | Iteration Complete | 2005-11-25 → 2005-11-24 (-1d) | 2005-11-25 → 2005-11-24 (-1d) |  |  | 38.5d → 39d |

## Version 6 (saved 2005-05-13)

Note of the change: Updated by Kunal for re-scoping of trhe project

Last finish 2006-01-16 → 2006-01-23 (+7d). Complete tasks 12 → 14.

Added:

| ID | Task | Duration | Start | Finish | Predecessors | Constraint | Resources |
| --- | --- | --- | --- | --- | --- | --- | --- |
| 60 | Research/Design | 11d | 2005-05-02 | 2005-05-16 |  | start no earlier than 2005-05-02 | Vinay [75%] |
| 61 | Design Approach Review | 1d | 2005-05-17 | 2005-05-17 | 60 |  | Vinay [75%] |
| 62 | Development | 23d | 2005-05-23 | 2005-06-22 | 61 |  | Vinay [75%] |
| 63 | System Test QA | 10d | 2005-06-23 | 2005-07-06 | 62 |  | Vinay [75%] |

Removed: 37 Open Source Initiative; 39 Clean up Code base; 40 Update Junit Test cases; 43 Configurable Queries; 63 Identify & Publish Requirements for out sourced components

Changed:

| ID | Task | Start | Finish | Duration | Complete | Total float | Predecessors | Other |
| --- | --- | --- | --- | --- | --- | --- | --- | --- |
| 1 | **Security Module (Release four)** |  | 2006-01-16 → 2006-01-23 (+7d) | 207d? → 212d? | 6% → 7% | 2d → 0d |  |  |
| 21 | **3.0.1 Release** |  | 2005-06-24 → 2005-07-01 (+7d) | 45d → 50d | 16% → 30% |  |  |  |
| 23 | **Iteration I** |  |  |  | 37% → 74% | 1d → 30d |  |  |
| 24 | **API Changes & Bug Fixes** |  | 2005-05-12 → 2005-05-16 (+4d) | 9d → 11d | 29% → 72% | 1d → 0d |  |  |
| 26 | Modify API for Primitive Data Types |  | 2005-05-04 A |  | 5% → 100% | 7d → none |  |  |
| 27 | Cross Database Compatibility |  | 2005-05-12 → 2005-05-16 (+4d) | 7d → 9d | 15% → 60% | 1d → 0d |  |  |
| 28 | **UPT Changes & Bug Fixes** |  | 2005-05-11 A |  | 60% → 100% | 2d → none |  |  |
| 31 | Cross Browser Compatibility |  | 2005-05-11 A |  | 20% → 100% | 2d → none |  |  |
| 32 | Integration Test - UPT Changes | 2005-05-13 A |  |  | 0% → 30% | 1d → 20d | 24, 28 → 28 | was named Integration Test - API and UPT Changes; resources Kunal; Eric → Eric |
| 33 | Bug Fix |  |  |  |  | 3d → 32d | 24, 28 → 28 | resources Kunal; Eric → Eric |
| 34 | Test on QA |  |  |  |  | 1d → 20d |  | resources Eric; Kunal → Eric |
| 36 | **Iteration II** |  | 2005-06-24 → 2005-07-01 (+7d) | 42d → 47d |  |  |  |  |
| 38 | **API Changes & Bug Fixes** | 2005-05-20 → 2005-05-17 (-3d) | 2005-06-03 → 2005-06-02 (-1d) | 11d → 13d |  | 1d → 0d |  |  |
| 40 | **Provide new Methods for Reporting & Changes for Caching** | 2005-05-20 → 2005-05-17 (-3d) | 2005-06-03 → 2005-06-02 (-1d) | 11d → 13d |  |  | 23 → 27 |  |
| 41 | Design | 2005-05-20 → 2005-05-17 (-3d) | 2005-05-25 → 2005-05-24 (-1d) | 4d → 5d |  |  |  |  |
| 42 | Implementation | 2005-05-26 → 2005-05-25 (-1d) | 2005-06-03 → 2005-06-02 (-1d) |  |  |  |  | resources XYZ → Kunal |
| 43 | **UPT Changes & Bug Fixes** |  | 2005-06-13 → 2005-06-10 (-3d) | 13d → 12d |  | 4d → 6d |  |  |
| 44 | Modify UPT for Standard Privileges |  |  |  |  | 15d → 20d | 41 → 53 | resources Kunal → Eric |
| 45 | Provide Reporting Functionality | 2005-06-06 → 2005-06-03 (-3d) | 2005-06-13 → 2005-06-10 (-3d) |  |  |  | 40 → 42 | resources XYZ → Kunal |
| 46 | **RI Changes & Bug Fixes** | 2005-05-30 → 2005-06-13 (+14d) | 2005-06-01 → 2005-06-17 (+16d) | 3d → 5d |  | 15d → 8d |  |  |
| 47 | Modify RI to use new APIs | 2005-05-30 → 2005-06-13 (+14d) | 2005-06-01 → 2005-06-17 (+16d) | 3d → 5d |  | 15d → 8d | 44 → 45 |  |
| 48 | **Update Documentations** | 2005-06-02 → 2005-05-30 (-3d) | 2005-06-15 → 2005-06-21 (+6d) | 10d → 17d |  | 7d → 8d |  |  |
| 49 | RI Guide | 2005-06-02 → 2005-06-20 (+18d) | 2005-06-03 → 2005-06-21 (+18d) |  |  | 15d → 8d |  |  |
| 50 | Developers Guide | 2005-06-06 → 2005-05-30 (-7d) | 2005-06-07 → 2005-06-01 (-6d) | 2d → 3d |  | 13d → 20d | 42, 53 → 44 |  |
| 51 | UPT Guide Changes | 2005-06-14 → 2005-06-02 (-12d) | 2005-06-15 → 2005-06-03 (-12d) |  |  | 7d → 20d | 45 → 50 | resources XYZ → Eric |
| 52 | **Testing** |  | 2005-06-23 → 2005-06-30 (+7d) | 25d → 30d |  |  |  |  |
| 53 | Developing Test Cases |  |  |  |  |  | 23 → 35 |  |
| 54 | Integration Test - API and UPT Changes | 2005-06-14 → 2005-06-13 (-1d) | 2005-06-17 → 2005-06-21 (+4d) | 4d → 7d |  |  |  |  |
| 55 | Bug Fix | 2005-06-14 → 2005-06-13 (-1d) | 2005-06-17 → 2005-06-21 (+4d) | 4d → 7d |  | 5d → 8d |  | resources Kunal; XYZ → Kunal |
| 56 | Test on QA | 2005-06-20 → 2005-06-22 (+2d) | 2005-06-21 → 2005-06-27 (+6d) | 2d → 4d |  |  |  | resources Eric; Kunal; XYZ → Eric; Kunal |
| 57 | Stage Testing | 2005-06-22 → 2005-06-28 (+6d) | 2005-06-23 → 2005-06-30 (+7d) | 2d → 3d |  |  |  | resources Kunal; XYZ; Eric → Kunal; Eric |
| 58 | Releasing and Baselining | 2005-06-24 → 2005-07-01 (+7d) | 2005-06-24 → 2005-07-01 (+7d) |  |  |  |  |  |
| 59 | **SDK Release** |  | 2005-06-21 → 2005-07-06 (+15d) | 34d → 48d |  | 123d → 143d |  |  |
| 64 | **Elaboration** | 2005-06-27 → 2005-07-04 (+7d) | 2005-07-22 → 2005-07-29 (+7d) |  |  |  |  |  |
| 65 | **Iteration I** | 2005-06-27 → 2005-07-04 (+7d) | 2005-07-22 → 2005-07-29 (+7d) |  |  |  |  |  |
| 66 | Detailed Iteration Release Plan | 2005-06-27 → 2005-07-04 (+7d) | 2005-06-27 → 2005-07-04 (+7d) |  |  |  |  |  |
| 67 | Research Prototype Development | 2005-06-27 → 2005-07-04 (+7d) | 2005-07-22 → 2005-07-29 (+7d) |  |  |  |  |  |
| 68 | Level 1 - 2 Use Cases | 2005-06-27 → 2005-07-04 (+7d) | 2005-07-01 → 2005-07-08 (+7d) |  |  |  |  |  |
| 69 | Peer Review of Use Cases | 2005-06-27 → 2005-07-04 (+7d) | 2005-06-27 → 2005-07-04 (+7d) |  |  |  |  |  |
| 70 | Risk List Priority | 2005-06-28 → 2005-07-05 (+7d) | 2005-06-28 → 2005-07-05 (+7d) |  |  |  |  |  |
| 71 | **Finalize Requirements** | 2005-06-27 → 2005-07-04 (+7d) | 2005-06-28 → 2005-07-05 (+7d) |  |  |  |  |  |
| 72 | User Working Group Review | 2005-06-27 → 2005-07-04 (+7d) | 2005-06-27 → 2005-07-04 (+7d) |  |  |  |  |  |
| 73 | Stakeholder Sign Off | 2005-06-28 → 2005-07-05 (+7d) | 2005-06-28 → 2005-07-05 (+7d) |  |  |  |  |  |
| 74 | **Iteration II** | 2005-06-27 → 2005-07-04 (+7d) | 2005-07-21 → 2005-07-28 (+7d) |  |  |  |  |  |
| 75 | Develop Architecture Prototype / Framework | 2005-06-29 → 2005-07-06 (+7d) | 2005-07-06 → 2005-07-13 (+7d) |  |  |  |  |  |
| 76 | Software Architecture Document | 2005-07-07 → 2005-07-14 (+7d) | 2005-07-20 → 2005-07-27 (+7d) |  |  |  |  |  |
| 77 | Architecture Peer Review | 2005-06-27 → 2005-07-04 (+7d) | 2005-06-27 → 2005-07-04 (+7d) |  |  |  |  |  |
| 78 | Prioritize Risk List | 2005-07-20 → 2005-07-27 (+7d) | 2005-07-21 → 2005-07-28 (+7d) |  |  |  |  |  |
| 79 | Phase Review | 2005-07-21 → 2005-07-28 (+7d) | 2005-07-22 → 2005-07-29 (+7d) |  |  |  |  |  |
| 80 | **Construction** | 2005-07-25 → 2005-08-01 (+7d) | 2005-12-14 → 2005-12-21 (+7d) |  |  |  |  |  |
| 81 | **Iteration - SSO** | 2005-07-25 → 2005-08-01 (+7d) | 2005-10-10 → 2005-10-17 (+7d) |  |  |  |  |  |
| 82 | Detailed Iteration Plan | 2005-07-25 → 2005-08-01 (+7d) | 2005-07-25 → 2005-08-01 (+7d) |  |  |  |  |  |
| 83 | **Design** | 2005-07-26 → 2005-08-02 (+7d) | 2005-08-05 → 2005-08-12 (+7d) |  |  |  |  |  |
| 84 | Level 3 - 4 Use Cases | 2005-07-26 → 2005-08-02 (+7d) | 2005-07-28 → 2005-08-04 (+7d) |  |  |  |  |  |
| 85 | Use Case Model | 2005-07-29 → 2005-08-05 (+7d) | 2005-07-29 → 2005-08-05 (+7d) |  |  |  |  |  |
| 86 | UML Sequence Diagram | 2005-08-01 → 2005-08-08 (+7d) | 2005-08-01 → 2005-08-08 (+7d) |  |  | 122d → 97d |  |  |
| 87 | UML Activity Diagram | 2005-08-01 → 2005-08-08 (+7d) | 2005-08-01 → 2005-08-08 (+7d) |  |  |  |  |  |
| 88 | UML Class Diagram | 2005-08-02 → 2005-08-09 (+7d) | 2005-08-04 → 2005-08-11 (+7d) |  |  |  |  |  |
| 89 | Design Review | 2005-08-05 → 2005-08-12 (+7d) | 2005-08-05 → 2005-08-12 (+7d) |  |  |  |  |  |
| 90 | Test Case Development | 2005-08-01 → 2005-08-08 (+7d) | 2005-08-05 → 2005-08-12 (+7d) |  |  | 118d → 93d |  |  |
| 91 | **Implementation** | 2005-08-08 → 2005-08-15 (+7d) | 2005-10-03 → 2005-10-10 (+7d) |  |  | 72d → 47d |  |  |
| 92 | Environment Setup | 2005-08-08 → 2005-08-15 (+7d) | 2005-08-11 → 2005-08-18 (+7d) |  |  | 72d → 47d |  |  |
| 93 | Junit Test Development | 2005-08-12 → 2005-08-19 (+7d) | 2005-08-17 → 2005-08-24 (+7d) |  |  | 72d → 47d |  |  |
| 94 | Code Development + Unit Testing | 2005-08-18 → 2005-08-25 (+7d) | 2005-10-03 → 2005-10-10 (+7d) |  |  | 72d → 47d |  |  |
| 95 | Code Reviews | 2005-09-30 → 2005-10-07 (+7d) | 2005-10-03 → 2005-10-10 (+7d) |  |  | 72d → 47d |  |  |
| 96 | Promote to QA | 2005-10-03 → 2005-10-10 (+7d) | 2005-10-03 → 2005-10-10 (+7d) |  |  | 72d → 47d |  |  |
| 97 | **Integration Testing** | 2005-10-04 → 2005-10-11 (+7d) | 2005-10-10 → 2005-10-17 (+7d) |  |  | 72d → 47d |  |  |
| 98 | QA Testing | 2005-10-04 → 2005-10-11 (+7d) | 2005-10-07 → 2005-10-14 (+7d) |  |  | 73d → 48d |  |  |
| 99 | Bug Fixes | 2005-10-04 → 2005-10-11 (+7d) | 2005-10-07 → 2005-10-14 (+7d) |  |  | 72d → 47d |  |  |
| 100 | Evaluate Results & Consolidate Documents/ Design | 2005-10-10 → 2005-10-17 (+7d) | 2005-10-10 → 2005-10-17 (+7d) |  |  | 72d → 47d |  |  |

| ID | Task | Start | Finish | Total float |
| --- | --- | --- | --- | --- |
| 101 | Iteration Complete | 2005-10-10 → 2005-10-17 (+7d) | 2005-10-10 → 2005-10-17 (+7d) | 72d → 47d |
| 102 | **Iteration - Auth Policy Caching** | 2005-07-25 → 2005-08-01 (+7d) | 2005-09-23 → 2005-09-30 (+7d) | 18d → 26d |
| 103 | Detailed Iteration Plan | 2005-07-25 → 2005-08-01 (+7d) | 2005-07-25 → 2005-08-01 (+7d) | 18d → 26d |
| 104 | **Design** | 2005-07-26 → 2005-08-02 (+7d) | 2005-08-05 → 2005-08-12 (+7d) | 18d → 26d |
| 105 | Level 3 - 4 Use Cases | 2005-07-26 → 2005-08-02 (+7d) | 2005-07-28 → 2005-08-04 (+7d) | 18d → 26d |
| 106 | Use Case Model | 2005-07-29 → 2005-08-05 (+7d) | 2005-07-29 → 2005-08-05 (+7d) | 18d → 26d |
| 107 | UML Sequence Diagram | 2005-08-01 → 2005-08-08 (+7d) | 2005-08-01 → 2005-08-08 (+7d) | 64d → 26d |
| 108 | UML Activity Diagram | 2005-08-01 → 2005-08-08 (+7d) | 2005-08-01 → 2005-08-08 (+7d) | 39d → 47d |
| 109 | UML Class Diagram | 2005-08-02 → 2005-08-09 (+7d) | 2005-08-04 → 2005-08-11 (+7d) | 39d → 47d |
| 110 | Design Review | 2005-08-05 → 2005-08-12 (+7d) | 2005-08-05 → 2005-08-12 (+7d) | 39d → 47d |
| 111 | Test Case Development | 2005-08-01 → 2005-08-08 (+7d) | 2005-08-05 → 2005-08-12 (+7d) | 81d → 93d |
| 112 | **Implementation** | 2005-08-26 → 2005-09-02 (+7d) | 2005-09-19 → 2005-09-26 (+7d) |  |
| 113 | Environment Setup | 2005-08-26 → 2005-09-02 (+7d) | 2005-08-29 → 2005-09-05 (+7d) |  |
| 114 | Junit Test Development | 2005-08-30 → 2005-09-06 (+7d) | 2005-08-31 → 2005-09-07 (+7d) |  |
| 115 | Code Development + Unit Testing | 2005-09-01 → 2005-09-08 (+7d) | 2005-09-19 → 2005-09-26 (+7d) |  |
| 116 | Code Reviews | 2005-09-16 → 2005-09-23 (+7d) | 2005-09-19 → 2005-09-26 (+7d) |  |
| 117 | Promote to QA | 2005-09-19 → 2005-09-26 (+7d) | 2005-09-19 → 2005-09-26 (+7d) |  |
| 118 | **Integration Testing** | 2005-09-20 → 2005-09-27 (+7d) | 2005-09-23 → 2005-09-30 (+7d) |  |
| 119 | QA Testing | 2005-09-20 → 2005-09-27 (+7d) | 2005-09-22 → 2005-09-29 (+7d) | 47d → 59d |
| 120 | Bug Fixes | 2005-09-20 → 2005-09-27 (+7d) | 2005-09-22 → 2005-09-29 (+7d) |  |
| 121 | Evaluate Results & Consolidate Documents/ Design | 2005-09-23 → 2005-09-30 (+7d) | 2005-09-23 → 2005-09-30 (+7d) | 46d → 58d |
| 122 | Iteration Complete | 2005-09-23 → 2005-09-30 (+7d) | 2005-09-23 → 2005-09-30 (+7d) | 46d → 58d |
| 123 | **Iteration - Authentication Web Service** | 2005-07-25 → 2005-08-01 (+7d) | 2005-08-26 → 2005-09-02 (+7d) |  |
| 124 | Detailed Iteration Plan | 2005-07-25 → 2005-08-01 (+7d) | 2005-07-25 → 2005-08-01 (+7d) |  |
| 125 | **Design** | 2005-07-26 → 2005-08-02 (+7d) | 2005-08-04 → 2005-08-11 (+7d) |  |
| 126 | Level 3 - 4 Use Cases | 2005-07-26 → 2005-08-02 (+7d) | 2005-07-27 → 2005-08-03 (+7d) |  |
| 127 | Use Case Model | 2005-07-28 → 2005-08-04 (+7d) | 2005-07-28 → 2005-08-04 (+7d) |  |
| 128 | UML Sequence Diagram | 2005-07-29 → 2005-08-05 (+7d) | 2005-07-29 → 2005-08-05 (+7d) |  |
| 129 | UML Activity Diagram | 2005-07-29 → 2005-08-05 (+7d) | 2005-07-29 → 2005-08-05 (+7d) | 61d → 95d |
| 130 | UML Class Diagram | 2005-08-01 → 2005-08-08 (+7d) | 2005-08-02 → 2005-08-09 (+7d) | 61d → 95d |
| 131 | Design Review | 2005-08-03 → 2005-08-10 (+7d) | 2005-08-03 → 2005-08-10 (+7d) | 61d → 95d |
| 132 | Test Case Development | 2005-07-29 → 2005-08-05 (+7d) | 2005-08-04 → 2005-08-11 (+7d) | 60d → 94d |
| 133 | **Implementation** | 2005-08-01 → 2005-08-08 (+7d) | 2005-08-22 → 2005-08-29 (+7d) |  |
| 134 | Environment Setup | 2005-08-01 → 2005-08-08 (+7d) | 2005-08-02 → 2005-08-09 (+7d) |  |
| 135 | Junit Test Development | 2005-08-03 → 2005-08-10 (+7d) | 2005-08-04 → 2005-08-11 (+7d) |  |
| 136 | Code Development + Unit Testing | 2005-08-05 → 2005-08-12 (+7d) | 2005-08-22 → 2005-08-29 (+7d) |  |
| 137 | Code Reviews | 2005-08-19 → 2005-08-26 (+7d) | 2005-08-22 → 2005-08-29 (+7d) |  |
| 138 | Promote to QA | 2005-08-22 → 2005-08-29 (+7d) | 2005-08-22 → 2005-08-29 (+7d) |  |
| 139 | **Integration Testing** | 2005-08-23 → 2005-08-30 (+7d) | 2005-08-26 → 2005-09-02 (+7d) |  |
| 140 | QA Testing | 2005-08-23 → 2005-08-30 (+7d) | 2005-08-25 → 2005-09-01 (+7d) | 45d → 79d |
| 141 | Bug Fixes | 2005-08-23 → 2005-08-30 (+7d) | 2005-08-25 → 2005-09-01 (+7d) |  |
| 142 | Evaluate Results & Consolidate Documents/ Design | 2005-08-26 → 2005-09-02 (+7d) | 2005-08-26 → 2005-09-02 (+7d) | 44d → 78d |
| 143 | Iteration Complete | 2005-08-26 → 2005-09-02 (+7d) | 2005-08-26 → 2005-09-02 (+7d) | 44d → 78d |
| 144 | **Iteration - Policy Adapters** | 2005-08-08 → 2005-08-15 (+7d) | 2005-10-03 → 2005-10-10 (+7d) |  |
| 145 | Detailed Iteration Plan | 2005-08-08 → 2005-08-15 (+7d) | 2005-08-09 → 2005-08-16 (+7d) |  |
| 146 | **Design** | 2005-08-10 → 2005-08-17 (+7d) | 2005-08-22 → 2005-08-29 (+7d) |  |
| 147 | Level 3 - 4 Use Cases | 2005-08-10 → 2005-08-17 (+7d) | 2005-08-12 → 2005-08-19 (+7d) |  |
| 148 | Use Case Model | 2005-08-15 → 2005-08-22 (+7d) | 2005-08-15 → 2005-08-22 (+7d) |  |
| 149 | UML Sequence Diagram | 2005-08-16 → 2005-08-23 (+7d) | 2005-08-16 → 2005-08-23 (+7d) |  |
| 150 | UML Activity Diagram | 2005-08-16 → 2005-08-23 (+7d) | 2005-08-16 → 2005-08-23 (+7d) | 17d → 82d |
| 151 | UML Class Diagram | 2005-08-17 → 2005-08-24 (+7d) | 2005-08-19 → 2005-08-26 (+7d) | 17d → 82d |
| 152 | Design Review | 2005-08-22 → 2005-08-29 (+7d) | 2005-08-22 → 2005-08-29 (+7d) | 17d → 82d |
| 153 | Test Case Development | 2005-08-16 → 2005-08-23 (+7d) | 2005-08-22 → 2005-08-29 (+7d) | 48d → 82d |
| 154 | **Implementation** | 2005-08-17 → 2005-08-24 (+7d) | 2005-09-26 → 2005-10-03 (+7d) |  |
| 155 | Environment Setup | 2005-08-17 → 2005-08-24 (+7d) | 2005-08-18 → 2005-08-25 (+7d) |  |
| 156 | Junit Test Development | 2005-08-19 → 2005-08-26 (+7d) | 2005-08-24 → 2005-08-31 (+7d) |  |
| 157 | Code Development + Unit Testing | 2005-08-25 → 2005-09-01 (+7d) | 2005-09-26 → 2005-10-03 (+7d) |  |
| 158 | Code Reviews | 2005-09-23 → 2005-09-30 (+7d) | 2005-09-26 → 2005-10-03 (+7d) |  |
| 159 | Promote to QA | 2005-09-26 → 2005-10-03 (+7d) | 2005-09-26 → 2005-10-03 (+7d) |  |
| 160 | **Integration Testing** | 2005-09-27 → 2005-10-04 (+7d) | 2005-10-03 → 2005-10-10 (+7d) |  |
| 161 | QA Testing | 2005-09-27 → 2005-10-04 (+7d) | 2005-09-30 → 2005-10-07 (+7d) | 19d → 53d |
| 162 | Bug Fixes | 2005-09-27 → 2005-10-04 (+7d) | 2005-09-30 → 2005-10-07 (+7d) |  |
| 163 | Evaluate Results & Consolidate Documents/ Design | 2005-10-03 → 2005-10-10 (+7d) | 2005-10-03 → 2005-10-10 (+7d) | 77d → 52d |
| 164 | Iteration Complete | 2005-10-03 → 2005-10-10 (+7d) | 2005-10-03 → 2005-10-10 (+7d) | 77d → 52d |
| 165 | **Iteration - UPT Enhancements** | 2005-09-23 → 2005-09-30 (+7d) | 2005-12-02 → 2005-12-09 (+7d) |  |
| 166 | Detailed Iteration Plan | 2005-09-23 → 2005-09-30 (+7d) | 2005-09-23 → 2005-09-30 (+7d) |  |
| 167 | **Design** | 2005-09-26 → 2005-10-03 (+7d) | 2005-10-07 → 2005-10-14 (+7d) |  |
| 168 | Level 3 - 4 Use Cases | 2005-09-26 → 2005-10-03 (+7d) | 2005-09-28 → 2005-10-05 (+7d) |  |
| 169 | Use Case Model | 2005-09-29 → 2005-10-06 (+7d) | 2005-09-29 → 2005-10-06 (+7d) |  |
| 170 | UML Sequence Diagram | 2005-09-30 → 2005-10-07 (+7d) | 2005-09-30 → 2005-10-07 (+7d) |  |

| ID | Task | Start | Finish | Total float |
| --- | --- | --- | --- | --- |
| 171 | UML Activity Diagram | 2005-09-30 → 2005-10-07 (+7d) | 2005-10-04 → 2005-10-11 (+7d) | 4d → 48d |
| 172 | UML Class Diagram | 2005-10-05 → 2005-10-12 (+7d) | 2005-10-06 → 2005-10-13 (+7d) | 4d → 48d |
| 173 | Design Review | 2005-10-07 → 2005-10-14 (+7d) | 2005-10-07 → 2005-10-14 (+7d) | 4d → 48d |
| 174 | Test Case Development | 2005-09-30 → 2005-10-07 (+7d) | 2005-10-06 → 2005-10-13 (+7d) | 41d → 49d |
| 175 | **Implementation** | 2005-10-03 → 2005-10-10 (+7d) | 2005-11-23 → 2005-11-30 (+7d) |  |
| 176 | Environment Setup | 2005-10-03 → 2005-10-10 (+7d) | 2005-10-04 → 2005-10-11 (+7d) |  |
| 177 | Junit Test Development | 2005-10-05 → 2005-10-12 (+7d) | 2005-10-07 → 2005-10-14 (+7d) |  |
| 178 | Code Development + Unit Testing | 2005-10-10 → 2005-10-17 (+7d) | 2005-11-23 → 2005-11-30 (+7d) |  |
| 179 | Code Reviews | 2005-11-22 → 2005-11-29 (+7d) | 2005-11-23 → 2005-11-30 (+7d) |  |
| 180 | Promote to QA | 2005-11-23 → 2005-11-30 (+7d) | 2005-11-23 → 2005-11-30 (+7d) |  |
| 181 | **Integration Testing** | 2005-11-24 → 2005-12-01 (+7d) | 2005-12-02 → 2005-12-09 (+7d) |  |
| 182 | QA Testing | 2005-11-24 → 2005-12-01 (+7d) | 2005-12-01 → 2005-12-08 (+7d) |  |
| 183 | Bug Fixes | 2005-11-24 → 2005-12-01 (+7d) | 2005-12-01 → 2005-12-08 (+7d) |  |
| 184 | Evaluate Results & Consolidate Documents/ Design | 2005-12-02 → 2005-12-09 (+7d) | 2005-12-02 → 2005-12-09 (+7d) |  |
| 185 | Iteration Complete | 2005-12-02 → 2005-12-09 (+7d) | 2005-12-02 → 2005-12-09 (+7d) |  |
| 186 | **Iteration - AOP Integration** | 2005-10-17 → 2005-10-24 (+7d) | 2005-12-14 → 2005-12-21 (+7d) |  |
| 187 | Detailed Iteration Plan | 2005-10-17 → 2005-10-24 (+7d) | 2005-10-18 → 2005-10-25 (+7d) |  |
| 188 | **Design** | 2005-10-19 → 2005-10-26 (+7d) | 2005-11-01 → 2005-11-08 (+7d) |  |
| 189 | Level 3 - 4 Use Cases | 2005-10-19 → 2005-10-26 (+7d) | 2005-10-21 → 2005-10-28 (+7d) |  |
| 190 | Use Case Model | 2005-10-24 → 2005-10-31 (+7d) | 2005-10-24 → 2005-10-31 (+7d) |  |
| 191 | UML Sequence Diagram | 2005-10-25 → 2005-11-01 (+7d) | 2005-10-25 → 2005-11-01 (+7d) |  |
| 192 | UML Activity Diagram | 2005-10-25 → 2005-11-01 (+7d) | 2005-10-25 → 2005-11-01 (+7d) | 56d → 31d |
| 193 | UML Class Diagram | 2005-10-26 → 2005-11-02 (+7d) | 2005-10-31 → 2005-11-07 (+7d) | 56d → 31d |
| 194 | Design Review | 2005-11-01 → 2005-11-08 (+7d) | 2005-11-01 → 2005-11-08 (+7d) | 56d → 31d |
| 195 | Test Case Development | 2005-10-25 → 2005-11-01 (+7d) | 2005-10-31 → 2005-11-07 (+7d) | 57d → 32d |
| 196 | **Implementation** | 2005-10-26 → 2005-11-02 (+7d) | 2005-12-05 → 2005-12-12 (+7d) |  |
| 197 | Environment Setup | 2005-10-26 → 2005-11-02 (+7d) | 2005-10-27 → 2005-11-03 (+7d) |  |
| 198 | Junit Test Development | 2005-10-28 → 2005-11-04 (+7d) | 2005-11-02 → 2005-11-09 (+7d) |  |
| 199 | Code Development + Unit Testing | 2005-11-03 → 2005-11-10 (+7d) | 2005-12-05 → 2005-12-12 (+7d) |  |
| 200 | Code Reviews | 2005-12-02 → 2005-12-09 (+7d) | 2005-12-05 → 2005-12-12 (+7d) |  |
| 201 | Promote to QA | 2005-12-05 → 2005-12-12 (+7d) | 2005-12-05 → 2005-12-12 (+7d) |  |
| 202 | **Integration Testing** | 2005-12-06 → 2005-12-13 (+7d) | 2005-12-14 → 2005-12-21 (+7d) |  |
| 203 | QA Testing | 2005-12-06 → 2005-12-13 (+7d) | 2005-12-13 → 2005-12-20 (+7d) | 26d → 1d |
| 204 | Bug Fixes | 2005-12-06 → 2005-12-13 (+7d) | 2005-12-13 → 2005-12-20 (+7d) |  |
| 205 | Evaluate Results & Consolidate Documents/ Design | 2005-12-14 → 2005-12-21 (+7d) | 2005-12-14 → 2005-12-21 (+7d) |  |
| 206 | Iteration Complete | 2005-12-14 → 2005-12-21 (+7d) | 2005-12-14 → 2005-12-21 (+7d) |  |
| 207 | **Iteration - Message Level Security** | 2005-10-03 → 2005-10-10 (+7d) | 2005-11-24 → 2005-12-01 (+7d) |  |
| 208 | Detailed Iteration Plan | 2005-10-03 → 2005-10-10 (+7d) | 2005-10-03 → 2005-10-10 (+7d) |  |
| 209 | **Design** | 2005-10-04 → 2005-10-11 (+7d) | 2005-10-14 → 2005-10-21 (+7d) |  |
| 210 | Level 3 - 4 Use Cases | 2005-10-04 → 2005-10-11 (+7d) | 2005-10-06 → 2005-10-13 (+7d) |  |
| 211 | Use Case Model | 2005-10-07 → 2005-10-14 (+7d) | 2005-10-07 → 2005-10-14 (+7d) |  |
| 212 | UML Sequence Diagram | 2005-10-10 → 2005-10-17 (+7d) | 2005-10-10 → 2005-10-17 (+7d) | 38.5d → 14d |
| 213 | UML Activity Diagram | 2005-10-10 → 2005-10-17 (+7d) | 2005-10-10 → 2005-10-17 (+7d) |  |
| 214 | UML Class Diagram | 2005-10-11 → 2005-10-18 (+7d) | 2005-10-13 → 2005-10-20 (+7d) |  |
| 215 | Design Review | 2005-10-14 → 2005-10-21 (+7d) | 2005-10-14 → 2005-10-21 (+7d) |  |
| 216 | Test Case Development | 2005-10-10 → 2005-10-17 (+7d) | 2005-10-14 → 2005-10-21 (+7d) | 68d → 43d |
| 217 | **Implementation** | 2005-10-11 → 2005-10-18 (+7d) | 2005-11-17 → 2005-11-24 (+7d) | 38.5d → 14d |
| 218 | Environment Setup | 2005-10-11 → 2005-10-18 (+7d) | 2005-10-12 → 2005-10-19 (+7d) | 38.5d → 14d |
| 219 | Junit Test Development | 2005-10-13 → 2005-10-20 (+7d) | 2005-10-17 → 2005-10-24 (+7d) | 38.5d → 14d |
| 220 | Code Development + Unit Testing | 2005-10-18 → 2005-10-25 (+7d) | 2005-11-17 → 2005-11-24 (+7d) | 38.5d → 14d |
| 221 | Code Reviews | 2005-11-16 → 2005-11-23 (+7d) | 2005-11-17 → 2005-11-24 (+7d) | 38.5d → 14d |
| 222 | Promote to QA | 2005-11-17 → 2005-11-24 (+7d) | 2005-11-17 → 2005-11-24 (+7d) | 38.5d → 14d |
| 223 | **Integration Testing** | 2005-11-18 → 2005-11-25 (+7d) | 2005-11-24 → 2005-12-01 (+7d) |  |
| 224 | QA Testing | 2005-11-18 → 2005-11-25 (+7d) | 2005-11-23 → 2005-11-30 (+7d) | 40d → 15d |
| 225 | Bug Fixes | 2005-11-18 → 2005-11-25 (+7d) | 2005-11-23 → 2005-11-30 (+7d) | 38.5d → 14d |
| 226 | Evaluate Results & Consolidate Documents/ Design | 2005-11-24 → 2005-12-01 (+7d) | 2005-11-24 → 2005-12-01 (+7d) |  |
| 227 | Iteration Complete | 2005-11-24 → 2005-12-01 (+7d) | 2005-11-24 → 2005-12-01 (+7d) | 39d → 14d |
| 228 | **Transition** | 2005-12-14 → 2005-12-21 (+7d) | 2006-01-16 → 2006-01-23 (+7d) |  |
| 229 | **Iteration I** | 2005-12-14 → 2005-12-21 (+7d) | 2006-01-09 → 2006-01-16 (+7d) |  |
| 230 | **QA Testing** | 2005-12-15 → 2005-12-22 (+7d) | 2005-12-30 → 2006-01-06 (+7d) |  |
| 231 | Setup of Environment | 2005-12-15 → 2005-12-22 (+7d) | 2005-12-16 → 2005-12-23 (+7d) |  |
| 232 | Regression Testing | 2005-12-19 → 2005-12-26 (+7d) | 2005-12-30 → 2006-01-06 (+7d) |  |
| 233 | Bug Fixes | 2005-12-15 → 2005-12-22 (+7d) | 2005-12-19 → 2005-12-26 (+7d) |  |
| 234 | **Documentation** | 2005-12-15 → 2005-12-22 (+7d) | 2006-01-09 → 2006-01-16 (+7d) |  |
| 235 | Application Developers Guide Document | 2005-12-15 → 2005-12-22 (+7d) | 2006-01-04 → 2006-01-11 (+7d) |  |
| 236 | Java Docs | 2005-12-15 → 2005-12-22 (+7d) | 2005-12-20 → 2005-12-27 (+7d) |  |
| 237 | UPT User Guide Updation | 2005-12-15 → 2005-12-22 (+7d) | 2005-12-28 → 2006-01-04 (+7d) |  |
| 238 | caCore Technical Guide Modifications | 2006-01-05 → 2006-01-12 (+7d) | 2006-01-06 → 2006-01-13 (+7d) |  |
| 239 | Release Notes | 2006-01-09 → 2006-01-16 (+7d) | 2006-01-09 → 2006-01-16 (+7d) |  |
| 240 | Iteration I Complete | 2005-12-14 → 2005-12-21 (+7d) | 2005-12-14 → 2005-12-21 (+7d) |  |

| ID | Task | Start | Finish |
| --- | --- | --- | --- |
| 241 | **Iteration II** | 2006-01-09 → 2006-01-16 (+7d) | 2006-01-13 → 2006-01-20 (+7d) |
| 242 | **Staging Environment Testing** | 2006-01-10 → 2006-01-17 (+7d) | 2006-01-13 → 2006-01-20 (+7d) |
| 243 | Setup of Environment | 2006-01-10 → 2006-01-17 (+7d) | 2006-01-10 → 2006-01-17 (+7d) |
| 244 | Regression Testing | 2006-01-11 → 2006-01-18 (+7d) | 2006-01-13 → 2006-01-20 (+7d) |
| 245 | Bug Fixes | 2006-01-10 → 2006-01-17 (+7d) | 2006-01-10 → 2006-01-17 (+7d) |
| 246 | Iteration II Complete | 2006-01-09 → 2006-01-16 (+7d) | 2006-01-09 → 2006-01-16 (+7d) |
| 247 | **Release** | 2006-01-16 → 2006-01-23 (+7d) | 2006-01-16 → 2006-01-23 (+7d) |
| 248 | Tag into the CVS & Release | 2006-01-16 → 2006-01-23 (+7d) | 2006-01-16 → 2006-01-23 (+7d) |

## Version 7 (saved 2005-05-17)

Note of the change: Effort Updated by Charles

Last finish stays 2006-01-23. Complete tasks 14 → 15.

Changed:

| ID | Task | Start | Finish | Duration | Complete | Total float | Other |
| --- | --- | --- | --- | --- | --- | --- | --- |
| 1 | **Security Module (Release four)** |  |  |  | 7% → 9% |  |  |
| 21 | **3.0.1 Release** |  |  |  | 30% → 36% |  |  |
| 23 | **Iteration I** |  |  |  | 74% → 80% |  |  |
| 24 | **API Changes & Bug Fixes** |  | 2005-05-16 → 2005-05-19 (+3d) | 11d → 14d | 72% → 70% |  |  |
| 27 | Cross Database Compatibility |  | 2005-05-16 → 2005-05-19 (+3d) | 9d → 12d |  |  |  |
| 32 | Integration Test - UPT Changes |  |  |  | 30% → 90% |  |  |
| 33 | Bug Fix | 2005-05-17 A |  |  | 0% → 90% |  |  |
| 36 | **Iteration II** |  |  |  | 3% → 6% |  |  |
| 37 | Modify nightly build script |  |  |  | 50% → 95% |  | resources Brian [25%] → Brian [25%]; Kunal |
| 38 | **API Changes & Bug Fixes** | 2005-05-17 → 2005-05-20 (+3d) |  | 13d → 10d |  |  |  |
| 40 | **Provide new Methods for Reporting & Changes for Caching** | 2005-05-17 → 2005-05-20 (+3d) |  | 13d → 10d |  |  |  |
| 41 | Design | 2005-05-17 → 2005-05-20 (+3d) |  | 5d → 3d |  |  |  |
| 59 | **SDK Release** | 2005-05-02 A |  |  | 0% → 24% |  |  |
| 60 | Research/Design | 2005-05-02 A | 2005-05-16 A |  | 0% → 100% | 146d → none |  |

## Version 8 (saved 2005-05-23)

Note of the change: Updated by charles

Last finish stays 2006-01-23. Complete tasks 15 → 20.

Changed:

| ID | Task | Start | Finish | Complete | Total float |
| --- | --- | --- | --- | --- | --- |
| 1 | **Security Module (Release four)** |  |  | 9% → 10% |  |
| 21 | **3.0.1 Release** |  |  | 36% → 47% |  |
| 23 | **Iteration I** |  | 2005-05-19 A | 80% → 100% | 30d → none |
| 24 | **API Changes & Bug Fixes** |  | 2005-05-19 A | 70% → 100% | 0d → none |
| 27 | Cross Database Compatibility |  | 2005-05-19 A | 60% → 100% | 0d → none |
| 32 | Integration Test - UPT Changes |  | 2005-05-17 A | 90% → 100% | 20d → none |
| 33 | Bug Fix |  | 2005-05-17 A | 90% → 100% | 32d → none |
| 34 | Test on QA | 2005-05-18 A | 2005-05-18 A | 0% → 100% | 20d → none |
| 35 | Release for FCCC only UPT.war | 2005-05-19 A | 2005-05-19 A | 0% → 100% | 20d → none |
| 36 | **Iteration II** |  |  | 6% → 13% |  |
| 38 | **API Changes & Bug Fixes** | 2005-05-20 A |  | 0% → 25% | 0d → 21d |
| 39 | Standardize Privileges | 2005-05-23 A |  | 0% → 80% |  |
| 40 | **Provide new Methods for Reporting & Changes for Caching** | 2005-05-20 A |  | 0% → 20% |  |
| 41 | Design | 2005-05-20 A |  | 0% → 55% | 0d → 0.35d |
| 42 | Implementation | 2005-05-25 A |  | 0% → 5% |  |
| 52 | **Testing** | 2005-05-20 A |  | 0% → 6% |  |
| 53 | Developing Test Cases | 2005-05-20 A |  | 0% → 40% |  |

## Version 9 (saved 2005-05-31)

Note of the change: Updated by Charles

Last finish stays 2006-01-23. Complete tasks 20 → 23.

Changed:

| ID | Task | Start | Finish | Complete | Total float | Other |
| --- | --- | --- | --- | --- | --- | --- |
| 1 | **Security Module (Release four)** |  |  | 10% → 12% |  |  |
| 21 | **3.0.1 Release** |  |  | 47% → 57% |  |  |
| 36 | **Iteration II** |  |  | 13% → 29% |  |  |
| 38 | **API Changes & Bug Fixes** |  |  | 25% → 71% |  |  |
| 39 | Standardize Privileges and SWG Meeting |  |  | 80% → 90% |  | was named Standardize Privileges |
| 40 | **Provide new Methods for Reporting & Changes for Caching** |  |  | 20% → 69% |  |  |
| 41 | Design |  |  | 55% → 90% | 0.35d → 4.2d |  |
| 42 | Implementation |  |  | 5% → 60% |  |  |
| 43 | **UPT Changes & Bug Fixes** | 2005-05-26 A |  | 0% → 25% | 6d → 0d |  |
| 44 | Modify UPT for Standard Privileges | 2005-05-26 A | 2005-05-27 A | 0% → 100% | 20d → none |  |
| 52 | **Testing** |  |  | 6% → 16% |  |  |
| 53 | Developing Test Cases |  | 2005-05-25 A | 40% → 100% | 20d → none |  |
| 59 | **SDK Release** |  |  | 24% → 32% |  |  |
| 61 | Design Approach Review | 2005-05-17 A | 2005-05-17 A | 0% → 100% | 146d → none |  |
| 62 | Development | 2005-05-23 A |  | 0% → 10% |  |  |
