# NCICBSecurity_3_0_1

How a schedule from MS Project changed from version to version. A marks actual dates.

## Version 1 (saved 2005-06-01)

Note of the change: 3.0.1 and sdk version to be released on the extranet

| ID | WBS | Task | Duration | Start | Finish | Predecessors | Complete | Total float | Constraint |
| --- | --- | --- | --- | --- | --- | --- | --- | --- | --- |
| 1 | 1 | **Security Module (Release four)** | 174d? | 2005-04-01 A | 2005-11-30 |  | 28% | 0d |  |
| 2 |  | Application Integration and Support | 174d? | 2005-04-01 | 2005-11-30 |  |  | 0d | start no earlier than 2005-04-01 |
| 3 | 1.2 | **Inception** | 34d? | 2005-04-01 A | 2005-05-18 |  | 60% | 140d |  |
| 4 |  | Phase 3 Evaluation | 5.25d | 2005-04-04 A | 2005-04-11 |  | 67% | 205.75d | start no earlier than 2004-08-02 |
| 5 |  | RI Fixing | 3d | 2005-04-11 A | 2005-04-14 A | 4 | 100% |  |  |
| 6 |  | RI documentation | 7d | 2005-04-01 A | 2005-04-11 A |  | 100% |  | finish no earlier than 2005-04-11 |
| 7 |  | Ri Testing and release | 4d | 2005-04-12 A | 2005-04-15 A | 6 | 100% |  | finish no earlier than 2005-04-15 |
| 8 |  | caBIG Annual Meeting | 2d | 2005-04-12 A | 2005-04-13 A | 7 | 100% |  |  |
| 9 |  | Research & Analysis | 5d | 2005-04-14 | 2005-04-20 | 8 |  | 193d |  |
| 10 |  | CM configuration | 2d | 2005-04-21 A | 2005-04-22 A | 9 | 100% |  | start no earlier than 2005-04-20 |
| 11 |  | Overall Scope and Vision Document | 5d | 2005-04-11 A | 2005-04-21 A |  | 100% |  | finish no earlier than 2005-04-21 |
| 12 |  | SDK Research & Analysis | 2d | 2005-04-26 A | 2005-04-27 A |  | 100% |  | start no earlier than 2005-04-26 |
| 13 |  | SDK Scope/Vision Document | 2d | 2005-04-27 A | 2005-04-28 A | 12FS-1d | 100% |  | start no earlier than 2005-04-27 |
| 14 |  | Scope Vision Review & Discussion | 1d | 2005-04-29 | 2005-04-29 | 13 |  | 143.47d |  |
| 15 |  | Supplentary Specifications | 3d | 2005-05-04 | 2005-05-06 | 25 |  | 173d | start no earlier than 2004-09-01 |
| 16 |  | Review Supplementart Specs | 1d | 2005-05-09 | 2005-05-09 | 15 |  | 180d |  |
| 17 |  | SWG Meeting | 0.75d? | 2005-05-05 | 2005-05-05 |  |  | 182.25d | start no earlier than 2005-05-05 |
| 18 |  | Fuctional Specifications | 7d | 2005-05-09 | 2005-05-17 | 15 |  | 173d |  |
| 19 |  | Identify Risk List | 0.5d | 2005-05-17 | 2005-05-18 | 18 |  | 173d |  |
| 20 |  | Update Detail task plan | 0.5d | 2005-05-18 | 2005-05-18 | 19 |  | 173d | start no earlier than 2005-04-11 |
| 21 | 1.3 | **3.0.1 Release** | 50d | 2005-04-25 A | 2005-07-01 |  | 57% | 108d |  |
| 22 |  | Scope Document | 3d | 2005-04-25 A | 2005-04-27 A |  | 100% |  | start no earlier than 2005-04-22 |
| 23 | 1.3.2 | **Iteration I** | 16d | 2005-04-28 A | 2005-05-19 A | 22 | 100% |  |  |
| 24 | 1.3.2.1 | **API Changes & Bug Fixes** | 14d | 2005-05-02 A | 2005-05-19 A |  | 100% |  |  |
| 25 |  | Modify API for Negative Privileges | 2d | 2005-05-02 A | 2005-05-03 A | 14 | 100% |  | start no earlier than 2005-05-02 |
| 26 |  | Modify API for Primitive Data Types | 2d | 2005-05-03 A | 2005-05-04 A | 25FS-1d | 100% |  |  |
| 27 |  | Cross Database Compatibility | 12d | 2005-05-04 A | 2005-05-19 A | 25 | 100% |  |  |
| 28 | 1.3.2.2 | **UPT Changes & Bug Fixes** | 10d | 2005-04-28 A | 2005-05-11 A |  | 100% |  |  |
| 29 |  | UI Bug Fixes | 3d | 2005-04-28 A | 2005-05-02 A | 22 | 100% |  |  |
| 30 |  | Modify Association Screen | 4d | 2005-05-02 A | 2005-05-05 A | 29FS-1d | 100% |  |  |
| 31 |  | Cross Browser Compatibility | 7d | 2005-05-03 A | 2005-05-11 A | 29 | 100% |  |  |
| 32 |  | Integration Test - UPT Changes | 3d | 2005-05-13 A | 2005-05-17 A | 28 | 100% |  |  |
| 33 |  | Bug Fix | 1d | 2005-05-17 A | 2005-05-17 A | 28 | 100% |  | finish no earlier than 2005-05-17 |
| 34 |  | Test on QA | 1d | 2005-05-18 A | 2005-05-18 A | 32 | 100% |  |  |
| 35 |  | Release for FCCC only UPT.war | 1d | 2005-05-19 A | 2005-05-19 A | 34 | 100% |  |  |
| 36 | 1.3.3 | **Iteration II** | 47d | 2005-04-28 A | 2005-07-01 |  | 29% | 108d |  |
| 37 |  | Modify nightly build script | 4d | 2005-04-28 A | 2005-05-03 | 22 | 95% | 43d |  |
| 38 | 1.3.3.2 | **API Changes & Bug Fixes** | 10d | 2005-05-20 A | 2005-06-02 |  | 71% | 129d |  |
| 39 |  | Standardize Privileges and SWG Meeting | 1d | 2005-05-23 A | 2005-05-23 | 23 | 90% | 29d | start no earlier than 2005-05-20 |
| 40 | 1.3.3.2.2 | **Provide new Methods for Reporting & Changes for Caching** | 10d | 2005-05-20 A | 2005-06-02 | 27 | 69% | 100d |  |
| 41 |  | Design | 3d | 2005-05-20 A | 2005-05-24 |  | 90% | 4.2d |  |
| 42 |  | Implementation | 7d | 2005-05-25 A | 2005-06-02 | 41 | 60% | 100d |  |
| 43 | 1.3.3.3 | **UPT Changes & Bug Fixes** | 12d | 2005-05-26 A | 2005-06-10 |  | 25% | 100d |  |
| 44 |  | Modify UPT for Standard Privileges | 2d | 2005-05-26 A | 2005-05-27 A | 53 | 100% |  |  |
| 45 |  | Provide Reporting Functionality | 6d | 2005-06-03 | 2005-06-10 | 42 |  | 100d |  |
| 46 | 1.3.3.4 | **RI Changes & Bug Fixes** | 5d | 2005-06-13 | 2005-06-17 |  |  | 116d |  |
| 47 |  | Modify RI to use new APIs | 5d | 2005-06-13 | 2005-06-17 | 45 |  | 8d |  |
| 48 | 1.3.3.5 | **Update Documentations** | 17d | 2005-05-30 | 2005-06-21 |  |  | 116d |  |
| 49 |  | RI Guide | 2d | 2005-06-20 | 2005-06-21 | 47 |  | 8d | start no earlier than 2005-06-02 |
| 50 |  | Developers Guide | 3d | 2005-05-30 | 2005-06-01 | 44 |  | 20d |  |
| 51 |  | UPT Guide Changes | 2d | 2005-06-02 | 2005-06-03 | 50 |  | 20d |  |
| 52 | 1.3.3.6 | **Testing** | 30d | 2005-05-20 A | 2005-06-30 |  | 16% | 109d |  |
| 53 |  | Developing Test Cases | 4d | 2005-05-20 A | 2005-05-25 A | 35 | 100% |  |  |
| 54 |  | Integration Test - API and UPT Changes | 7d | 2005-06-13 | 2005-06-21 | 45 |  | 100d |  |
| 55 |  | Bug Fix | 7d | 2005-06-13 | 2005-06-21 | 45 |  | 8d | finish no earlier than 2005-05-17 |
| 56 |  | Test on QA | 4d | 2005-06-22 | 2005-06-27 | 54 |  | 100d |  |
| 57 |  | Stage Testing | 3d | 2005-06-28 | 2005-06-30 | 56 |  | 100d |  |
| 58 |  | Releasing and Baselining | 1d | 2005-07-01 | 2005-07-01 | 57 |  | 108d |  |
| 59 | 1.4 | **SDK Release** | 59d | 2005-05-02 A | 2005-07-22 | 14 | 32% | 94d |  |
| 60 |  | Research/Design | 11d | 2005-05-02 A | 2005-05-16 A |  | 100% |  | start no earlier than 2005-05-02 |
| 61 |  | Design Approach Review | 1d | 2005-05-17 A | 2005-05-17 A | 60 | 100% |  |  |
| 62 | 1.4.3 | **Development** | 20d | 2005-05-23 A | 2005-06-17 | 61 | 40% | 97.5d |  |
| 63 |  | Prototype | 10d | 2005-05-23 A | 2005-06-03 |  | 80% | 97.5d | start no earlier than 2005-05-18 |
| 64 | 1.4.3.2 | **Design** | 3d | 2005-06-06 | 2005-06-08 |  |  | 97.5d |  |
| 65 |  | Sequence Diagrams | 2d | 2005-06-06 | 2005-06-07 | 63 |  | 135.5d |  |
| 66 |  | Class Diagram | 1d | 2005-06-08 | 2005-06-08 | 65 |  | 135.5d |  |
| 67 |  | CSM Integration | 4d | 2005-06-09 | 2005-06-14 | 66 |  | 135.5d |  |
| 68 |  | Code Generation | 3d | 2005-06-15 | 2005-06-17 | 67 |  | 135.5d |  |
| 69 |  | Promote To QA | 0.25d | 2005-06-17 | 2005-06-17 |  |  | 136.25d | start no earlier than 2005-06-17 |
| 70 | 1.4.5 | **Integration Testing** | 5d | 2005-06-20 | 2005-06-24 |  |  | 97.5d |  |

| ID | WBS | Task | Duration | Start | Finish | Predecessors | Total float | Constraint |
| --- | --- | --- | --- | --- | --- | --- | --- | --- |
| 71 |  | Testing/Defect Fixes | 5d | 2005-06-20 | 2005-06-24 | 69, 68 | 135.5d |  |
| 72 | 1.4.6 | **QA Testing** | 10d | 2005-06-27 | 2005-07-08 |  | 97.5d |  |
| 73 |  | Testing/Defect Fixes | 10d | 2005-06-27 | 2005-07-08 | 71 | 135.5d |  |
| 74 | 1.4.7 | **Documentation** | 9d | 2005-07-01 | 2005-07-13 |  | 100d |  |
| 75 |  | SAD | 3d | 2005-07-01 | 2005-07-05 | 57 | 138d |  |
| 76 |  | Developers Guide | 4d | 2005-07-06 | 2005-07-11 | 75 | 138d |  |
| 77 |  | Deployment Guide | 2d | 2005-07-12 | 2005-07-13 | 76 | 138d |  |
| 78 |  | Documentation For Review | 0d | 2005-07-13 | 2005-07-13 | 77 | 138d |  |
| 79 | 1.4.8 | **Staging** | 4.5d | 2005-07-11 | 2005-07-15 |  | 97.5d |  |
| 80 |  | Promote to Staging | 0.5d | 2005-07-11 | 2005-07-11 | 73 | 135.5d |  |
| 81 |  | Stage Testing | 4d | 2005-07-11 | 2005-07-15 | 80 | 135.5d |  |
| 82 |  | Package For Production | 1d | 2005-07-15 | 2005-07-18 | 79 | 135.5d |  |
| 83 |  | Production Release | 0d | 2005-07-22 | 2005-07-22 |  | 132d | start no earlier than 2005-07-22 |

## Version 2 (saved 2005-06-13)

Note of the change: updated per weekly status meeting

Last finish stays 2005-11-30. Complete tasks 23 → 30.

Added:

| ID | Task | Duration | Start | Finish | Constraint | Resources |
| --- | --- | --- | --- | --- | --- | --- |
| 52 | **Additonal Features** | 2d | 2005-06-06 A | 2005-06-07 A |  |  |
| 53 | Super User Privilges Added | 2d | 2005-06-06 A | 2005-06-07 A | start no earlier than 2005-06-06 | Eric |
| 76 | Test Plan Development | 8d | 2005-06-08 | 2005-06-17 | start no earlier than 2005-06-08 | Eric [50%] |

Changed:

| ID | Task | Start | Finish | Duration | Complete | Total float | Predecessors |
| --- | --- | --- | --- | --- | --- | --- | --- |
| 1 | **Security Module (Release four)** |  |  |  | 28% → 33% |  |  |
| 21 | **3.0.1 Release** |  |  |  | 57% → 71% |  |  |
| 36 | **Iteration II** |  |  |  | 29% → 53% |  |  |
| 38 | **API Changes & Bug Fixes** |  |  |  | 71% → 99% |  |  |
| 40 | **Provide new Methods for Reporting & Changes for Caching** |  | 2005-06-02 A |  | 69% → 100% | 100d → none |  |
| 41 | Design |  | 2005-05-24 A |  | 90% → 100% | 4.2d → none |  |
| 42 | Implementation |  | 2005-06-02 A |  | 60% → 100% | 100d → none |  |
| 43 | **UPT Changes & Bug Fixes** |  |  |  | 25% → 96% |  |  |
| 45 | Provide Reporting Functionality | 2005-06-03 A |  |  | 0% → 95% |  |  |
| 48 | **Update Documentations** | 2005-05-30 A |  |  | 0% → 70% |  |  |
| 50 | Developers Guide | 2005-05-30 A | 2005-06-01 A |  | 0% → 100% | 20d → none |  |
| 51 | UPT Guide Changes | 2005-06-02 A |  |  | 0% → 95% | 20d → 128d |  |
| 61 | **SDK Release** |  |  |  | 32% → 39% |  |  |
| 64 | **Development** |  |  |  | 40% → 75% |  | 63 → none |
| 65 | Prototype |  | 2005-06-03 A |  | 80% → 100% | 97.5d → none |  |
| 66 | **Design** | 2005-06-06 A | 2005-06-08 A |  | 0% → 100% | 97.5d → none |  |
| 67 | Sequence Diagrams | 2005-06-06 A | 2005-06-07 A |  | 0% → 100% | 135.5d → none |  |
| 68 | Class Diagram | 2005-06-08 A | 2005-06-08 A |  | 0% → 100% | 135.5d → none |  |
| 70 | Code Generation | 2005-06-15 A |  |  | 0% → 65% | 135.5d → 97.5d |  |
| 74 | **QA Testing** | 2005-06-27 → 2005-06-08 (-19d) |  | 10d → 23d |  | 97.5d → 103d |  |

## Version 3 (saved 2005-06-20)

Note of the change: *** empty log message ***

Last finish stays 2005-11-30. Complete tasks 30 → 37.

Changed:

| ID | Task | Start | Finish | Complete | Total float | Other |
| --- | --- | --- | --- | --- | --- | --- |
| 1 | **Security Module (Release four)** |  |  | 33% → 39% | 0d → 38d |  |
| 21 | **3.0.1 Release** |  |  | 71% → 90% |  |  |
| 36 | **Iteration II** |  |  | 53% → 83% |  |  |
| 43 | **UPT Changes & Bug Fixes** |  | 2005-06-10 A | 96% → 100% | 100d → none |  |
| 45 | Provide Reporting Functionality |  | 2005-06-10 A | 95% → 100% | 100d → none |  |
| 46 | **RI Changes & Bug Fixes** | 2005-06-13 A | 2005-06-17 A | 0% → 100% | 116d → none |  |
| 47 | Modify RI to use new APIs | 2005-06-13 A | 2005-06-17 A | 0% → 100% | 8d → none |  |
| 54 | **Testing** |  |  | 16% → 72% | 109d → 100d |  |
| 56 | Integration Test - API and UPT Changes | 2005-06-13 A | 2005-06-21 A | 0% → 100% | 100d → none |  |
| 57 | Bug Fix | 2005-06-13 A | 2005-06-21 A | 0% → 100% | 116d → none |  |
| 61 | **SDK Release** |  |  | 39% → 46% |  |  |
| 64 | **Development** |  | 2005-06-17 A | 75% → 100% | 97.5d → none |  |
| 69 | CSM Integration | 2005-06-09 A | 2005-06-14 A | 0% → 100% | 99.45d → none |  |
| 70 | Code Generation |  | 2005-06-17 A | 65% → 100% | 97.5d → none |  |
| 71 | Deploy to Unix Server | 2005-06-17 A | 2005-06-17 A | 0% → 100% | 98.25d → none | was named Promote To QA |

## Version 4 (saved 2005-07-05)

Note of the change: Updated Copy

Last finish stays 2005-11-30. Complete tasks 37 → 42.

Changed:

| ID | Task | Start | Finish | Duration | Complete | Total float | Predecessors | Other |
| --- | --- | --- | --- | --- | --- | --- | --- | --- |
| 1 | **Security Module (Release four)** |  |  |  | 39% → 42% |  |  |  |
| 21 | **3.0.1 Release** |  | 2005-07-01 → 2005-07-14 (+13d) | 50d → 59d | 90% → 96% | 108d → 99d |  |  |
| 36 | **Iteration II** |  | 2005-07-01 → 2005-07-14 (+13d) | 47d → 56d | 83% → 93% | 108d → 99d |  |  |
| 37 | Modify nightly build script |  | 2005-05-03 A |  | 95% → 100% | 43d → none |  |  |
| 38 | **API Changes & Bug Fixes** |  | 2005-06-02 A |  | 99% → 100% | 129d → none |  |  |
| 39 | Standardize Privileges and SWG Meeting |  | 2005-05-23 A |  | 90% → 100% | 29d → none |  |  |
| 48 | **Update Documentations** |  | 2005-06-21 A |  | 70% → 100% | 116d → none |  |  |
| 49 | RI Guide | 2005-06-20 A | 2005-06-21 A |  | 0% → 100% | 8d → none |  |  |
| 51 | UPT Guide Changes |  | 2005-06-03 A |  | 95% → 100% | 128d → none |  |  |
| 54 | **Testing** |  | 2005-06-30 → 2005-07-13 (+13d) | 30d → 39d | 72% → 87% |  |  |  |
| 58 | Test on QA | 2005-06-22 A |  |  | 0% → 95% | 100d → 112d |  |  |
| 59 | Stage Testing | 2005-06-28 → 2005-07-11 (+13d) | 2005-06-30 → 2005-07-13 (+13d) |  |  | 100d → 91d | 58 → none | constraint none → start no earlier than 2005-07-11 |
| 60 | Releasing and Baselining | 2005-07-01 → 2005-07-14 (+13d) | 2005-07-01 → 2005-07-14 (+13d) |  |  | 108d → 99d |  |  |
| 61 | **SDK Release** |  | 2005-07-22 → 2005-07-26 (+4d) | 59d → 62d | 46% → 53% | 94d → 91d |  |  |
| 72 | **Integration Testing** | 2005-06-20 A | 2005-06-24 A |  | 0% → 100% | 97.5d → none |  |  |
| 73 | Testing/Defect Fixes | 2005-06-20 A | 2005-06-24 A |  | 0% → 100% | 97.5d → none |  |  |
| 77 | **Documentation** | 2005-07-01 → 2005-07-14 (+13d) | 2005-07-13 → 2005-07-26 (+13d) |  |  | 100d → 91d |  |  |
| 78 | SAD | 2005-07-01 → 2005-07-14 (+13d) | 2005-07-05 → 2005-07-18 (+13d) |  |  | 100d → 91d |  |  |
| 79 | Developers Guide | 2005-07-06 → 2005-07-19 (+13d) | 2005-07-11 → 2005-07-22 (+11d) |  |  | 100d → 91d |  |  |
| 80 | Deployment Guide | 2005-07-12 → 2005-07-25 (+13d) | 2005-07-13 → 2005-07-26 (+13d) |  |  | 100d → 91d |  |  |
| 81 | Documentation For Review | 2005-07-13 → 2005-07-26 (+13d) | 2005-07-13 → 2005-07-26 (+13d) |  |  | 100d → 91d |  |  |
| 82 | **Staging** |  | 2005-07-15 → 2005-07-18 (+3d) | 4.5d → 5.5d |  | 97.5d → 96.5d |  |  |
| 84 | Stage Testing |  | 2005-07-15 → 2005-07-18 (+3d) | 4d → 5d |  | 97.5d → 96.5d |  |  |
| 85 | Package For Production | 2005-07-15 → 2005-07-18 (+3d) | 2005-07-18 → 2005-07-19 (+1d) |  |  | 97.5d → 96.5d |  |  |

## Version 5 (saved 2005-07-11)

Note of the change: updated during status meeting 7/11/2005

Last finish stays 2005-11-30. Complete tasks 42 → 48.

Changed:

| ID | Task | Start | Finish | Duration | Complete | Total float |
| --- | --- | --- | --- | --- | --- | --- |
| 1 | **Security Module (Release four)** |  |  |  | 42% → 48% |  |
| 21 | **3.0.1 Release** |  | 2005-07-14 → 2005-07-20 (+6d) | 59d → 63d | 96% → 92% | 99d → 95d |
| 36 | **Iteration II** |  | 2005-07-14 → 2005-07-20 (+6d) | 56d → 60d | 93% → 88% | 99d → 95d |
| 54 | **Testing** |  | 2005-07-13 → 2005-07-19 (+6d) | 39d → 43d | 87% → 76% | 100d → 95d |
| 58 | Test on QA |  | 2005-06-27 A |  | 95% → 100% | 112d → none |
| 59 | Stage Testing |  | 2005-07-13 → 2005-07-19 (+6d) | 3d → 7d |  | 91d → 95d |
| 60 | Releasing and Baselining | 2005-07-14 → 2005-07-20 (+6d) | 2005-07-14 → 2005-07-20 (+6d) |  |  | 99d → 95d |
| 61 | **SDK Release** |  |  |  | 53% → 89% |  |
| 74 | **QA Testing** | 2005-06-08 A | 2005-07-08 A |  | 0% → 100% | 103d → none |
| 75 | Testing/Defect Fixes | 2005-06-27 A | 2005-07-08 A |  | 0% → 100% | 97.5d → none |
| 76 | Test Plan Development | 2005-06-08 A | 2005-06-17 A |  | 0% → 100% | 118d → none |
| 77 | **Documentation** | 2005-07-14 A |  |  | 0% → 98% |  |
| 78 | SAD | 2005-07-14 A | 2005-07-18 → 2005-07-20 (+2d) |  | 0% → 95% | 91d → 95.85d |
| 79 | Developers Guide | 2005-07-19 A | 2005-07-22 A |  | 0% → 100% | 91d → none |
| 80 | Deployment Guide | 2005-07-25 A | 2005-07-26 A |  | 0% → 100% | 91d → none |
| 81 | Documentation For Review | 2005-07-26 A | 2005-07-26 A |  | 0% → 100% | 91d → none |
| 82 | **Staging** |  | 2005-07-18 → 2005-07-19 (+1d) | 5.5d → 6.5d |  | 96.5d → 95.5d |
| 84 | Stage Testing |  | 2005-07-18 → 2005-07-19 (+1d) | 5d → 6d |  | 96.5d → 95.5d |
| 85 | Package For Production | 2005-07-18 → 2005-07-19 (+1d) | 2005-07-19 → 2005-07-20 (+1d) |  |  | 96.5d → 95.5d |
